# apWorks.ai Enhancements

Schedule from MS Project, 2022-09-26 to 2022-11-17, 6 hours a day.

## Calendars

- APA Calendar: Mon-Fri 11:00-13:00, 14:00-18:00; Sat-Sun off. Exceptions (off unless hours are given): 2020-02-05 to 2119-02-05 (Kashmir Day, recurring), 2020-03-23 to 2119-03-23 (Pakistan Day, recurring).

## Resources

| Resource | Group |
| --- | --- |
| Zeeshan Akhter | Dev |
| Faisal Ahmed Farooqui | Manager, Dev |
| MN |  |

## Schedule

| ID | WBS | Task | Duration | Start | Finish | Predecessors | Total slack | Free slack | Resources | Work |
| --- | --- | --- | --- | --- | --- | --- | --- | --- | --- | --- |
| 1 | 1 | **Tax** | 22d | 2022-09-26 | 2022-10-25 |  | 0d |  |  | 130h |
| 2 | 1.1 | **Development** | 13d | 2022-09-26 | 2022-10-12 |  | 0d |  |  | 69h |
| 3 | 1.1.1 | DB Changes for Tax Settings From Nexelus | 12h | 2022-09-26 | 2022-09-27 |  | 0d |  | Faisal Ahmed Farooqui [50%] | 6h |
| 4 | 1.1.2 | Data Fetching from Nexelus API | 24h | 2022-09-28 | 2022-10-03 | 3 | 0d |  | Faisal Ahmed Farooqui [50%] | 12h |
| 5 | 1.1.3 | DB Changes in Invoice Details Table | 6h | 2022-09-26 | 2022-09-26 |  | 6d | 0d | Zeeshan Akhter | 6h |
| 6 | 1.1.4 | UI Updates in Invoice Screen | 24h | 2022-09-27 | 2022-09-30 | 5 | 6d |  | Zeeshan Akhter | 24h |
| 7 | 1.1.5 | Updates in Invoice Posting | 30h | 2022-10-04 | 2022-10-10 | 4 | 0d |  | Faisal Ahmed Farooqui [50%] | 15h |
| 8 | 1.1.6 | Build Release | 12h | 2022-10-11 | 2022-10-12 | 6, 7 | 0d |  | Faisal Ahmed Farooqui [50%] | 6h |
| 9 | 1.2 | **Quality Assurance** | 20d | 2022-09-26 | 2022-10-21 |  | 0d |  |  | 55h |
| 10 | 1.2.1 | Test Case Writing | 20h | 2022-09-26 | 2022-09-29 |  | 9.67d |  | MN [30%] | 6h |
| 11 | 1.2.2 | Testing | 33.33h | 2022-10-13 | 2022-10-20 | 8, 10 | 0d |  | MN [30%] | 10h |
| 12 | 1.2.3 | Bug Fixing on UI Side | 18h | 2022-10-13 | 2022-10-17 | 6, 11SS | 2d | 0d | Zeeshan Akhter | 18h |
| 13 | 1.2.4 | Bug Fixing Data Fetching & Posting | 42h | 2022-10-13 | 2022-10-21 | 11SS | 0d |  | Faisal Ahmed Farooqui [50%] | 21h |
| 14 | 1.3 | Build Creation & Application Deployment For Tax | 12h | 2022-10-24 | 2022-10-25 | 9 | 0d |  | Faisal Ahmed Farooqui [50%] | 6h |
| 15 | 2 | **Invoice Splitting** | 23d | 2022-10-18 | 2022-11-17 |  | 0d |  |  | 192h |
| 16 | 2.1 | **Development** | 21d | 2022-10-18 | 2022-11-15 |  | 0d |  |  | 144h |
| 17 | 2.1.1 | Invoice Model Screen Updates | 24h | 2022-10-18 | 2022-10-21 | 12 | 2d | 0d | Zeeshan Akhter | 24h |
| 18 | 2.1.2 | **Updates in Invoice Scanner** | 10d | 2022-10-24 | 2022-11-04 |  | 0d |  |  | 60h |
| 19 | 2.1.2.1 | Invoice File cloning based on number of line items | 18h | 2022-10-24 | 2022-10-26 | 17 | 2d | 0d | Zeeshan Akhter | 18h |
| 20 | 2.1.2.2 | Stamping on lineitem on PDF | 18h | 2022-10-27 | 2022-10-31 | 19 | 2d | 0d | Zeeshan Akhter | 18h |
| 21 | 2.1.2.3 | Picking specific lines for creation of separate invoice documents in DB | 48h | 2022-10-26 | 2022-11-04 | 1 | 0d |  | Faisal Ahmed Farooqui [50%] | 24h |
| 22 | 2.1.3 | Updates in Invice Screen | 18h | 2022-11-01 | 2022-11-03 | 20 | 2d | 0d | Zeeshan Akhter | 18h |
| 23 | 2.1.4 | Bug Fixing for Scanner Process | 36h | 2022-11-07 | 2022-11-14 | 21 | 0d |  | Faisal Ahmed Farooqui [50%] | 18h |
| 24 | 2.1.5 | Bug Fixing for file stamping, cloning, and Invoice Screen | 18h | 2022-11-04 | 2022-11-08 | 22 | 2d | 0d | Zeeshan Akhter | 18h |
| 25 | 2.1.6 | Build release | 6h | 2022-11-15 | 2022-11-15 | 23, 24 | 0d |  | Faisal Ahmed Farooqui | 6h |

| ID | WBS | Task | Duration | Start | Finish | Predecessors | Total slack | Free slack | Resources | Work |
| --- | --- | --- | --- | --- | --- | --- | --- | --- | --- | --- |
| 26 | 2.2 | **Quality Assurance** | 13.33d | 2022-10-26 | 2022-11-14 |  | 1.67d |  |  | 42h |
| 27 | 2.2.1 | Test Case Writing | 20h | 2022-10-26 | 2022-10-31 | 1 | 1.67d | 0d | MN [30%] | 6h |
| 28 | 2.2.2 | Testing | 60h | 2022-10-31 | 2022-11-14 | 27 | 1.67d |  | MN [30%] | 18h |
| 29 | 2.2.3 | Bug Fixing | 18h | 2022-11-09 | 2022-11-11 | 28SS, 24 | 2d |  | Zeeshan Akhter | 18h |
| 30 | 2.3 | Build Creation & Application Deployment For Invoice Splitting | 12h | 2022-11-16 | 2022-11-17 | 25, 26 | 0d |  | Faisal Ahmed Farooqui [50%] | 6h |
