# apWorks.ai Enhancements and Nexelus Sub Application Demo

Schedule from MS Project, 2022-09-26 to 2022-12-19, 6 hours a day.

## Calendars

- APA Calendar: Mon-Fri 11:00-13:00, 14:00-18:00; Sat-Sun off. Exceptions (off unless hours are given): 2020-02-05 to 2119-02-05 (Kashmir Day, recurring), 2020-03-23 to 2119-03-23 (Pakistan Day, recurring).

## Resources

| Resource | Group |
| --- | --- |
| Zeeshan Akhter | Dev |
| Faisal Ahmed Farooqui | Manager, Dev |
| MN |  |
| 0% |  |
| Dev |  |
| ArifK |  |
| Tao Lin |  |

## Schedule

| ID | WBS | Task | Duration | Start | Finish | Predecessors | Total slack | Free slack | Resources | Work |
| --- | --- | --- | --- | --- | --- | --- | --- | --- | --- | --- |
| 1 | 1 | **apWorks.ai Enhancements** | 43.67d | 2022-09-26 | 2022-11-24 |  | 0d |  |  | 362h |
| 2 | 1.1 | **Tax** | 22.67d | 2022-09-26 | 2022-10-26 |  | 0d |  |  | 150h |
| 3 | 1.1.1 | **Development** | 13d | 2022-09-26 | 2022-10-12 |  | 0d |  |  | 69h |
| 4 | 1.1.1.1 | DB Changes for Tax Settings From Nexelus | 12h | 2022-09-26 | 2022-09-27 |  | 0d |  | Faisal Ahmed Farooqui [50%] | 6h |
| 5 | 1.1.1.2 | Data Fetching from Nexelus API | 24h | 2022-09-28 | 2022-10-03 | 4 | 0d |  | Faisal Ahmed Farooqui [50%] | 12h |
| 6 | 1.1.1.3 | DB Changes in Invoice Details Table | 6h | 2022-09-26 | 2022-09-26 |  | 6d | 0d | Zeeshan Akhter | 6h |
| 7 | 1.1.1.4 | UI Updates in Invoice Screen | 24h | 2022-09-27 | 2022-09-30 | 6 | 6d |  | Zeeshan Akhter | 24h |
| 8 | 1.1.1.5 | Updates in Invoice Posting | 30h | 2022-10-04 | 2022-10-10 | 5 | 0d |  | Faisal Ahmed Farooqui [50%] | 15h |
| 9 | 1.1.1.6 | Build Release | 12h | 2022-10-11 | 2022-10-12 | 7, 8 | 0d |  | Faisal Ahmed Farooqui [50%] | 6h |
| 10 | 1.1.2 | **Quality Assurance** | 20d | 2022-09-26 | 2022-10-21 |  | 0d |  |  | 55h |
| 11 | 1.1.2.1 | Test Case Writing | 20h | 2022-09-26 | 2022-09-29 |  | 9.67d |  | MN [30%] | 6h |
| 12 | 1.1.2.2 | Testing | 33.33h | 2022-10-13 | 2022-10-20 | 9, 11 | 0d |  | MN [30%] | 10h |
| 13 | 1.1.2.3 | Bug Fixing on UI Side | 18h | 2022-10-13 | 2022-10-17 | 7, 12SS | 4d |  | Zeeshan Akhter | 18h |
| 14 | 1.1.2.4 | Bug Fixing Data Fetching & Posting | 42h | 2022-10-13 | 2022-10-21 | 12SS | 0d |  | Faisal Ahmed Farooqui [50%] | 21h |
| 15 | 1.1.3 | Build Creation & Application Deployment For Tax | 12h | 2022-10-24 | 2022-10-25 | 10 | 2d |  | Faisal Ahmed Farooqui [50%] | 6h |
| 16 | 1.1.4 | **UAT** | 2.67d | 2022-10-24 | 2022-10-26 |  | 0d |  |  | 20h |
| 17 | 1.1.4.1 | Testing | 16h | 2022-10-24 | 2022-10-26 | 10 | 1.33d |  | Tao Lin [50%] | 8h |
| 18 | 1.1.4.2 | Fixing | 12h | 2022-10-24 | 2022-10-25 | 10 | 0d |  | Zeeshan Akhter | 12h |
| 19 | 1.2 | **Invoice Splitting** | 21.67d | 2022-10-26 | 2022-11-24 |  | 0d |  |  | 212h |
| 20 | 1.2.1 | **Development** | 17d | 2022-10-26 | 2022-11-17 |  | 0d |  |  | 144h |
| 21 | 1.2.1.1 | Invoice Model Screen Updates | 24h | 2022-10-26 | 2022-10-31 | 18 | 0d |  | Zeeshan Akhter | 24h |
| 22 | 1.2.1.2 | **Updates in Invoice Scanner** | 9.33d | 2022-10-26 | 2022-11-08 |  | 0d |  |  | 60h |
| 23 | 1.2.1.2.1 | Invoice File cloning based on number of line items | 18h | 2022-11-01 | 2022-11-03 | 21 | 0d |  | Zeeshan Akhter | 18h |
| 24 | 1.2.1.2.2 | Stamping on lineitem on PDF | 18h | 2022-11-04 | 2022-11-08 | 23 | 0d |  | Zeeshan Akhter | 18h |
| 25 | 1.2.1.2.3 | Picking specific lines for creation of separate invoice documents in DB | 48h | 2022-10-26 | 2022-11-07 | 2 | 1.33d | 0d | Faisal Ahmed Farooqui [50%] | 24h |
| 26 | 1.2.1.3 | Updates in Invice Screen | 18h | 2022-11-09 | 2022-11-11 | 24 | 0d |  | Zeeshan Akhter | 18h |
| 27 | 1.2.1.4 | Bug Fixing for Scanner Process | 36h | 2022-11-07 | 2022-11-15 | 25 | 1.33d |  | Faisal Ahmed Farooqui [50%] | 18h |
| 28 | 1.2.1.5 | Bug Fixing for file stamping, cloning, and Invoice Screen | 18h | 2022-11-14 | 2022-11-16 | 26 | 0d |  | Zeeshan Akhter | 18h |
| 29 | 1.2.1.6 | Build release | 6h | 2022-11-17 | 2022-11-17 | 27, 28 | 0d |  | Faisal Ahmed Farooqui | 6h |

| ID | WBS | Task | Duration | Start | Finish | Predecessors | Total slack | Free slack | Resources | Work |
| --- | --- | --- | --- | --- | --- | --- | --- | --- | --- | --- |
| 30 | 1.2.2 | **Quality Assurance** | 18.33d | 2022-10-26 | 2022-11-21 |  | 17d | 0d |  | 42h |
| 31 | 1.2.2.1 | Test Case Writing | 20h | 2022-10-26 | 2022-10-31 | 2 | 22d | 0d | MN [30%] | 6h |
| 32 | 1.2.2.2 | Testing | 60h | 2022-11-01 | 2022-11-14 | 31 | 22d | 12d | MN [30%] | 18h |
| 33 | 1.2.2.3 | Bug Fixing | 18h | 2022-11-17 | 2022-11-21 | 32SS, 28 | 17d |  | Zeeshan Akhter | 18h |
| 34 | 1.2.3 | Build Creation & Application Deployment For Invoice Splitting | 12h | 2022-11-22 | 2022-11-23 | 29, 30 | 17.67d |  | Faisal Ahmed Farooqui [50%] | 6h |
| 35 | 1.2.4 | **UAT** | 2.67d | 2022-11-22 | 2022-11-24 |  | 17d |  |  | 20h |
| 36 | 1.2.4.1 | Testing | 16h | 2022-11-22 | 2022-11-24 | 30 | 17d |  | Tao Lin [50%] | 8h |
| 37 | 1.2.4.2 | Fixing | 12h | 2022-11-22 | 2022-11-23 | 30 | 17.67d |  | Zeeshan Akhter | 12h |
| 38 | 2 | **Nexelus Sub Applications Demo** | 60.67d | 2022-09-26 | 2022-12-19 |  | 0d |  |  | 308h |
| 39 | 2.1 | **Prerequisites Preparation** | 32d | 2022-09-26 | 2022-11-08 |  | 7d |  |  | 102h |
| 40 | 2.1.1 | Separate Code Repositories Creation for Login, Apps, Shared Components, Libraries | 48h | 2022-09-26 | 2022-10-05 |  | 7d | 0d | Faisal Ahmed Farooqui [50%] | 24h |
| 41 | 2.1.2 | VS Solutions Code Structure Creation for Login, Sub-Applications, Shared Libraries | 48h | 2022-10-06 | 2022-10-17 | 40 | 7d | 0d | Faisal Ahmed Farooqui [50%] | 24h |
| 42 | 2.1.3 | DB Creation/Migration | 6h | 2022-09-26 | 2022-09-26 |  | 59.67d |  | ArifK | 6h |
| 43 | 2.1.4 | R&D on Sharing Code/Library for Shared Components UI Header, Menu | 72h | 2022-10-18 | 2022-11-02 | 41 | 7d | 0d | Faisal Ahmed Farooqui [50%] | 36h |
| 44 | 2.1.5 | R&D on Sharing Login Code (UI & Functionality) | 24h | 2022-11-03 | 2022-11-08 | 43 | 7d | 0d | Faisal Ahmed Farooqui [50%] | 12h |
| 45 | 2.2 | **Login App Creation** | 15.67d | 2022-11-09 | 2022-11-30 |  | 4d |  |  | 74h |
| 46 | 2.2.1 | Getting UI & Backend Functionality Ready | 12h | 2022-11-09 | 2022-11-10 | 44 | 11.67d | 0d | Dev | 12h |
| 47 | 2.2.2 | Shared Session Management using Builtin Session Object | 12h | 2022-11-11 | 2022-11-14 | 46 | 11.67d | 0d | Dev | 12h |
| 48 | 2.2.3 | R&D on Session Management on Browser (Same as ApWorks.ai) | 52h | 2022-11-18 | 2022-11-30 | 44, 29 | 0d |  | Faisal Ahmed Farooqui [50%] | 26h |
| 49 | 2.2.4 | **R&D on Session Management on Redis or MemCacheD (Memory Database)** | 2d | 2022-11-15 | 2022-11-16 |  | 11.67d |  |  | 12h |
| 50 | 2.2.4.1 | Installation & Configuration of Redis & MemCacheD | 6h | 2022-11-15 | 2022-11-15 | 47 | 11.67d | 0d | Dev | 6h |
| 51 | 2.2.4.2 | Session persistence utilizing Connectors for .net Session | 6h | 2022-11-16 | 2022-11-16 | 50 | 11.67d | 0d | Dev | 6h |
| 52 | 2.2.5 | Logout: Session Removal for all Browser Tabs of Applications | 12h | 2022-11-17 | 2022-11-18 | 51 | 11.67d | 0d | Dev | 12h |
| 53 | 2.3 | Application Configuration Info Management for each separate App (Login, Sub-Apps) | 12h | 2022-11-21 | 2022-11-22 | 52 | 11.67d | 0d | Dev | 12h |
| 54 | 2.4 | Permissions, User and Systems Settings handling on each App | 18h | 2022-11-30 | 2022-12-05 | 48 | 0d |  | Faisal Ahmed Farooqui | 18h |
| 55 | 2.5 | Authentication & Authorization utilizing Shared Session Info | 36h | 2022-12-05 | 2022-12-13 | 54 | 0d |  | Faisal Ahmed Farooqui | 36h |

| ID | WBS | Task | Duration | Start | Finish | Predecessors | Total slack | Free slack | Resources | Work |
| --- | --- | --- | --- | --- | --- | --- | --- | --- | --- | --- |
| 56 | 2.6 | **Sub Applications Creation** | 18.67d | 2022-11-23 | 2022-12-19 |  | 0d |  |  | 48h |
| 57 | 2.6.1 | Time Approval Dashboard App: Getting UI & Backend Basic Functionality Ready | 12h | 2022-11-23 | 2022-11-24 | 53 | 11.67d | 0d | Dev | 12h |
| 58 | 2.6.2 | Employee Info App: Getting UI & Backend Basic Functionality Ready | 24h | 2022-12-13 | 2022-12-19 | 55 | 0d |  | Faisal Ahmed Farooqui | 24h |
| 59 | 2.6.3 | Application Specific (Unshared) Session Management | 12h | 2022-11-25 | 2022-11-28 | 57 | 11.67d | 0d | Dev | 12h |
| 60 | 2.7 | Testing & Bug Fixing | 18h | 2022-11-29 | 2022-12-01 | 59 | 11.67d |  | Dev | 18h |
