# AP Automation Phase 1

Schedule from MS Project, 2020-01-15 to 2020-09-03, A marks actual dates.

## Calendars

- Standard: Mon-Fri 08:00-12:00, 13:00-17:00; Sat-Sun off. Exceptions (off unless hours are given): 2020-02-05 (Kashmir Day, recurring), 2020-03-23 (Pakistan Day, recurring).

## Resources

| Resource | Group |
| --- | --- |
| Zeeshan Akhtar | Dev |
| Tester 1 | QA |
| Hammad Khalil | Dev |
| Faisal Ahmed Farooqui | Manager, Dev |
| Tao Lin | Dev |

## Schedule

| ID | WBS | Task | Duration | Start | Finish | Predecessors | Complete | Remaining | Total slack | Free slack | Resources | Work | Actual work |
| --- | --- | --- | --- | --- | --- | --- | --- | --- | --- | --- | --- | --- | --- |
| 1 | 1 | **Analysis/Software Requirements** | 5d | 2020-01-15 | 2020-01-21 |  |  |  | 153.65d |  |  | 56h |  |
| 2 | 1.1 | Document Review | 16h | 2020-01-15 | 2020-01-16 |  |  |  | 153.65d | 0d | Faisal Ahmed Farooqui; Tao Lin | 32h |  |
| 3 | 1.2 | Understanding of Existing App & Prototype App | 16h | 2020-01-17 | 2020-01-20 | 2 |  |  | 153.65d | 0d | Faisal Ahmed Farooqui | 16h |  |
| 4 | 1.3 | Infrastructure Requirement Understanding | 8h | 2020-01-21 | 2020-01-21 | 3 |  |  | 153.65d | 0d | Faisal Ahmed Farooqui | 8h |  |
| 5 | 2 | **Design** | 16d | 2020-01-22 A | 2020-02-13 |  | 52% | 7.68d | 143.65d |  |  | 256h | 91.2h |
| 6 | 2.1 | Document Review | 16h | 2020-01-22 | 2020-01-23 | 4 |  |  | 153.65d | 0d | Faisal Ahmed Farooqui; Tao Lin | 32h |  |
| 7 | 2.2 | Review preliminary software specifications | 16h | 2020-01-24 | 2020-01-27 | 6 |  |  | 153.65d | 0d | Faisal Ahmed Farooqui; Hammad Khalil; Zeeshan Akhtar | 48h |  |
| 8 | 2.3 | DB Design Review | 16h | 2020-01-28 | 2020-01-29 | 4, 7 |  |  | 153.65d |  | Faisal Ahmed Farooqui; Hammad Khalil; Zeeshan Akhtar | 48h |  |
| 9 | 2.4 | Architecture Design Preliminary | 16h | 2020-01-30 A | 2020-01-31 A | 8 | 100% |  |  |  | Faisal Ahmed Farooqui | 16h | 16h |
| 10 | 2.5 | R&D on Technologies need to be used in project | 16h | 2020-01-30 A | 2020-01-31 | 9SS | 50% | 8h | 151.65d |  | Hammad Khalil; Zeeshan Akhtar | 32h | 16h |
| 11 | 2.6 | Code Structure Setup | 16h | 2020-02-03 A | 2020-02-04 A | 10 | 100% |  |  |  | Zeeshan Akhtar | 16h | 16h |
| 12 | 2.7 | UI Components Structure Setup | 24h | 2020-02-03 A | 2020-02-06 A | 10 | 100% |  |  |  | Hammad Khalil | 24h | 24h |
| 13 | 2.8 | Design complete | 16h | 2020-02-07 | 2020-02-10 | 12 |  |  | 2.4d | 0d | Faisal Ahmed Farooqui | 16h |  |
| 14 | 2.9 | ProjectPlan Creation | 24h | 2020-02-11 A | 2020-02-13 | 13 | 80% | 4.8h | 143.65d |  | Faisal Ahmed Farooqui | 24h | 19.2h |
| 15 | 3 | **Development Sprints** | 149.65d | 2020-02-06 A | 2020-09-03 |  | 73% | 40.12d | 0d |  |  | 1834.98h | 1212.18h |
| 16 | 3.1 | **Detailed Design Implementation** | 12.67d | 2020-02-06 A | 2020-02-24 A |  | 100% |  |  |  |  | 112.02h | 112.02h |
| 17 | 3.1.1 | Projects Structure Creation & ORM Model Creation | 16h | 2020-02-06 A | 2020-02-07 A | 11 | 100% |  |  |  | Zeeshan Akhtar | 16h | 16h |
| 18 | 3.1.2 | DataAccessLayer Implementation | 24h | 2020-02-10 A | 2020-02-12 A | 17 | 100% |  |  |  | Zeeshan Akhtar | 24h | 24h |
| 19 | 3.1.3 | BusinessLogicLayer and Service Structure Implementation | 24h | 2020-02-13 A | 2020-02-17 A | 18 | 100% |  |  |  | Zeeshan Akhtar | 24h | 24h |
| 20 | 3.1.4 | Unit Test Structure Creation | 16h | 2020-02-18 A | 2020-02-19 A | 19 | 100% |  |  |  | Zeeshan Akhtar | 16h | 16h |
| 21 | 3.1.5 | Infrastructure & Integration Services Creation (like Message Queue) | 53.36h | 2020-02-14 A | 2020-02-24 A | 14 | 100% |  |  |  | Faisal Ahmed Farooqui [60%] | 32.02h | 32.02h |
| 22 | 3.2 | **Code Copy from Existing Apps** | 11d | 2020-02-07 A | 2020-02-21 A | 10 | 100% |  |  |  |  | 88h | 88h |
| 23 | 3.2.1 | UI Structure Creation from Nexelus App | 24h | 2020-02-07 A | 2020-02-11 A | 12 | 100% |  |  |  | Hammad Khalil | 24h | 24h |
| 24 | 3.2.2 | Copying the usable code for UI & Logic from Demo App of APAutomation | 48h | 2020-02-12 A | 2020-02-19 A | 23 | 100% |  |  |  | Hammad Khalil | 48h | 48h |
| 25 | 3.2.3 | Release 0 - Demo | 16h | 2020-02-20 A | 2020-02-21 A | 24 | 100% |  |  |  | Hammad Khalil | 16h | 16h |

| ID | WBS | Task | Duration | Start | Finish | Predecessors | Complete | Remaining | Total slack | Free slack | Constraint | Resources | Work | Actual work |
| --- | --- | --- | --- | --- | --- | --- | --- | --- | --- | --- | --- | --- | --- | --- |
| 26 | 3.3 | **Company Registration** | 6d | 2020-02-24 A | 2020-03-02 A | 22 | 100% |  |  |  |  |  | 64h | 64h |
| 27 | 3.3.1 | Company Setup | 24h | 2020-02-24 A | 2020-02-26 A |  | 100% |  |  |  |  | Zeeshan Akhtar | 24h | 24h |
| 28 | 3.3.2 | Users, Roles and Groups | 40h | 2020-02-24 A | 2020-03-02 A | 21 | 100% |  |  |  |  | Faisal Ahmed Farooqui [40%] | 16h | 16h |
| 29 | 3.3.3 | Login Screen | 24h | 2020-02-27 A | 2020-03-02 A | 27SS | 100% |  |  |  |  | Hammad Khalil | 24h | 24h |
| 30 | 3.4 | **Release 0 & Testing** | 17d | 2020-03-03 A | 2020-03-26 A | 26 | 100% |  |  |  |  |  | 99.2h | 99.2h |
| 31 | 3.4.1 | Deployment on on-prem env for Release 1 and Demo | 96h | 2020-03-03 A | 2020-03-18 A |  | 100% |  |  |  |  | Faisal Ahmed Farooqui [20%] | 19.2h | 19.2h |
| 32 | 3.4.2 | Test Cycle 1 | 40h | 2020-03-19 A | 2020-03-26 A | 31 | 100% |  |  |  |  | Tester 1 | 40h | 40h |
| 33 | 3.4.3 | Debug Cycle 1 | 40h | 2020-03-19 A | 2020-03-26 A | 32SS | 100% |  |  |  |  | Hammad Khalil | 40h | 40h |
| 34 | 3.5 | **Core Business Functions** | 39.5d | 2020-03-19 A | 2020-05-14 A |  | 100% |  |  |  |  |  | 491.76h | 491.76h |
| 35 | 3.5.1 | Document Listing UI Creation | 80h | 2020-03-19 A | 2020-04-02 A | 31 | 100% |  |  |  |  | Zeeshan Akhtar | 80h | 80h |
| 36 | 3.5.2 | ERP Integration | 40h | 2020-04-01 A | 2020-04-07 A | 35 | 100% |  |  |  |  | Tao Lin [40%] | 39.76h | 39.76h |
| 37 | 3.5.3 | Textract Integration | 40h | 2020-03-27 A | 2020-04-02 A | 30 | 100% |  |  |  |  | Faisal Ahmed Farooqui | 40h | 40h |
| 38 | 3.5.4 | Multenancy at backend | 24h | 2020-04-03 A | 2020-04-07 A | 37 | 100% |  |  |  |  | Faisal Ahmed Farooqui | 24h | 24h |
| 39 | 3.5.5 | Manage Invoice Models | 40h | 2020-04-03 A | 2020-04-09 A | 35 | 100% |  |  |  |  | Zeeshan Akhtar | 40h | 40h |
| 40 | 3.5.6 | Model Scanner Process | 48h | 2020-04-08 A | 2020-04-15 A | 38 | 100% |  |  |  |  | Faisal Ahmed Farooqui | 48h | 48h |
| 41 | 3.5.7 | Manage Invoice | 32h | 2020-04-10 A | 2020-04-15 A | 39 | 100% |  |  |  |  | Zeeshan Akhtar | 32h | 32h |
| 42 | 3.5.8 | View Document | 32h | 2020-04-16 A | 2020-04-21 A | 40 | 100% |  |  |  |  | Faisal Ahmed Farooqui | 32h | 32h |
| 43 | 3.5.9 | Invoice Creation | 32h | 2020-04-16 A | 2020-04-21 A | 41 | 100% |  |  |  |  | Zeeshan Akhtar | 32h | 32h |
| 44 | 3.5.10 | Invoice Mapping - Model Creation | 60h | 2020-04-27 A | 2020-05-06 A |  | 100% |  |  |  |  | Zeeshan Akhtar | 60h | 60h |
| 45 | 3.5.11 | Testing | 32h | 2020-05-06 A | 2020-05-12 A | 44 | 100% |  |  |  |  | Zeeshan Akhtar | 32h | 32h |
| 46 | 3.5.12 | Bug Fixing | 16h | 2020-05-12 A | 2020-05-14 A | 45 | 100% |  |  |  |  | Zeeshan Akhtar; Faisal Ahmed Farooqui | 32h | 32h |
| 47 | 3.6 | Demo Release 1 & Testing | 92h | 2020-05-14 A | 2020-05-29 A | 34 | 100% |  |  |  | finish no earlier than 2020-05-31 | Faisal Ahmed Farooqui | 92h | 92h |
| 48 | 3.7 | **Development for Beta Release 1** | 42.15d | 2020-06-01 A | 2020-07-29 | 47 | 56% | 18.6d | 0d |  |  |  | 552h | 265.2h |
| 49 | 3.7.1 | PDF View and Multipage Model Setup UI | 56h | 2020-06-01 A | 2020-06-09 A | 47 | 100% |  |  |  |  | Zeeshan Akhtar | 56h | 56h |
| 50 | 3.7.2 | Enhancement in Model Scanner for Multipage | 56h | 2020-06-01 A | 2020-06-09 A | 47 | 100% |  |  |  |  | Faisal Ahmed Farooqui | 56h | 56h |
| 51 | 3.7.3 | Build For QA with Multipage Support | 16h | 2020-06-10 A | 2020-06-11 A | 50 | 100% |  |  |  |  | Faisal Ahmed Farooqui | 16h | 16h |
| 52 | 3.7.4 | QA for multipage implementation | 16h | 2020-06-12 A | 2020-06-15 A | 51 | 100% |  |  |  |  | Tao Lin | 16h | 16h |
| 53 | 3.7.5 | User Management Screen for Root Account | 56h | 2020-06-10 A | 2020-07-08 | 49 | 95% | 2.8h | 0d |  |  | Zeeshan Akhtar | 56h | 53.2h |
| 54 | 3.7.6 | Login & Authorization with Multitenancy support | 48h | 2020-06-12 A | 2020-06-24 | 51 | 90% | 4.8h | 7.95d | 0d |  | Faisal Ahmed Farooqui | 48h | 43.2h |
| 55 | 3.7.7 | Build For QA with Login Functionality and multitenancy support | 16h | 2020-06-24 | 2020-06-26 | 54 |  |  | 7.95d | 0d |  | Faisal Ahmed Farooqui | 16h |  |
| 56 | 3.7.8 | QA for Login with Multitenancy Functionality | 16h | 2020-06-26 | 2020-06-30 | 55 |  |  | 20.75d |  |  | Tao Lin | 16h |  |
| 57 | 3.7.9 | Invoice Approval, Review Workflow | 32h | 2020-06-29 A | 2020-07-10 | 55, 53 | 40% | 19.2h | 0.6d | 0d |  | Zeeshan Akhtar | 32h | 12.8h |
| 58 | 3.7.10 | Invoice Posting | 24h | 2020-06-30 A | 2020-07-15 | 57 | 25% | 18h | 0d |  |  | Tao Lin; Faisal Ahmed Farooqui | 48h | 12h |
| 59 | 3.7.11 | Dashboard | 24h | 2020-07-10 | 2020-07-15 | 57 |  |  | 2.4d |  |  | Zeeshan Akhtar | 24h |  |
| 60 | 3.7.12 | IO Data Synchronization | 24h | 2020-07-15 | 2020-07-20 | 58 |  |  | 0d |  |  | Tao Lin; Faisal Ahmed Farooqui | 48h |  |
| 61 | 3.7.13 | Build For QA | 16h | 2020-07-20 | 2020-07-22 | 59, 60 |  |  | 0d |  |  | Faisal Ahmed Farooqui; Zeeshan Akhtar | 32h |  |
| 62 | 3.7.14 | QA for all product features | 24h | 2020-07-22 | 2020-07-27 | 61 |  |  | 2d |  |  | Tao Lin | 24h |  |
| 63 | 3.7.15 | Bug Fixing | 24h | 2020-07-22 | 2020-07-27 | 61 |  |  | 0d |  |  | Zeeshan Akhtar; Faisal Ahmed Farooqui | 48h |  |
| 64 | 3.7.16 | Beta Release for single client | 16h | 2020-07-27 | 2020-07-29 | 63, 61 |  |  | 0d |  |  | Faisal Ahmed Farooqui | 16h |  |

| ID | WBS | Task | Duration | Start | Finish | Predecessors | Total slack | Free slack | Resources | Work |
| --- | --- | --- | --- | --- | --- | --- | --- | --- | --- | --- |
| 65 | 3.8 | **Development for Beta Release 2 (Production ready)** | 23.5d | 2020-07-29 | 2020-08-31 | 48 | 0d |  |  | 312h |
| 66 | 3.8.1 | Invoice Notification Email Alert | 16h | 2020-07-29 | 2020-07-31 | 48 | 0d |  | Faisal Ahmed Farooqui | 16h |
| 67 | 3.8.2 | UI for Vendors, Currencies Mapping, Payment Terms Mappings | 16h | 2020-07-29 | 2020-07-31 | 48 | 2d | 0d | Zeeshan Akhtar | 16h |
| 68 | 3.8.3 | Logging & Error Alerts through email | 16h | 2020-07-31 | 2020-08-04 | 66 | 0d |  | Faisal Ahmed Farooqui | 16h |
| 69 | 3.8.4 | SSO | 48h | 2020-08-04 | 2020-08-12 | 68 | 0d |  | Faisal Ahmed Farooqui | 48h |
| 70 | 3.8.5 | Model Test Functionality | 48h | 2020-07-31 | 2020-08-10 | 67 | 2d |  | Zeeshan Akhtar | 48h |
| 71 | 3.8.6 | Build Release for QA | 16h | 2020-08-12 | 2020-08-14 | 70, 69 | 0d |  | Faisal Ahmed Farooqui | 16h |
| 72 | 3.8.7 | QA | 16h | 2020-08-14 | 2020-08-18 | 71 | 0d |  | Tao Lin | 16h |
| 73 | 3.8.8 | Bug Fixing | 12h | 2020-08-18 | 2020-08-19 | 72 | 0d |  | Faisal Ahmed Farooqui; Zeeshan Akhtar | 24h |
| 74 | 3.8.9 | Build Release for QA | 8h | 2020-08-19 | 2020-08-20 | 73 | 0d |  | Faisal Ahmed Farooqui; Zeeshan Akhtar | 16h |
| 75 | 3.8.10 | QA | 16h | 2020-08-20 | 2020-08-24 | 74 | 0d |  | Tao Lin | 16h |
| 76 | 3.8.11 | Bug Fixing only important issues | 24h | 2020-08-24 | 2020-08-27 | 75 | 0d |  | Faisal Ahmed Farooqui; Zeeshan Akhtar | 48h |
| 77 | 3.8.12 | Build for UAT & Beta 2 | 16h | 2020-08-27 | 2020-08-31 | 76 | 0d |  | Faisal Ahmed Farooqui; Zeeshan Akhtar | 32h |
| 78 | 3.9 | Deployment & Integration for Production | 24h | 2020-08-31 | 2020-09-03 | 65 | 0d |  | Faisal Ahmed Farooqui | 24h |
