# AP Automation Phase 1

Schedule from MS Project, 2020-01-15 to 2020-07-06.

## Calendars

- Standard: Mon-Fri 08:00-12:00, 13:00-17:00; Sat-Sun off. Exceptions (off unless hours are given): 2020-02-05 (Kashmir Day, recurring), 2020-03-23 (Pakistan Day, recurring).

## Resources

| Resource | Group |
| --- | --- |
| Management |  |
| Project Manager |  |
| Analyst |  |
| Zeeshan Akhtar | Dev |
| Tester 1 | QA |
| Trainers |  |
| Technical Communicators |  |
| Deployment Team |  |
| Hammad Khalil | Dev |
| Faisal Ahmed Farooqui | Manager, Dev |
| Tao Lin | Dev |
| Tester 2 | QA |
| Dev 3 | Dev |
| T! |  |

## Schedule

| ID | WBS | Task | Duration | Start | Finish | Predecessors | Total slack | Free slack | Resources | Work |
| --- | --- | --- | --- | --- | --- | --- | --- | --- | --- | --- |
| 1 | 1 | **Analysis/Software Requirements** | 5d | 2020-01-15 | 2020-01-21 |  | 0d |  |  | 56h |
| 2 | 1.1 | Document Review | 2d | 2020-01-15 | 2020-01-16 |  | 0d |  | Faisal Ahmed Farooqui; Tao Lin | 32h |
| 3 | 1.2 | Understanding of Existing App & Prototype App | 2d | 2020-01-17 | 2020-01-20 | 2 | 0d |  | Faisal Ahmed Farooqui | 16h |
| 4 | 1.3 | Infrastructure Requirement Understanding | 1d | 2020-01-21 | 2020-01-21 | 3 | 0d |  | Faisal Ahmed Farooqui | 8h |
| 5 | 2 | **Design** | 14d | 2020-01-22 | 2020-02-11 |  | 0d |  |  | 240h |
| 6 | 2.1 | Document Review | 2d | 2020-01-22 | 2020-01-23 | 4 | 0d |  | Faisal Ahmed Farooqui; Tao Lin | 32h |
| 7 | 2.2 | Review preliminary software specifications | 2d | 2020-01-24 | 2020-01-27 | 6 | 0d |  | Faisal Ahmed Farooqui; Hammad Khalil; Zeeshan Akhtar | 48h |
| 8 | 2.3 | DB Design Review | 2d | 2020-01-28 | 2020-01-29 | 4, 7 | 0d |  | Faisal Ahmed Farooqui; Hammad Khalil; Zeeshan Akhtar | 48h |
| 9 | 2.4 | Architecture Design Preliminary | 2d | 2020-01-30 | 2020-01-31 | 8 | 0d |  | Faisal Ahmed Farooqui | 16h |
| 10 | 2.5 | R&D on Technologies need to be used in project | 2d | 2020-02-03 | 2020-02-04 | 9 | 0d |  | Hammad Khalil; Zeeshan Akhtar | 32h |
| 11 | 2.6 | Code Structure Setup | 2d | 2020-02-06 | 2020-02-07 | 10 | 105d |  | Faisal Ahmed Farooqui; Zeeshan Akhtar | 32h |
| 12 | 2.7 | UI Components Structure Setup | 3d | 2020-02-06 | 2020-02-10 | 10 | 3d | 0d | Hammad Khalil | 24h |
| 13 | 2.8 | Design complete | 1d | 2020-02-11 | 2020-02-11 | 12 | 69d | 0d | Faisal Ahmed Farooqui | 8h |
| 14 | 3 | **Development Sprints** | 76d | 2020-02-06 | 2020-05-22 |  | 0d |  |  | 3080h |
| 15 | 3.1 | **Detailed Design Implementation** | 14d | 2020-02-06 | 2020-02-25 | 10 | 0d |  |  | 128h |
| 16 | 3.1.1 | Projects Structure Creation & ORM Model Creation | 2d | 2020-02-06 | 2020-02-07 |  | 0d |  | Zeeshan Akhtar; Faisal Ahmed Farooqui | 32h |
| 17 | 3.1.2 | DataAccessLayer Implementation | 3d | 2020-02-10 | 2020-02-12 | 16 | 0d |  | Zeeshan Akhtar | 24h |
| 18 | 3.1.3 | BusinessLogicLayer and Service Structure Implementation | 3d | 2020-02-13 | 2020-02-17 | 17 | 0d |  | Zeeshan Akhtar | 24h |
| 19 | 3.1.4 | Unit Test Structure Creation | 2d | 2020-02-18 | 2020-02-19 | 18 | 0d |  | Zeeshan Akhtar | 16h |
| 20 | 3.1.5 | Infrastructure & Integration Services Creation (like Message Queue) | 4d | 2020-02-20 | 2020-02-25 | 19 | 0d |  | Zeeshan Akhtar | 32h |
| 21 | 3.2 | **Code Copy from Existing Apps** | 9d | 2020-02-11 | 2020-02-21 | 10 | 2d | 0d | Hammad Khalil | 144h |
| 22 | 3.2.1 | UI Structure Creation from Nexelus App | 3d | 2020-02-11 | 2020-02-13 | 12 | 2d | 0d | Hammad Khalil | 24h |
| 23 | 3.2.2 | Copying the usable code for UI & Logic from Demo App of APAutomation | 5d | 2020-02-14 | 2020-02-20 | 22 | 2d | 0d | Hammad Khalil | 40h |
| 24 | 3.2.3 | Release 0 - Demo | 1d | 2020-02-21 | 2020-02-21 | 23 | 2d |  | Hammad Khalil | 8h |

| ID | WBS | Task | Duration | Start | Finish | Predecessors | Total slack | Free slack | Resources | Work |
| --- | --- | --- | --- | --- | --- | --- | --- | --- | --- | --- |
| 25 | 3.3 | **Company Registration** | 10d | 2020-02-26 | 2020-03-10 | 15 | 0d |  |  | 80h |
| 26 | 3.3.1 | Company Sertup | 3d | 2020-02-26 | 2020-02-28 |  | 0d |  | Zeeshan Akhtar | 24h |
| 27 | 3.3.2 | Users, Roles and Groups | 4d | 2020-03-02 | 2020-03-05 | 26 | 0d |  | Zeeshan Akhtar | 32h |
| 28 | 3.3.3 | Login Screen | 3d | 2020-03-06 | 2020-03-10 | 27 | 0d |  | Zeeshan Akhtar | 24h |
| 29 | 3.4 | **Release 0 & Testing** | 12d | 2020-03-11 | 2020-03-27 | 25 | 0d |  | Zeeshan Akhtar; Tester 1 | 288h |
| 30 | 3.4.1 | Deployment on on-prem env for Release 1 and Demo | 2d | 2020-03-11 | 2020-03-12 |  | 0d |  | Zeeshan Akhtar | 16h |
| 31 | 3.4.2 | Test Cycle 1 | 5d | 2020-03-13 | 2020-03-19 | 30 | 0d |  | Tester 1 | 40h |
| 32 | 3.4.3 | Debug Cycle 1 | 5d | 2020-03-20 | 2020-03-27 | 31 | 0d |  | Zeeshan Akhtar | 40h |
| 33 | 3.5 | **Document Status Management** | 13d | 2020-03-30 | 2020-04-15 | 29 | 0d |  | Zeeshan Akhtar | 208h |
| 34 | 3.5.1 | Document Listing UI Creation | 3d | 2020-03-30 | 2020-04-01 |  | 0d |  | Zeeshan Akhtar | 24h |
| 35 | 3.5.2 | Invoice Creation | 5d | 2020-04-02 | 2020-04-08 | 34 | 0d |  | Zeeshan Akhtar | 40h |
| 36 | 3.5.3 | Invoice Approval, Review Workflow | 3d | 2020-04-09 | 2020-04-13 | 35 | 0d |  | Zeeshan Akhtar | 24h |
| 37 | 3.5.4 | Unit Test Creation for Document Listing Logic | 2d | 2020-04-14 | 2020-04-15 | 36 | 0d |  | Zeeshan Akhtar | 16h |
| 38 | 3.6 | **Release 1 & Testing** | 12d | 2020-04-16 | 2020-05-01 | 37 | 0d |  | Zeeshan Akhtar; Tester 1 | 288h |
| 39 | 3.6.1 | Deployment on on-prem env for Release 1 and Demo | 2d | 2020-04-16 | 2020-04-17 |  | 0d |  | Zeeshan Akhtar | 16h |
| 40 | 3.6.2 | Test Cycle 1 | 5d | 2020-04-20 | 2020-04-24 | 39 | 0d |  | Tester 1 | 40h |
| 41 | 3.6.3 | Debug Cycle 1 | 5d | 2020-04-27 | 2020-05-01 | 40 | 0d |  | Zeeshan Akhtar | 40h |
| 42 | 3.7 | **Textract Service Integration** | 6d | 2020-02-24 | 2020-03-02 | 21 | 2d |  | Hammad Khalil | 96h |
| 43 | 3.7.1 | Background Agent Service Creation | 3d | 2020-02-24 | 2020-02-26 |  | 2d | 0d | Hammad Khalil | 24h |
| 44 | 3.7.2 | Integration with Message Queue | 3d | 2020-02-27 | 2020-03-02 | 43 | 2d | 0d | Hammad Khalil | 24h |
| 45 | 3.8 | **Release 2 & Testing** | 11d | 2020-03-03 | 2020-03-17 | 44 | 2d | 0d | Hammad Khalil; Tester 1 | 264h |
| 46 | 3.8.1 | Deployment on cloud for Release 2 | 1d | 2020-03-03 | 2020-03-03 |  | 2d | 0d | Hammad Khalil | 8h |
| 47 | 3.8.2 | Test Cycle 2 | 5d | 2020-03-04 | 2020-03-10 | 46 | 2d | 0d | Tester 1 | 40h |
| 48 | 3.8.3 | Debug Cycle 2 | 5d | 2020-03-11 | 2020-03-17 | 47 | 2d |  | Hammad Khalil | 40h |

| ID | WBS | Task | Duration | Start | Finish | Predecessors | Total slack | Free slack | Resources | Work |
| --- | --- | --- | --- | --- | --- | --- | --- | --- | --- | --- |
| 49 | 3.9 | **Model Creation Functionality** | 14d | 2020-03-18 | 2020-04-07 | 45 | 2d |  | Hammad Khalil | 224h |
| 50 | 3.9.1 | Backend logic creation for Document Field Mapping Functionality | 8d | 2020-03-18 | 2020-03-30 |  | 2d | 0d | Hammad Khalil | 64h |
| 51 | 3.9.2 | UI Creation of Document Field Mapping Functionality | 4d | 2020-03-31 | 2020-04-03 | 50 | 2d | 0d | Hammad Khalil | 32h |
| 52 | 3.9.3 | Unit Test Creation for Model Creation Functionality | 2d | 2020-04-06 | 2020-04-07 | 51 | 2d | 0d | Hammad Khalil | 16h |
| 53 | 3.10 | **Release 3 & Testing** | 5d | 2020-04-08 | 2020-04-14 | 52 | 2d | 0d |  | 64h |
| 54 | 3.10.1 | Deployment on cloud for Release 3 | 2d | 2020-04-08 | 2020-04-09 |  | 2d | 0d | Hammad Khalil | 16h |
| 55 | 3.10.2 | Test Cycle 3 | 3d | 2020-04-10 | 2020-04-14 | 54 | 2d |  | Tester 1 | 24h |
| 56 | 3.10.3 | Debug Cycle 3 | 3d | 2020-04-10 | 2020-04-14 | 54 | 2d |  | Hammad Khalil | 24h |
| 57 | 3.11 | **Model Search Functionality** | 9d | 2020-05-04 | 2020-05-14 | 38, 29 | 0d |  | Zeeshan Akhtar | 144h |
| 58 | 3.11.1 | Creation of Model Search Functionality | 4d | 2020-05-04 | 2020-05-07 | 38, 29 | 0d |  | Zeeshan Akhtar | 32h |
| 59 | 3.11.2 | Tolerance Optimization | 4d | 2020-05-08 | 2020-05-13 | 58 | 0d |  | Zeeshan Akhtar | 32h |
| 60 | 3.11.3 | Unit Test Creation for Model Search Functionality | 1d | 2020-05-14 | 2020-05-14 | 59 | 0d |  | Zeeshan Akhtar | 8h |
| 61 | 3.12 | **Release 4 & Testing** | 5d | 2020-05-15 | 2020-05-21 | 60 | 0d |  | Zeeshan Akhtar; Tester 1 | 144h |
| 62 | 3.12.1 | Deployment on cloud for Release 4 | 2d | 2020-05-15 | 2020-05-18 |  | 0d |  | Zeeshan Akhtar | 16h |
| 63 | 3.12.2 | Test Cycle 4 | 3d | 2020-05-19 | 2020-05-21 | 62 | 0d |  | Tester 1 | 24h |
| 64 | 3.12.3 | Debug Cycle 4 | 3d | 2020-05-19 | 2020-05-21 | 62 | 0d |  | Tester 1 | 24h |
| 65 | 3.13 | **ERP Integration** | 45d | 2020-02-26 | 2020-04-29 | 15 | 41d |  |  | 440h |
| 66 | 3.13.1 | Creation of Generalized Adapter Interface for Data Push and Pull | 1d | 2020-02-26 | 2020-02-26 |  | 41d | 0d | Tao Lin | 8h |
| 67 | 3.13.2 | Integration with Message Queue | 2d | 2020-02-27 | 2020-02-28 | 66 | 41d | 0d | Tao Lin | 16h |
| 68 | 3.13.3 | Creation of Data Pull functionality for Nexelus Adapter | 2d | 2020-03-02 | 2020-03-03 | 67 | 41d | 0d | Tao Lin | 16h |
| 69 | 3.13.4 | Creation of Data Push functionality for Nexelus Adapter | 2d | 2020-03-04 | 2020-03-05 | 68 | 41d | 0d | Tao Lin | 16h |
| 70 | 3.13.5 | Vendor and Other Primary Data Fetching | 3d | 2020-03-06 | 2020-03-10 | 69 | 41d | 0d | Zeeshan Akhtar | 24h |
| 71 | 3.13.6 | Data Cache Implementation | 2d | 2020-03-11 | 2020-03-12 | 70 | 79d | 0d | Tao Lin | 16h |
| 72 | 3.13.7 | Unit Test Creation for Adapter Interface | 2d | 2020-03-13 | 2020-03-16 | 71 | 79d |  | Tao Lin | 16h |
| 73 | 3.13.8 | Invoice Creation and Pushing into ERP System | 2d | 2020-04-16 | 2020-04-17 | 70, 33 | 16d | 0d | Zeeshan Akhtar | 16h |

| ID | WBS | Task | Type | Duration | Start | Finish | Predecessors | Total slack | Free slack | Resources | Work |
| --- | --- | --- | --- | --- | --- | --- | --- | --- | --- | --- | --- |
| 74 | 3.13.9 | **Release 5 & Testing** |  | 8d | 2020-04-20 | 2020-04-29 | 73 | 16d |  | Zeeshan Akhtar; Tao Lin; Tester 1 | 312h |
| 75 | 3.13.9.1 | Deployment on cloud for Release 5 |  | 2d | 2020-04-20 | 2020-04-21 |  | 22d |  | Tao Lin; Zeeshan Akhtar | 32h |
| 76 | 3.13.9.2 | Test Cycle 5 |  | 5d | 2020-04-20 | 2020-04-24 |  | 16d | 0d | Tester 1 | 40h |
| 77 | 3.13.9.3 | Debug Cycle 5 |  | 3d | 2020-04-27 | 2020-04-29 | 76 | 16d |  | Tao Lin; Zeeshan Akhtar | 48h |
| 78 | 3.14 | **Security, Login and Multi Tenant Functionality implementation** |  | 10d | 2020-04-15 | 2020-04-28 | 53 | 2d | 0d | Hammad Khalil | 160h |
| 79 | 3.14.1 | Creation of Security Token Service |  | 2d | 2020-04-15 | 2020-04-16 |  | 2d | 0d | Hammad Khalil | 16h |
| 80 | 3.14.2 | Login Creation |  | 3d | 2020-04-17 | 2020-04-21 | 79 | 2d | 0d | Hammad Khalil | 24h |
| 81 | 3.14.3 | Automatic DB Creation, ERP System Integration, Primary Data Fetching |  | 5d | 2020-04-22 | 2020-04-28 | 80 | 2d |  | Hammad Khalil | 40h |
| 82 | 3.15 | **Release 6 & Testing** |  | 15d | 2020-04-29 | 2020-05-19 | 78 | 2d |  | Hammad Khalil; Tester 1 | 400h |
| 83 | 3.15.1 | Deployment on cloud for Release 6 |  | 10d | 2020-04-29 | 2020-05-12 | 78 | 2d | 0d | Hammad Khalil | 80h |
| 84 | 3.15.2 | Test Cycle 6 |  | 5d | 2020-05-13 | 2020-05-19 | 83 | 2d |  | Tester 1 | 40h |
| 85 | 3.15.3 | Debug Cycle 6 |  | 5d | 2020-05-13 | 2020-05-19 | 83 | 2d |  | Hammad Khalil | 40h |
| 86 | 3.16 | Development complete |  | 1d | 2020-05-22 | 2020-05-22 | 82, 74, 61 | 0d |  | Faisal Ahmed Farooqui | 8h |
| 87 | 4 | Integration Testing |  | 5d | 2020-05-25 | 2020-05-29 | 86 | 24d | 0d |  |  |
| 88 | 5 | **Testing for Beta Release to Clients** |  | 2d | 2020-05-22 | 2020-05-25 | 82, 74, 61 | 23d |  | Tester 1 | 32h |
| 89 | 5.1 | Fine tuning and small fixes |  | 2d | 2020-05-22 | 2020-05-25 |  | 23d | 0d | Tester 1 | 16h |
| 90 | 5.2 | Integration testing complete | milestone | 0d | 2020-05-25 | 2020-05-25 | 89 | 23d |  |  |  |
| 91 | 6 | **Deployment** |  | 2d | 2020-06-01 | 2020-06-02 |  | 24d |  |  | 16h |
| 92 | 6.1 | Preparation for RTM environment for beta |  | 2d | 2020-06-01 | 2020-06-02 | 87 | 24d |  | Deployment Team | 16h |
| 93 | 7 | **Pilot** |  | 122d | 2020-01-15 | 2020-07-06 |  | 0d |  |  | 64h |
| 94 | 7.1 | Identify test group |  | 1d | 2020-01-15 | 2020-01-15 |  | 113d | 0d | Project Manager | 8h |
| 95 | 7.2 | Develop software delivery mechanism |  | 1d | 2020-01-16 | 2020-01-16 | 94 | 113d |  |  |  |
| 96 | 7.3 | Install/deploy software |  | 1d | 2020-06-26 | 2020-06-26 | 90, 95, 123, 113 | 0d |  | Deployment Team | 8h |
| 97 | 7.4 | Obtain user feedback |  | 1w | 2020-06-29 | 2020-07-03 | 96 | 0d |  | Deployment Team | 40h |
| 98 | 7.5 | Evaluate testing information |  | 1d | 2020-07-06 | 2020-07-06 | 97 | 0d |  | Deployment Team | 8h |
| 99 | 7.6 | Pilot complete | milestone | 0d | 2020-07-06 | 2020-07-06 | 98 | 0d |  |  |  |

| ID | WBS | Task | Type | Duration | Start | Finish | Predecessors | Total slack | Free slack | Resources | Work |
| --- | --- | --- | --- | --- | --- | --- | --- | --- | --- | --- | --- |
| 100 | 8 | **Post Implementation Review** |  | 3d | 2020-01-15 | 2020-01-17 |  | 119d |  |  | 24h |
| 101 | 8.1 | Document lessons learned |  | 1d | 2020-01-15 | 2020-01-15 |  | 119d | 0d | Project Manager | 8h |
| 102 | 8.2 | Distribute to team members |  | 1d | 2020-01-16 | 2020-01-16 | 101 | 119d | 0d | Project Manager | 8h |
| 103 | 8.3 | Create software maintenance team |  | 1d | 2020-01-17 | 2020-01-17 | 102 | 119d | 0d | Project Manager | 8h |
| 104 | 8.4 | Post implementation review complete | milestone | 0d | 2020-01-17 | 2020-01-17 | 103 | 119d | 0d |  |  |
| 105 | 9 | **Training** |  | 96d | 2020-02-12 | 2020-06-25 |  | 0d |  |  | 256h |
| 106 | 9.1 | Develop training specifications for end users |  | 3d | 2020-02-12 | 2020-02-14 | 13 | 69d |  | Trainers | 24h |
| 107 | 9.2 | Develop training specifications for helpdesk support staff |  | 3d | 2020-02-12 | 2020-02-14 | 13 | 69d |  | Trainers | 24h |
| 108 | 9.3 | Identify training delivery methodology (computer based training, classroom, etc.) |  | 2d | 2020-02-12 | 2020-02-13 | 13 | 70d |  | Trainers | 16h |
| 109 | 9.4 | Develop training materials |  | 3w | 2020-05-25 | 2020-06-12 | 106, 86, 107, 108 | 0d |  | Trainers | 120h |
| 110 | 9.5 | Conduct training usability study |  | 4d | 2020-06-15 | 2020-06-18 | 109 | 0d |  | Trainers | 32h |
| 111 | 9.6 | Finalize training materials |  | 3d | 2020-06-19 | 2020-06-23 | 110 | 0d |  | Trainers | 24h |
| 112 | 9.7 | Develop training delivery mechanism |  | 2d | 2020-06-24 | 2020-06-25 | 111 | 0d |  | Trainers | 16h |
| 113 | 9.8 | Training materials complete | milestone | 0d | 2020-06-25 | 2020-06-25 | 112 | 0d |  |  |  |
| 114 | 10 | **Documentation** |  | 21d | 2020-02-12 | 2020-03-11 |  | 75d |  |  | 336h |
| 115 | 10.1 | Develop Help specification |  | 1d | 2020-02-12 | 2020-02-12 | 13 | 75d | 0d | Technical Communicators | 8h |
| 116 | 10.2 | Develop Help system |  | 3w | 2020-02-13 | 2020-03-04 | 115 | 75d | 0d | Technical Communicators | 120h |
| 117 | 10.3 | Review Help documentation |  | 3d | 2020-03-05 | 2020-03-09 | 116 | 75d | 0d | Technical Communicators | 24h |
| 118 | 10.4 | Incorporate Help documentation feedback |  | 2d | 2020-03-10 | 2020-03-11 | 117 | 75d | 0d | Technical Communicators | 16h |
| 119 | 10.5 | Develop user manuals specifications |  | 2d | 2020-02-12 | 2020-02-13 | 13 | 75d | 0d | Technical Communicators | 16h |
| 120 | 10.6 | Develop user manuals |  | 3w | 2020-02-14 | 2020-03-05 | 119 | 75d | 0d | Technical Communicators | 120h |
| 121 | 10.7 | Review all user documentation |  | 2d | 2020-03-06 | 2020-03-09 | 120 | 75d | 0d | Technical Communicators | 16h |
| 122 | 10.8 | Incorporate user documentation feedback |  | 2d | 2020-03-10 | 2020-03-11 | 121 | 75d | 0d | Technical Communicators | 16h |
| 123 | 10.9 | Documentation complete | milestone | 0d | 2020-03-11 | 2020-03-11 | 122, 118 | 75d |  |  |  |
| 124 | 11 | Software development template complete | milestone | 0d | 2020-01-17 | 2020-01-17 | 104 | 116d |  |  |  |
