# AP Automation Phase 1

Schedule from MS Project, 2020-01-15 to 2020-05-18, A marks actual dates.

## Calendars

- Standard: Mon-Fri 08:00-12:00, 13:00-17:00; Sat-Sun off. Exceptions (off unless hours are given): 2020-02-05 (Kashmir Day, recurring), 2020-03-23 (Pakistan Day, recurring).

## Resources

| Resource | Group |
| --- | --- |
| Zeeshan Akhtar | Dev |
| Tester 1 | QA |
| Hammad Khalil | Dev |
| Faisal Ahmed Farooqui | Manager, Dev |
| Tao Lin | Dev |

## Schedule

| ID | WBS | Task | Duration | Start | Finish | Predecessors | Complete | Remaining | Total slack | Free slack | Resources | Work | Actual work |
| --- | --- | --- | --- | --- | --- | --- | --- | --- | --- | --- | --- | --- | --- |
| 1 | 1 | **Analysis/Software Requirements** | 5d | 2020-01-15 | 2020-01-21 |  |  |  | 75.5d |  |  | 56h |  |
| 2 | 1.1 | Document Review | 16h | 2020-01-15 | 2020-01-16 |  |  |  | 98.05d | 0d | Faisal Ahmed Farooqui; Tao Lin | 32h |  |
| 3 | 1.2 | Understanding of Existing App & Prototype App | 16h | 2020-01-17 | 2020-01-20 | 2 |  |  | 98.05d | 0d | Faisal Ahmed Farooqui | 16h |  |
| 4 | 1.3 | Infrastructure Requirement Understanding | 8h | 2020-01-21 | 2020-01-21 | 3 |  |  | 98.05d | 0d | Faisal Ahmed Farooqui | 8h |  |
| 5 | 2 | **Design** | 16d | 2020-01-22 A | 2020-02-13 |  | 52% | 7.68d | 65.5d |  |  | 256h | 91.2h |
| 6 | 2.1 | Document Review | 16h | 2020-01-22 | 2020-01-23 | 4 |  |  | 98.05d | 0d | Faisal Ahmed Farooqui; Tao Lin | 32h |  |
| 7 | 2.2 | Review preliminary software specifications | 16h | 2020-01-24 | 2020-01-27 | 6 |  |  | 98.05d | 0d | Faisal Ahmed Farooqui; Hammad Khalil; Zeeshan Akhtar | 48h |  |
| 8 | 2.3 | DB Design Review | 16h | 2020-01-28 | 2020-01-29 | 4, 7 |  |  | 98.05d |  | Faisal Ahmed Farooqui; Hammad Khalil; Zeeshan Akhtar | 48h |  |
| 9 | 2.4 | Architecture Design Preliminary | 16h | 2020-01-30 A | 2020-01-31 A | 8 | 100% |  |  |  | Faisal Ahmed Farooqui | 16h | 16h |
| 10 | 2.5 | R&D on Technologies need to be used in project | 16h | 2020-01-30 A | 2020-01-31 | 9SS | 50% | 8h | 73.5d |  | Hammad Khalil; Zeeshan Akhtar | 32h | 16h |
| 11 | 2.6 | Code Structure Setup | 16h | 2020-02-03 A | 2020-02-04 A | 10 | 100% |  |  |  | Zeeshan Akhtar | 16h | 16h |
| 12 | 2.7 | UI Components Structure Setup | 24h | 2020-02-03 A | 2020-02-06 A | 10 | 100% |  |  |  | Hammad Khalil | 24h | 24h |
| 13 | 2.8 | Design complete | 16h | 2020-02-07 | 2020-02-10 | 12 |  |  | 2.4d | 0d | Faisal Ahmed Farooqui | 16h |  |
| 14 | 2.9 | ProjectPlan Creation | 24h | 2020-02-11 A | 2020-02-13 | 13 | 80% | 4.8h | 65.5d |  | Faisal Ahmed Farooqui | 24h | 19.2h |
| 15 | 3 | **Development Sprints** | 71.5d | 2020-02-06 A | 2020-05-18 |  | 72% | 19.8d | 0d |  |  | 918.98h | 618.98h |
| 16 | 3.1 | **Detailed Design Implementation** | 12.67d | 2020-02-06 A | 2020-02-24 A |  | 100% |  |  |  |  | 112.02h | 112.02h |
| 17 | 3.1.1 | Projects Structure Creation & ORM Model Creation | 16h | 2020-02-06 A | 2020-02-07 A | 11 | 100% |  |  |  | Zeeshan Akhtar | 16h | 16h |
| 18 | 3.1.2 | DataAccessLayer Implementation | 24h | 2020-02-10 A | 2020-02-12 A | 17 | 100% |  |  |  | Zeeshan Akhtar | 24h | 24h |
| 19 | 3.1.3 | BusinessLogicLayer and Service Structure Implementation | 24h | 2020-02-13 A | 2020-02-17 A | 18 | 100% |  |  |  | Zeeshan Akhtar | 24h | 24h |
| 20 | 3.1.4 | Unit Test Structure Creation | 16h | 2020-02-18 A | 2020-02-19 A | 19 | 100% |  |  |  | Zeeshan Akhtar | 16h | 16h |
| 21 | 3.1.5 | Infrastructure & Integration Services Creation (like Message Queue) | 53.36h | 2020-02-14 A | 2020-02-24 A | 14 | 100% |  |  |  | Faisal Ahmed Farooqui [60%] | 32.02h | 32.02h |
| 22 | 3.2 | **Code Copy from Existing Apps** | 11d | 2020-02-07 A | 2020-02-21 A | 10 | 100% |  |  |  |  | 88h | 88h |
| 23 | 3.2.1 | UI Structure Creation from Nexelus App | 24h | 2020-02-07 A | 2020-02-11 A | 12 | 100% |  |  |  | Hammad Khalil | 24h | 24h |
| 24 | 3.2.2 | Copying the usable code for UI & Logic from Demo App of APAutomation | 48h | 2020-02-12 A | 2020-02-19 A | 23 | 100% |  |  |  | Hammad Khalil | 48h | 48h |
| 25 | 3.2.3 | Release 0 - Demo | 16h | 2020-02-20 A | 2020-02-21 A | 24 | 100% |  |  |  | Hammad Khalil | 16h | 16h |

| ID | WBS | Task | Duration | Start | Finish | Predecessors | Complete | Remaining | Total slack | Free slack | Resources | Work | Actual work |
| --- | --- | --- | --- | --- | --- | --- | --- | --- | --- | --- | --- | --- | --- |
| 26 | 3.3 | **Company Registration** | 6d | 2020-02-24 A | 2020-03-02 A | 22 | 100% |  |  |  |  | 64h | 64h |
| 27 | 3.3.1 | Company Setup | 24h | 2020-02-24 A | 2020-02-26 A |  | 100% |  |  |  | Zeeshan Akhtar | 24h | 24h |
| 28 | 3.3.2 | Users, Roles and Groups | 40h | 2020-02-24 A | 2020-03-02 A | 21 | 100% |  |  |  | Faisal Ahmed Farooqui [40%] | 16h | 16h |
| 29 | 3.3.3 | Login Screen | 24h | 2020-02-27 A | 2020-03-02 A | 27SS | 100% |  |  |  | Hammad Khalil | 24h | 24h |
| 30 | 3.4 | **Release 0 & Testing** | 17d | 2020-03-03 A | 2020-03-26 A | 26 | 100% |  |  |  |  | 99.2h | 99.2h |
| 31 | 3.4.1 | Deployment on on-prem env for Release 1 and Demo | 96h | 2020-03-03 A | 2020-03-18 A |  | 100% |  |  |  | Faisal Ahmed Farooqui [20%] | 19.2h | 19.2h |
| 32 | 3.4.2 | Test Cycle 1 | 40h | 2020-03-19 A | 2020-03-26 A | 31 | 100% |  |  |  | Tester 1 | 40h | 40h |
| 33 | 3.4.3 | Debug Cycle 1 | 40h | 2020-03-19 A | 2020-03-26 A | 32SS | 100% |  |  |  | Hammad Khalil | 40h | 40h |
| 34 | 3.5 | **Core Business Functions** | 39.5d | 2020-03-19 A | 2020-05-14 |  | 49% | 20.2d | 0d |  |  | 539.76h | 255.76h |
| 35 | 3.5.1 | Document Listing UI Creation | 80h | 2020-03-19 A | 2020-04-02 A | 31 | 100% |  |  |  | Zeeshan Akhtar | 80h | 80h |
| 36 | 3.5.2 | ERP Integration | 40h | 2020-04-01 A | 2020-04-07 A | 35 | 100% |  |  |  | Tao Lin [40%] | 39.76h | 39.76h |
| 37 | 3.5.3 | Textract Integration | 40h | 2020-03-27 A | 2020-04-02 A | 30 | 100% |  |  |  | Faisal Ahmed Farooqui | 40h | 40h |
| 38 | 3.5.4 | Multenancy at backend | 24h | 2020-04-03 A | 2020-04-07 A | 37 | 100% |  |  |  | Faisal Ahmed Farooqui | 24h | 24h |
| 39 | 3.5.5 | Manage Invoice Models | 40h | 2020-04-03 A | 2020-04-09 | 35 | 90% | 4h | 2.5d | 0d | Zeeshan Akhtar | 40h | 36h |
| 40 | 3.5.6 | Model Scanner Process | 48h | 2020-04-08 | 2020-04-15 | 38 |  |  | 8.75d | 0d | Faisal Ahmed Farooqui | 48h |  |
| 41 | 3.5.7 | Manage Invoice | 32h | 2020-04-10 | 2020-04-15 | 39 |  |  | 2.5d | 0d | Zeeshan Akhtar | 32h |  |
| 42 | 3.5.8 | View Document | 32h | 2020-04-16 | 2020-04-21 | 40 |  |  | 9.75d |  | Faisal Ahmed Farooqui | 32h |  |
| 43 | 3.5.9 | Invoice Creation | 32h | 2020-04-16 | 2020-04-21 | 41 |  |  | 2.5d | 0d | Zeeshan Akhtar | 32h |  |
| 44 | 3.5.10 | Invoice Approval, Review Workflow | 24h | 2020-04-22 | 2020-04-24 | 43 |  |  | 2.5d | 0d | Zeeshan Akhtar | 24h |  |
| 45 | 3.5.11 | Invoice Mapping - Model Creation | 60h | 2020-04-27 A | 2020-05-06 | 44 | 60% | 24h | 0d |  | Zeeshan Akhtar | 60h | 36h |
| 46 | 3.5.12 | Invoice Posting | 24h | 2020-04-27 | 2020-04-29 | 36, 44 |  |  | 8d |  | Tao Lin | 24h |  |
| 47 | 3.5.13 | Testing | 32h | 2020-05-06 | 2020-05-12 | 45 |  |  | 0d |  | Zeeshan Akhtar | 32h |  |
| 48 | 3.5.14 | Bug Fixing | 16h | 2020-05-12 | 2020-05-14 | 47 |  |  | 0d |  | Zeeshan Akhtar; Faisal Ahmed Farooqui | 32h |  |
| 49 | 3.6 | Release 1 & Testing | 16h | 2020-05-14 | 2020-05-18 | 34 |  |  | 0d |  | Faisal Ahmed Farooqui | 16h |  |
