# AP Automation Phase 1

Schedule from MS Project, 2020-01-15 to 2020-06-03, A marks actual dates.

## Calendars

- Standard: Mon-Fri 08:00-12:00, 13:00-17:00; Sat-Sun off. Exceptions (off unless hours are given): 2020-02-05 (Kashmir Day, recurring), 2020-03-23 (Pakistan Day, recurring).

## Resources

| Resource | Group |
| --- | --- |
| Zeeshan Akhtar | Dev |
| Tester 1 | QA |
| Hammad Khalil | Dev |
| Faisal Ahmed Farooqui | Manager, Dev |
| Tao Lin | Dev |

## Schedule

| ID | WBS | Task | Duration | Start | Finish | Predecessors | Complete | Remaining | Total slack | Free slack | Resources | Work | Actual work |
| --- | --- | --- | --- | --- | --- | --- | --- | --- | --- | --- | --- | --- | --- |
| 1 | 1 | **Analysis/Software Requirements** | 5d | 2020-01-15 | 2020-01-21 |  |  |  | 88d |  |  | 56h |  |
| 2 | 1.1 | Document Review | 16h | 2020-01-15 | 2020-01-16 |  |  |  | 0.33d | 0d | Faisal Ahmed Farooqui; Tao Lin | 32h |  |
| 3 | 1.2 | Understanding of Existing App & Prototype App | 16h | 2020-01-17 | 2020-01-20 | 2 |  |  | 0.33d | 0d | Faisal Ahmed Farooqui | 16h |  |
| 4 | 1.3 | Infrastructure Requirement Understanding | 8h | 2020-01-21 | 2020-01-21 | 3 |  |  | 0.33d | 0d | Faisal Ahmed Farooqui | 8h |  |
| 5 | 2 | **Design** | 16d | 2020-01-22 A | 2020-02-13 |  | 52% | 7.68d | 78d |  |  | 256h | 91.2h |
| 6 | 2.1 | Document Review | 16h | 2020-01-22 | 2020-01-23 | 4 |  |  | 0.33d | 0d | Faisal Ahmed Farooqui; Tao Lin | 32h |  |
| 7 | 2.2 | Review preliminary software specifications | 16h | 2020-01-24 | 2020-01-27 | 6 |  |  | 0.33d | 0d | Faisal Ahmed Farooqui; Hammad Khalil; Zeeshan Akhtar | 48h |  |
| 8 | 2.3 | DB Design Review | 16h | 2020-01-28 | 2020-01-29 | 4, 7 |  |  | 0.33d | 0d | Faisal Ahmed Farooqui; Hammad Khalil; Zeeshan Akhtar | 48h |  |
| 9 | 2.4 | Architecture Design Preliminary | 16h | 2020-01-30 A | 2020-01-31 A | 8 | 100% |  |  |  | Faisal Ahmed Farooqui | 16h | 16h |
| 10 | 2.5 | R&D on Technologies need to be used in project | 16h | 2020-01-30 A | 2020-01-31 | 9SS | 50% | 8h | 86d |  | Hammad Khalil; Zeeshan Akhtar | 32h | 16h |
| 11 | 2.6 | Code Structure Setup | 16h | 2020-02-03 A | 2020-02-04 A | 10 | 100% |  |  |  | Zeeshan Akhtar | 16h | 16h |
| 12 | 2.7 | UI Components Structure Setup | 24h | 2020-02-03 A | 2020-02-06 A | 10 | 100% |  |  |  | Hammad Khalil | 24h | 24h |
| 13 | 2.8 | Design complete | 16h | 2020-02-07 | 2020-02-10 | 12 |  |  | 2.4d | 0d | Faisal Ahmed Farooqui | 16h |  |
| 14 | 2.9 | ProjectPlan Creation | 24h | 2020-02-11 A | 2020-02-13 | 13 | 80% | 4.8h | 1.33d | 0d | Faisal Ahmed Farooqui | 24h | 19.2h |
| 15 | 3 | **Development Sprints** | 71d | 2020-02-06 A | 2020-05-15 |  | 12% | 62.49d | 13d |  |  | 1665.62h | 197.44h |
| 16 | 3.1 | **Detailed Design Implementation** | 12.67d | 2020-02-06 A | 2020-02-24 |  | 68% | 4.06d | 0.33d | 0d |  | 112.02h | 86.4h |
| 17 | 3.1.1 | Projects Structure Creation & ORM Model Creation | 16h | 2020-02-06 A | 2020-02-07 A | 11 | 100% |  |  |  | Zeeshan Akhtar | 16h | 16h |
| 18 | 3.1.2 | DataAccessLayer Implementation | 24h | 2020-02-10 A | 2020-02-12 A | 17 | 100% |  |  |  | Zeeshan Akhtar | 24h | 24h |
| 19 | 3.1.3 | BusinessLogicLayer and Service Structure Implementation | 24h | 2020-02-13 A | 2020-02-17 A | 18 | 100% |  |  |  | Zeeshan Akhtar | 24h | 24h |
| 20 | 3.1.4 | Unit Test Structure Creation | 16h | 2020-02-18 A | 2020-02-19 A | 19 | 100% |  |  |  | Zeeshan Akhtar | 16h | 16h |
| 21 | 3.1.5 | Infrastructure & Integration Services Creation (like Message Queue) | 53.36h | 2020-02-14 A | 2020-02-24 | 14 | 20% | 42.69h | 0.33d | 0d | Faisal Ahmed Farooqui [60%] | 32.02h | 6.4h |
| 22 | 3.2 | **Code Copy from Existing Apps** | 11d | 2020-02-07 A | 2020-02-21 A | 10 | 100% |  |  |  |  | 88h | 88h |
| 23 | 3.2.1 | UI Structure Creation from Nexelus App | 24h | 2020-02-07 A | 2020-02-11 A | 12 | 100% |  |  |  | Hammad Khalil | 24h | 24h |
| 24 | 3.2.2 | Copying the usable code for UI & Logic from Demo App of APAutomation | 48h | 2020-02-12 A | 2020-02-19 A | 23 | 100% |  |  |  | Hammad Khalil | 48h | 48h |
| 25 | 3.2.3 | Release 0 - Demo | 16h | 2020-02-20 A | 2020-02-21 A | 24 | 100% |  |  |  | Hammad Khalil | 16h | 16h |

| ID | WBS | Task | Duration | Start | Finish | Predecessors | Complete | Remaining | Total slack | Free slack | Resources | Work | Actual work |
| --- | --- | --- | --- | --- | --- | --- | --- | --- | --- | --- | --- | --- | --- |
| 26 | 3.3 | **Company Registration** | 6d | 2020-02-24 A | 2020-03-02 | 22 | 22% | 4.69d | 0d |  |  | 64h | 19.2h |
| 27 | 3.3.1 | Company Setup | 24h | 2020-02-24 A | 2020-02-26 |  | 40% | 14.4h | 3d | 0d | Zeeshan Akhtar | 24h | 9.6h |
| 28 | 3.3.2 | Users, Roles and Groups | 40h | 2020-02-24 | 2020-03-02 | 21 |  |  | 0.33d |  | Faisal Ahmed Farooqui [40%] | 16h |  |
| 29 | 3.3.3 | Login Screen | 24h | 2020-02-27 A | 2020-03-02 | 27SS | 40% | 14.4h | 0d |  | Hammad Khalil | 24h | 9.6h |
| 30 | 3.4 | **Release 0 & Testing** | 17d | 2020-03-03 A | 2020-03-26 | 26 | 11% | 15.15d | 8.6d |  |  | 99.2h | 3.84h |
| 31 | 3.4.1 | Deployment on on-prem env for Release 1 and Demo | 96h | 2020-03-03 A | 2020-03-18 |  | 20% | 76.8h | 0d |  | Faisal Ahmed Farooqui [20%] | 19.2h | 3.84h |
| 32 | 3.4.2 | Test Cycle 1 | 40h | 2020-03-19 | 2020-03-26 | 31 |  |  | 8.6d | 0d | Tester 1 | 40h |  |
| 33 | 3.4.3 | Debug Cycle 1 | 40h | 2020-03-19 | 2020-03-26 | 32SS |  |  | 8.6d | 0d | Hammad Khalil | 40h |  |
| 34 | 3.5 | **Document Status Management** | 25d | 2020-02-27 | 2020-04-02 |  |  |  | 0d |  |  | 136h |  |
| 35 | 3.5.1 | Document Listing UI Creation | 32h | 2020-03-19 | 2020-03-25 | 31 |  |  | 0d |  | Faisal Ahmed Farooqui | 32h |  |
| 36 | 3.5.2 | Invoice Creation | 48h | 2020-02-27 | 2020-03-05 | 27 |  |  | 7.8d | 0d | Zeeshan Akhtar | 48h |  |
| 37 | 3.5.3 | Invoice Approval, Review Workflow | 48h | 2020-03-26 | 2020-04-02 | 35 |  |  | 0d |  | Faisal Ahmed Farooqui | 48h |  |
| 38 | 3.5.4 | Unit Test Creation for Document Listing Logic | 8h | 2020-03-06 | 2020-03-06 | 36 |  |  | 7.8d | 0d | Zeeshan Akhtar | 8h |  |
| 39 | 3.6 | **Release 1 & Testing** | 7d | 2020-03-09 | 2020-03-17 | 38 |  |  | 7.8d | 0d |  | 99.2h |  |
| 40 | 3.6.1 | Deployment on on-prem env for Release 1 and Demo | 16h | 2020-03-09 | 2020-03-10 |  |  |  | 7.8d | 0d | Zeeshan Akhtar; Faisal Ahmed Farooqui [20%] | 19.2h |  |
| 41 | 3.6.2 | Test Cycle 1 | 40h | 2020-03-11 | 2020-03-17 | 40 |  |  | 7.8d | 0d | Tester 1 | 40h |  |
| 42 | 3.6.3 | Debug Cycle 1 | 40h | 2020-03-11 | 2020-03-17 | 41SS |  |  | 7.8d |  | Zeeshan Akhtar | 40h |  |
| 43 | 3.7 | **Textract Service Integration** | 9d | 2020-04-03 | 2020-04-15 | 37 |  |  | 0d |  |  | 72h |  |
| 44 | 3.7.1 | Background Agent Service Creation | 40h | 2020-04-03 | 2020-04-09 |  |  |  | 0d |  | Faisal Ahmed Farooqui | 40h |  |
| 45 | 3.7.2 | Integration with Message Queue | 32h | 2020-04-10 | 2020-04-15 | 44 |  |  | 0d |  | Faisal Ahmed Farooqui | 32h |  |
| 46 | 3.8 | **Release 2 & Testing** | 7.8d | 2020-03-27 | 2020-04-07 | 33 |  |  | 8.6d | 0d |  | 102.4h |  |
| 47 | 3.8.1 | Deployment on cloud for Release 2 | 22.4h | 2020-03-27 | 2020-03-31 |  |  |  | 8.6d | 0d | Hammad Khalil | 22.4h |  |
| 48 | 3.8.2 | Test Cycle 2 | 40h | 2020-03-31 | 2020-04-07 | 47 |  |  | 8.6d | 0d | Tester 1 | 40h |  |
| 49 | 3.8.3 | Debug Cycle 2 | 40h | 2020-03-31 | 2020-04-07 | 48SS |  |  | 8.6d |  | Hammad Khalil | 40h |  |

| ID | WBS | Task | Duration | Start | Finish | Predecessors | Total slack | Free slack | Resources | Work |
| --- | --- | --- | --- | --- | --- | --- | --- | --- | --- | --- |
| 50 | 3.9 | **Model Creation Functionality** | 14.6d | 2020-04-07 | 2020-04-28 | 46 | 8.6d |  |  | 116.8h |
| 51 | 3.9.1 | Backend logic creation for Document Field Mapping Functionality | 76.8h | 2020-04-07 | 2020-04-21 |  | 8.6d | 0d | Hammad Khalil | 76.8h |
| 52 | 3.9.2 | UI Creation of Document Field Mapping Functionality | 32h | 2020-04-21 | 2020-04-27 | 51 | 8.6d | 0d | Hammad Khalil | 32h |
| 53 | 3.9.3 | Unit Test Creation for Model Creation Functionality | 8h | 2020-04-27 | 2020-04-28 | 52 | 8.6d | 0d | Hammad Khalil | 8h |
| 54 | 3.10 | **Release 3 & Testing** | 5d | 2020-04-28 | 2020-05-05 | 53 | 8.6d | 0d |  | 64h |
| 55 | 3.10.1 | Deployment on cloud for Release 3 | 16h | 2020-04-28 | 2020-04-30 |  | 8.6d | 0d | Hammad Khalil | 16h |
| 56 | 3.10.2 | Test Cycle 3 | 24h | 2020-04-30 | 2020-05-05 | 55 | 8.6d | 0d | Tester 1 | 24h |
| 57 | 3.10.3 | Debug Cycle 3 | 24h | 2020-04-30 | 2020-05-05 | 56SS | 8.6d |  | Hammad Khalil | 24h |
| 58 | 3.11 | **Model Search Functionality** | 12.2d | 2020-03-18 | 2020-04-06 | 39 | 7.8d |  |  | 97.6h |
| 59 | 3.11.1 | Creation of Model Search Functionality | 44.8h | 2020-03-18 | 2020-03-26 | 39 | 7.8d | 0d | Zeeshan Akhtar | 44.8h |
| 60 | 3.11.2 | Tolerance Optimization | 44.8h | 2020-03-26 | 2020-04-03 | 59 | 7.8d | 0d | Zeeshan Akhtar | 44.8h |
| 61 | 3.11.3 | Unit Test Creation for Model Search Functionality | 8h | 2020-04-03 | 2020-04-06 | 60 | 7.8d | 0d | Zeeshan Akhtar | 8h |
| 62 | 3.12 | **Release 4 & Testing** | 5d | 2020-04-06 | 2020-04-13 | 61 | 7.8d | 0d |  | 64h |
| 63 | 3.12.1 | Deployment on cloud for Release 4 | 16h | 2020-04-06 | 2020-04-08 |  | 7.8d | 0d | Zeeshan Akhtar | 16h |
| 64 | 3.12.2 | Test Cycle 4 | 24h | 2020-04-08 | 2020-04-13 | 63 | 7.8d | 0d | Tester 1 | 24h |
| 65 | 3.12.3 | Debug Cycle 4 | 24h | 2020-04-08 | 2020-04-13 | 64SS | 7.8d |  | Zeeshan Akhtar | 24h |
| 66 | 3.13 | **ERP Integration** | 49.53d | 2020-02-24 | 2020-05-05 | 16 | 21.8d |  |  | 350.4h |
| 67 | 3.13.1 | Creation of Generalized Adapter Interface for Data Push and Pull | 8h | 2020-02-24 | 2020-02-25 |  | 24.33d | 0d | Tao Lin; Faisal Ahmed Farooqui [10%] | 6.51h |
| 68 | 3.13.2 | Integration with Message Queue | 16h | 2020-02-25 | 2020-02-27 | 67 | 24.33d | 0d | Tao Lin; Faisal Ahmed Farooqui [10%] | 13.03h |
| 69 | 3.13.3 | Creation of Data Pull functionality for Nexelus Adapter | 16h | 2020-02-27 | 2020-03-02 | 68 | 24.33d | 0d | Tao Lin | 16h |
| 70 | 3.13.4 | Creation of Data Push functionality for Nexelus Adapter | 16h | 2020-03-02 | 2020-03-04 | 69 | 24.33d | 21.53d | Tao Lin | 16h |
| 71 | 3.13.5 | Vendor and Other Primary Data Fetching | 24h | 2020-04-13 | 2020-04-16 | 70, 67, 62 | 7.8d | 0d | Zeeshan Akhtar | 24h |
| 72 | 3.13.6 | Data Cache Implementation | 24h | 2020-04-16 | 2020-04-21 | 71 | 29.8d | 0d | Tao Lin; Faisal Ahmed Farooqui [10%] | 13.83h |
| 73 | 3.13.7 | Unit Test Creation for Adapter Interface | 2d | 2020-04-21 | 2020-04-23 | 72 | 29.8d |  | Tao Lin; Faisal Ahmed Farooqui [10%] | 13.03h |
| 74 | 3.13.8 | Invoice Creation and Pushing into ERP System | 24h | 2020-04-16 | 2020-04-21 | 71, 36, 62 | 7.8d | 0d | Zeeshan Akhtar | 24h |

| ID | WBS | Task | Type | Duration | Start | Finish | Predecessors | Total slack | Free slack | Resources | Work |
| --- | --- | --- | --- | --- | --- | --- | --- | --- | --- | --- | --- |
| 75 | 3.13.9 | **Release 5 & Testing** |  | 10d | 2020-04-21 | 2020-05-05 | 74 | 7.8d |  |  | 224h |
| 76 | 3.13.9.1 | Deployment on cloud for Release 5 |  | 16h | 2020-04-21 | 2020-04-23 |  | 7.8d | 0d | Tao Lin; Zeeshan Akhtar | 32h |
| 77 | 3.13.9.2 | Test Cycle 5 |  | 64h | 2020-04-21 | 2020-05-01 |  | 9.8d |  | Tester 1 | 64h |
| 78 | 3.13.9.3 | Debug Cycle 5 |  | 64h | 2020-04-23 | 2020-05-05 | 76 | 7.8d | 6.2d | Tao Lin; Zeeshan Akhtar | 128h |
| 79 | 3.14 | **Security, Login and Multi Tenant Functionality implementation** |  | 19.4d | 2020-04-16 | 2020-05-13 | 43 | 0d |  |  | 83.2h |
| 80 | 3.14.1 | Creation of Security Token Service |  | 40h | 2020-04-16 | 2020-04-22 |  | 0d |  | Faisal Ahmed Farooqui [40%] | 16h |
| 81 | 3.14.2 | Login Creation |  | 48h | 2020-05-05 | 2020-05-13 | 54 | 8.6d | 0d | Hammad Khalil | 48h |
| 82 | 3.14.3 | Automatic DB Creation, ERP System Integration, Primary Data Fetching |  | 48h | 2020-04-23 | 2020-04-30 | 80 | 0d |  | Faisal Ahmed Farooqui [40%] | 19.2h |
| 83 | 3.15 | **Release 6 & Testing** |  | 10d | 2020-05-01 | 2020-05-14 |  | 0d |  |  | 108.8h |
| 84 | 3.15.1 | Deployment on cloud for Release 6 |  | 16h | 2020-05-01 | 2020-05-04 | 82 | 0d |  | Faisal Ahmed Farooqui [40%] | 6.4h |
| 85 | 3.15.2 | Test Cycle 6 |  | 64h | 2020-05-05 | 2020-05-14 | 84 | 0d |  | Tester 1 | 64h |
| 86 | 3.15.3 | Debug Cycle 6 |  | 64h | 2020-05-05 | 2020-05-14 | 84 | 0d |  | Faisal Ahmed Farooqui [60%] | 38.4h |
| 87 | 3.16 | Development complete |  | 8h | 2020-05-15 | 2020-05-15 | 83, 75, 62 | 13d |  | Faisal Ahmed Farooqui | 8h |
| 88 | 4 | Integration Testing |  | 40h | 2020-05-13 | 2020-05-20 | 81, 78 | 8.6d | 0d | Hammad Khalil; Zeeshan Akhtar | 80h |
| 89 | 5 | **Testing for Beta Release to Clients** |  | 14d | 2020-05-15 | 2020-06-03 | 83, 75, 62 | 0d |  |  | 379.11h |
| 90 | 5.1 | Fine tuning and small fixes |  | 56h | 2020-05-15 | 2020-05-25 |  | 0d |  | Tester 1; Zeeshan Akhtar; Faisal Ahmed Farooqui [40%]; Hammad Khalil | 190.4h |
| 91 | 5.2 | Integration testing complete |  | 56h | 2020-05-26 | 2020-06-03 | 90 | 0d |  | Tester 1; Zeeshan Akhtar; Faisal Ahmed Farooqui; Hammad Khalil | 188.71h |
| 92 | 6 | **Deployment** |  | 90.4d | 2020-01-15 | 2020-05-22 |  | 8.6d |  |  | 32h |
| 93 | 6.1 | Preparation for RTM environment for beta |  | 16h | 2020-05-20 | 2020-05-22 | 88 | 8.6d |  | Faisal Ahmed Farooqui; Tao Lin | 32h |
| 94 | 6.2 | Phase 1 Complete | milestone | 0h | 2020-01-15 | 2020-01-15 |  | 89d |  | Faisal Ahmed Farooqui |  |
