# AP Automation Phase 2

Schedule from MS Project, 2021-01-21 to 2021-03-17.

## Calendars

- Standard: Mon-Fri 08:00-12:00, 13:00-17:00; Sat-Sun off.

## Resources

| Resource | Group |
| --- | --- |
| Zeeshan Akhtar | Dev |
| Tester 1 | QA |
| Faisal Ahmed Farooqui | Manager, Dev |
| Tao Lin | Dev |

## Schedule

| ID | WBS | Task | Duration | Start | Finish | Predecessors | Total slack | Free slack | Resources | Work |
| --- | --- | --- | --- | --- | --- | --- | --- | --- | --- | --- |
| 1 | 1 | **Analysis/Software Requirements** | 4d | 2021-01-21 | 2021-01-26 |  | 0d |  |  | 56h |
| 2 | 1.1 | Document Review | 8h | 2021-01-21 | 2021-01-21 |  | 0d |  | Faisal Ahmed Farooqui; Zeeshan Akhtar | 16h |
| 3 | 1.2 | Understanding of Existing App | 16h | 2021-01-22 | 2021-01-25 | 2 | 1d |  | Zeeshan Akhtar | 16h |
| 4 | 1.3 | ProjectPlan Creation | 24h | 2021-01-22 | 2021-01-26 | 2 | 0d |  | Faisal Ahmed Farooqui | 24h |
| 5 | 2 | **Design** | 5d | 2021-01-27 | 2021-02-02 | 1 | 0d |  |  | 80h |
| 6 | 2.1 | DB Design Review | 16h | 2021-01-27 | 2021-01-28 |  | 0d |  | Faisal Ahmed Farooqui; Zeeshan Akhtar | 32h |
| 7 | 2.2 | Architecture Design Review | 16h | 2021-01-29 | 2021-02-01 | 6 | 0d |  | Faisal Ahmed Farooqui | 16h |
| 8 | 2.3 | UI Components Structure Setup | 16h | 2021-01-29 | 2021-02-01 | 6 | 0d |  | Zeeshan Akhtar | 16h |
| 9 | 2.4 | Overall Design Review | 8h | 2021-02-02 | 2021-02-02 | 8, 7 | 0d |  | Faisal Ahmed Farooqui; Zeeshan Akhtar | 16h |
| 10 | 3 | **Development Sprints** | 31d | 2021-02-03 | 2021-03-17 | 5 | 0d |  |  | 467.2h |
| 11 | 3.1 | **Development of Version V1.1** | 31d | 2021-02-03 | 2021-03-17 | 5 | 0d |  |  | 467.2h |
| 12 | 3.1.1 | Production Invoices Cloud Infrastructure Updates | 32h | 2021-02-03 | 2021-02-08 |  | 0d |  | Faisal Ahmed Farooqui | 32h |
| 13 | 3.1.2 | DB Design Implementation | 32h | 2021-02-03 | 2021-02-08 |  | 0d |  | Zeeshan Akhtar | 32h |
| 14 | 3.1.3 | Code Refactoring | 16h | 2021-02-09 | 2021-02-10 | 13 | 0d |  | Zeeshan Akhtar | 16h |
| 15 | 3.1.4 | Company Configuration UI | 24h | 2021-02-11 | 2021-02-15 | 14 | 0d |  | Zeeshan Akhtar | 24h |
| 16 | 3.1.5 | Routing Configuration | 16h | 2021-02-09 | 2021-02-10 | 12 | 0d |  | Faisal Ahmed Farooqui | 16h |
| 17 | 3.1.6 | Menu & Authorization | 24h | 2021-02-11 | 2021-02-15 | 16 | 0d |  | Faisal Ahmed Farooqui | 24h |
| 18 | 3.1.7 | Build Version 1.1.1 | 16h | 2021-02-16 | 2021-02-17 | 15, 17 | 0d |  | Faisal Ahmed Farooqui; Zeeshan Akhtar | 32h |
| 19 | 3.1.8 | Bug Fixing | 16h | 2021-02-18 | 2021-02-19 | 18 | 0d |  | Faisal Ahmed Farooqui; Zeeshan Akhtar | 32h |
| 20 | 3.1.9 | Roles Management | 24h | 2021-02-22 | 2021-02-24 | 19 | 0d |  | Zeeshan Akhtar | 24h |
| 21 | 3.1.10 | Data Sync Function updates | 24h | 2021-02-22 | 2021-02-24 | 19 | 2d | 0d | Faisal Ahmed Farooqui | 24h |
| 22 | 3.1.11 | Updates in Model creation screen | 24h | 2021-02-25 | 2021-03-01 | 20 | 0d |  | Zeeshan Akhtar | 24h |
| 23 | 3.1.12 | Updates in Scanner function | 32h | 2021-02-25 | 2021-03-02 | 21 | 2d | 0d | Faisal Ahmed Farooqui [60%] | 19.2h |
| 24 | 3.1.13 | Non-Media/Production Invoice Screen | 24h | 2021-03-02 | 2021-03-04 | 22 | 0d |  | Zeeshan Akhtar | 24h |
| 25 | 3.1.14 | Invoice Routing | 32h | 2021-03-03 | 2021-03-08 | 23 | 2d |  | Faisal Ahmed Farooqui | 32h |
| 26 | 3.1.15 | Production Invoices Dashboard | 32h | 2021-03-05 | 2021-03-10 | 24 | 0d |  | Zeeshan Akhtar | 32h |
| 27 | 3.1.16 | Build Version 1.1.2 | 24h | 2021-03-11 | 2021-03-15 | 25, 26 | 0d |  | Zeeshan Akhtar; Faisal Ahmed Farooqui | 48h |
| 28 | 3.1.17 | Bug fixing | 16h | 2021-03-16 | 2021-03-17 | 27 | 0d |  | Zeeshan Akhtar; Faisal Ahmed Farooqui | 32h |
