# AP Automation Phase 2

Schedule from MS Project, 2021-01-21 to 2021-06-25.

## Calendars

- Standard: Mon-Fri 08:00-12:00, 13:00-17:00; Sat-Sun off.

## Resources

| Resource | Group |
| --- | --- |
| Zeeshan Akhtar | Dev |
| QA1 | QA |
| Faisal Ahmed Farooqui | Manager, Dev |
| Tao Lin | QA |
| AI-Dev | Dev |

## Schedule

| ID | WBS | Task | Duration | Start | Finish | Predecessors | Total slack | Free slack | Constraint | Resources | Work |
| --- | --- | --- | --- | --- | --- | --- | --- | --- | --- | --- | --- |
| 1 | 1 | **Analysis/Software Requirements** | 3d | 2021-01-21 | 2021-01-25 |  | 0d |  |  |  | 32h |
| 2 | 1.1 | Document Review | 8h | 2021-01-21 | 2021-01-21 |  | 0d |  |  | Faisal Ahmed Farooqui; Zeeshan Akhtar | 16h |
| 3 | 1.2 | Understanding of Existing App | 16h | 2021-01-22 | 2021-01-25 | 2 | 0d |  |  | Zeeshan Akhtar | 16h |
| 4 | 2 | **Design** | 5d | 2021-01-26 | 2021-02-01 | 1 | 0d |  |  |  | 80h |
| 5 | 2.1 | DB Design Review | 16h | 2021-01-26 | 2021-01-27 |  | 0d |  |  | Faisal Ahmed Farooqui; Zeeshan Akhtar | 32h |
| 6 | 2.2 | Architecture Design Review | 16h | 2021-01-28 | 2021-01-29 | 5 | 0d |  |  | Faisal Ahmed Farooqui | 16h |
| 7 | 2.3 | UI Components Structure Setup | 16h | 2021-01-28 | 2021-01-29 | 5 | 0d |  |  | Zeeshan Akhtar | 16h |
| 8 | 2.4 | Overall Design Review | 8h | 2021-02-01 | 2021-02-01 | 7, 6 | 0d |  |  | Faisal Ahmed Farooqui; Zeeshan Akhtar | 16h |
| 9 | 3 | **Development Sprints** | 38d | 2021-02-02 | 2021-03-25 | 4 | 0d |  |  |  | 646h |
| 10 | 3.1 | **Development of Version V1.1** | 38d | 2021-02-02 | 2021-03-25 | 4 | 0d |  |  |  | 646h |
| 11 | 3.1.1 | **Version 1.1.1** | 17d | 2021-02-02 | 2021-02-24 |  | 0d |  |  |  | 232h |
| 12 | 3.1.1.1 | Production Invoices Cloud Infrastructure Updates | 32h | 2021-02-02 | 2021-02-05 |  | 0d |  |  | Faisal Ahmed Farooqui | 32h |
| 13 | 3.1.1.2 | DB Design Implementation | 32h | 2021-02-02 | 2021-02-05 |  | 0d |  |  | Zeeshan Akhtar | 32h |
| 14 | 3.1.1.3 | Code Refactoring | 16h | 2021-02-08 | 2021-02-09 | 13 | 0d |  |  | Zeeshan Akhtar | 16h |
| 15 | 3.1.1.4 | Company Configuration UI | 24h | 2021-02-10 | 2021-02-12 | 14 | 0d |  |  | Zeeshan Akhtar | 24h |
| 16 | 3.1.1.5 | Routing Configuration | 16h | 2021-02-08 | 2021-02-09 | 12 | 0d |  |  | Faisal Ahmed Farooqui | 16h |
| 17 | 3.1.1.6 | Menu & Authorization | 24h | 2021-02-10 | 2021-02-12 | 16 | 0d |  |  | Faisal Ahmed Farooqui | 24h |
| 18 | 3.1.1.7 | Build Version 1.1.1 Release | 16h | 2021-02-15 | 2021-02-16 | 15, 17 | 0d |  |  | Faisal Ahmed Farooqui; Zeeshan Akhtar | 28h |
| 19 | 3.1.1.8 | Testing | 32h | 2021-02-17 | 2021-02-22 | 18 | 0d |  |  | Tao Lin | 32h |
| 20 | 3.1.1.9 | Bug Fixing | 16h | 2021-02-23 | 2021-02-24 | 19 | 0d |  |  | Faisal Ahmed Farooqui [75%]; Zeeshan Akhtar | 28h |
| 21 | 3.1.2 | **Version 1.1.2** | 21d | 2021-02-25 | 2021-03-25 |  | 0d |  |  |  | 414h |
| 22 | 3.1.2.1 | Roles Management | 24h | 2021-02-25 | 2021-03-01 | 20 | 0d |  |  | Zeeshan Akhtar | 24h |
| 23 | 3.1.2.2 | Data Sync Function updates | 24h | 2021-02-25 | 2021-03-01 | 20 | 2d | 0d |  | Faisal Ahmed Farooqui | 18h |
| 24 | 3.1.2.3 | Updates in Model creation screen | 24h | 2021-03-02 | 2021-03-04 | 22 | 0d |  |  | Zeeshan Akhtar | 24h |
| 25 | 3.1.2.4 | Updates in Scanner function | 32h | 2021-03-02 | 2021-03-05 | 23 | 2d | 0d |  | Faisal Ahmed Farooqui [60%] | 24h |
| 26 | 3.1.2.5 | Non-Media/Production Invoice Screen | 24h | 2021-03-05 | 2021-03-09 | 24 | 0d |  |  | Zeeshan Akhtar | 24h |
| 27 | 3.1.2.6 | Invoice Routing | 32h | 2021-03-08 | 2021-03-11 | 25 | 2d |  |  | Faisal Ahmed Farooqui | 24h |
| 28 | 3.1.2.7 | Production Invoices Dashboard | 32h | 2021-03-10 | 2021-03-15 | 26 | 0d |  |  | Zeeshan Akhtar | 32h |
| 29 | 3.1.2.8 | Build Version 1.1.2 Release | 24h | 2021-03-16 | 2021-03-18 | 27, 28 | 0d |  |  | Zeeshan Akhtar; Faisal Ahmed Farooqui | 44h |
| 30 | 3.1.2.9 | Bug fixing | 40h | 2021-03-19 | 2021-03-25 | 29 | 0d |  |  | Zeeshan Akhtar; Faisal Ahmed Farooqui | 80h |
| 31 | 3.1.2.10 | QA Training on Product | 40h | 2021-03-01 | 2021-03-05 |  | 80d | 0d | start no earlier than 2021-03-01 | QA1 | 40h |
| 32 | 3.1.2.11 | Testcase Creation | 40h | 2021-03-08 | 2021-03-12 | 31 | 80d | 4d |  | QA1 | 40h |
| 33 | 3.1.2.12 | QA of Build 1.1.2 | 40h | 2021-03-19 | 2021-03-25 | 29, 32 | 76d |  |  | QA1 | 40h |

| ID | WBS | Task | Duration | Start | Finish | Predecessors | Total slack | Free slack | Constraint | Resources | Work |
| --- | --- | --- | --- | --- | --- | --- | --- | --- | --- | --- | --- |
| 34 | 4 | **AI based Development of Version V1.2** | 95d | 2021-02-15 | 2021-06-25 |  | 0d |  |  |  | 1044h |
| 35 | 4.1 | Resource Allocation | 8h | 2021-02-15 | 2021-02-15 |  | 5d | 0d | start no earlier than 2021-02-15 |  |  |
| 36 | 4.2 | **Model Creation V 0.1** | 59d | 2021-02-16 | 2021-05-07 | 35 | 0d |  |  |  | 284h |
| 37 | 4.2.1 | Requirement Analysis | 64h | 2021-03-26 | 2021-04-06 | 19, 30 | 0d |  |  | AI-Dev; Faisal Ahmed Farooqui [50%] | 48h |
| 38 | 4.2.2 | R&D on ML Frameworks | 64h | 2021-04-07 | 2021-04-16 | 37 | 0d |  |  | AI-Dev; Faisal Ahmed Farooqui [50%] | 36h |
| 39 | 4.2.3 | Data Collection-DataSet-1 & DataSet-2 | 40h | 2021-02-16 | 2021-03-01 | 35 | 6d | 0d |  | Tao Lin | 40h |
| 40 | 4.2.4 | Data Filteration & Purification | 40h | 2021-04-19 | 2021-04-23 | 39, 38, 44 | 0d |  |  | AI-Dev | 40h |
| 41 | 4.2.5 | ML-Model selection/creation on current filtered DataSet-1 | 40h | 2021-04-26 | 2021-04-30 | 40 | 0d |  |  | AI-Dev | 40h |
| 42 | 4.2.6 | Testing of ML-Model on DataSet-2 | 40h | 2021-05-03 | 2021-05-07 | 41, 39 | 0d |  |  | AI-Dev; Faisal Ahmed Farooqui | 80h |
| 43 | 4.3 | **Model Creation V 0.2** | 64d | 2021-03-02 | 2021-05-28 |  | 0d |  |  |  | 200h |
| 44 | 4.3.1 | Data Collection-DataSet-3 & DataSet-4 | 40h | 2021-03-02 | 2021-03-08 | 39 | 6d |  |  | Tao Lin | 40h |
| 45 | 4.3.2 | Data Filteration & Purification | 40h | 2021-05-10 | 2021-05-14 | 44, 42 | 0d |  |  | AI-Dev | 40h |
| 46 | 4.3.3 | ML-Model selection/creation on current filtered DataSet-3 | 40h | 2021-05-17 | 2021-05-21 | 45 | 0d |  |  | AI-Dev | 40h |
| 47 | 4.3.4 | Testing of ML-Model on DataSet-4 | 40h | 2021-05-24 | 2021-05-28 | 36, 46 | 0d |  |  | AI-Dev; Faisal Ahmed Farooqui | 80h |
| 48 | 4.4 | **ML-Integrated Version 1.2.1** | 59d | 2021-03-26 | 2021-06-16 |  | 0d |  |  |  | 392h |
| 49 | 4.4.1 | Model Deployment on Dev Env on AWS | 24h | 2021-05-31 | 2021-06-02 | 47 | 0d |  |  | Faisal Ahmed Farooqui | 24h |
| 50 | 4.4.2 | Changes in APA for integration & features | 80h | 2021-03-26 | 2021-04-08 | 30 | 39d |  |  | Zeeshan Akhtar | 80h |
| 51 | 4.4.3 | ML-Model Integration with scanner | 32h | 2021-06-03 | 2021-06-08 | 50, 49 | 0d |  |  | Zeeshan Akhtar; Faisal Ahmed Farooqui | 64h |
| 52 | 4.4.4 | Testcase creation for Integration testing | 24h | 2021-06-09 | 2021-06-11 | 51 | 0d |  |  | QA1 | 24h |
| 53 | 4.4.5 | Integration Testing on Dev Environment | 24h | 2021-06-14 | 2021-06-16 | 52, 49, 51 | 0d |  |  | QA1 | 24h |
| 54 | 4.4.6 | Bug Fixing on Application Side | 24h | 2021-06-09 | 2021-06-11 | 51 | 0d |  |  | Zeeshan Akhtar | 24h |
| 55 | 4.4.7 | Model Training | 80h | 2021-05-31 | 2021-06-11 | 43 | 0d |  |  | AI-Dev | 80h |
| 56 | 4.4.8 | Build Version 1.2.1 Release | 24h | 2021-06-14 | 2021-06-16 | 54, 55 | 0d |  |  | Zeeshan Akhtar; AI-Dev; Faisal Ahmed Farooqui | 72h |
| 57 | 4.5 | **ML-Integrated Version 1.2.2** | 7d | 2021-06-17 | 2021-06-25 | 48 | 0d |  |  |  | 168h |
| 58 | 4.5.1 | ML-Model-Training Ver 0.3 | 40h | 2021-06-17 | 2021-06-23 | 48 | 2d |  |  | AI-Dev | 40h |
| 59 | 4.5.2 | Updates in APA | 40h | 2021-06-17 | 2021-06-23 | 48 | 2d |  |  | Zeeshan Akhtar | 40h |
| 60 | 4.5.3 | ML-Model-Deployment | 40h | 2021-06-17 | 2021-06-23 | 48 | 0d |  |  | Faisal Ahmed Farooqui | 40h |
| 61 | 4.5.4 | Creation of Build Version 1.2.2 | 16h | 2021-06-24 | 2021-06-25 | 60 | 0d |  |  | Zeeshan Akhtar; AI-Dev; Faisal Ahmed Farooqui | 48h |
