# AP Automation Phase 3

Schedule from MS Project, 2021-07-05 to 2021-09-08, 6 hours a day, A marks actual dates.

## Calendars

- Standard: Mon-Fri 08:00-12:00, 13:00-17:00; Sat-Sun off. Exceptions (off unless hours are given): 2021-07-21 to 2021-07-24 (Eid ul Adha).

## Resources

| Resource | Group |
| --- | --- |
| Zeeshan Akhtar | Dev |
| Muhammad Naeem | QA |
| Faisal Ahmed Farooqui | Manager, Dev |
| Tao Lin | QA |
| Shoaib Alauddin | Dev |

## Schedule

| ID | WBS | Task | Duration | Start | Finish | Predecessors | Complete | Remaining | Total slack | Free slack | Constraint | Resources | Work | Actual work |
| --- | --- | --- | --- | --- | --- | --- | --- | --- | --- | --- | --- | --- | --- | --- |
| 1 | 1 | **Development Sprints** | 30.33d | 2021-07-05 A | 2021-08-09 |  | 9% | 27.64d | 2d |  |  |  | 486h | 43.2h |
| 2 | 1.1 | **Development of Version V3 (New Feature Branch)** | 30.33d | 2021-07-05 A | 2021-08-09 |  | 9% | 27.64d | 2d |  |  |  | 486h | 43.2h |
| 3 | 1.1.1 | **Version 2.9.1** | 30.33d | 2021-07-05 A | 2021-08-09 |  | 9% | 27.64d | 2d |  |  |  | 486h | 43.2h |
| 4 | 1.1.1.1 | **Code Refactoring** | 8.33d | 2021-07-05 | 2021-07-13 |  |  |  | 9.33d | 0d |  |  | 50h |  |
| 5 | 1.1.1.1.1 | Lookups | 5h | 2021-07-05 | 2021-07-05 |  |  |  | 10d | 0d |  | Zeeshan Akhtar | 5h |  |
| 6 | 1.1.1.1.2 | Enumeration to be moved to Common | 4h | 2021-07-05 | 2021-07-06 | 5 |  |  | 10d | 0d |  | Zeeshan Akhtar | 4h |  |
| 7 | 1.1.1.1.3 | DTOs to be removed for enumerations type tables | 5h | 2021-07-06 | 2021-07-06 | 6 |  |  | 10d | 0d |  | Zeeshan Akhtar | 5h |  |
| 8 | 1.1.1.1.4 | Polymorphism to be implemented for file saving mechanism | 10h | 2021-07-06 | 2021-07-07 | 7 |  |  | 10d | 0d |  | Zeeshan Akhtar | 10h |  |
| 9 | 1.1.1.1.5 | API calls to be refactored in Javascript | 5h | 2021-07-08 | 2021-07-08 | 8 |  |  | 10d | 0d |  | Zeeshan Akhtar | 5h |  |
| 10 | 1.1.1.1.6 | lambda functions for common routines | 6h | 2021-07-08 | 2021-07-09 | 9 |  |  | 10d | 0d |  | Zeeshan Akhtar | 6h |  |
| 11 | 1.1.1.1.7 | login related refactoring | 5h | 2021-07-09 | 2021-07-09 | 10 |  |  | 10d | 0d |  | Zeeshan Akhtar | 5h |  |
| 12 | 1.1.1.1.8 | Distributed Transaction Management | 10h | 2021-07-12 | 2021-07-13 | 11 |  |  | 10d |  |  | Zeeshan Akhtar | 10h |  |
| 13 | 1.1.1.2 | Deployment Data Search Service (DSS) | 24h | 2021-07-05 A | 2021-07-08 A |  | 100% |  |  |  | start no earlier than 2021-07-05 | Shoaib Alauddin | 24h | 24h |
| 14 | 1.1.1.3 | Performance Improvement of DSS | 24h | 2021-07-08 A | 2021-07-13 | 13 | 80% | 4.8h | 2d | 0d |  | Shoaib Alauddin | 24h | 19.2h |
| 15 | 1.1.1.4 | Integration with Data Search Service | 16h | 2021-07-09 | 2021-07-13 |  |  |  | 10d | 0d | start no earlier than 2021-07-09 | Faisal Ahmed Farooqui | 16h |  |
| 16 | 1.1.1.5 | **Business Logic for Invoice Routing** | 8d | 2021-07-13 | 2021-07-26 | 4 |  |  | 9.33d | 0d |  |  | 40h |  |
| 17 | 1.1.1.5.1 | SP creation | 8h | 2021-07-13 | 2021-07-14 |  |  |  | 10d | 0d |  | Zeeshan Akhtar | 8h |  |
| 18 | 1.1.1.5.2 | Business Logic and Decission making for invoice routing | 24h | 2021-07-14 | 2021-07-23 | 17 |  |  | 10d | 0d |  | Zeeshan Akhtar | 24h |  |
| 19 | 1.1.1.5.3 | UI chnages (if any) - Dashboard for descripent invoices | 8h | 2021-07-23 | 2021-07-26 | 18 |  |  | 10d |  |  | Zeeshan Akhtar | 8h |  |
| 20 | 1.1.1.6 | Test Case Creation | 40h | 2021-07-12 | 2021-07-19 |  |  |  | 12d | 0d | start no earlier than 2021-07-12 | Muhammad Naeem | 40h |  |
| 21 | 1.1.1.7 | Discussions And Management Activities | 24h | 2021-07-13 | 2021-07-16 | 15 |  |  | 10d | 0d |  | Faisal Ahmed Farooqui | 24h |  |
| 22 | 1.1.1.8 | Build Release | 16h | 2021-07-16 | 2021-07-26 | 21 |  |  | 10d | 0d |  | Faisal Ahmed Farooqui | 16h |  |
| 23 | 1.1.1.9 | Testing | 40h | 2021-07-19 | 2021-07-29 | 20 |  |  | 12d |  |  | Muhammad Naeem | 40h |  |
| 24 | 1.1.1.10 | Bug Fixing for Business Logic for Invoice Routing | 40h | 2021-07-26 | 2021-08-02 | 16 |  |  | 10d |  |  | Zeeshan Akhtar | 40h |  |
| 25 | 1.1.1.11 | Bug Fixing Data Search Service | 40h | 2021-07-13 | 2021-07-20 | 14 |  |  | 2d | 0d |  | Shoaib Alauddin | 40h |  |
| 26 | 1.1.1.12 | Discussions And Management Activities | 32h | 2021-07-26 | 2021-07-30 | 22 |  |  | 10d | 0d |  | Faisal Ahmed Farooqui | 32h |  |
| 27 | 1.1.1.13 | Build Release | 8h | 2021-07-30 | 2021-08-02 | 26 |  |  | 10d |  |  | Faisal Ahmed Farooqui | 8h |  |

| ID | WBS | Task | Duration | Start | Finish | Predecessors | Total slack | Free slack | Constraint | Resources | Work |
| --- | --- | --- | --- | --- | --- | --- | --- | --- | --- | --- | --- |
| 28 | 1.1.1.14 | **Data Analysis** | 9.33d | 2021-07-20 | 2021-08-03 | 25 | 2d | 0d |  |  | 56h |
| 29 | 1.1.1.14.1 | Gathering Data from DSS | 16h | 2021-07-20 | 2021-07-27 |  | 2d | 0d |  | Shoaib Alauddin | 16h |
| 30 | 1.1.1.14.2 | Data Preparation | 16h | 2021-07-27 | 2021-07-29 | 29 | 2d | 0d |  | Shoaib Alauddin | 16h |
| 31 | 1.1.1.14.3 | Exploratory Data Analysis - Data Visualization | 24h | 2021-07-29 | 2021-08-03 | 30 | 2d |  |  | Shoaib Alauddin | 24h |
| 32 | 1.1.1.15 | **R&D on ML Algos** | 6d | 2021-08-03 | 2021-08-09 | 28 | 2d |  |  |  | 36h |
| 33 | 1.1.1.15.1 | Decission making on ICR - based on current R&D and Data Analysis in hand | 4h | 2021-08-03 | 2021-08-03 |  | 2d | 0d |  | Shoaib Alauddin | 4h |
| 34 | 1.1.1.15.2 | **R&D on Existing ML Models to consider for our usage** | 5.33d | 2021-08-03 | 2021-08-09 | 33 | 2d |  |  |  | 32h |
| 35 | 1.1.1.15.2.1 | Finding most popular considerable ML Models | 8h | 2021-08-03 | 2021-08-04 |  | 2d | 0d |  | Shoaib Alauddin | 8h |
| 36 | 1.1.1.15.2.2 | R&D on each seelcted Models (4 Models * 4 hrs each) | 16h | 2021-08-04 | 2021-08-06 | 35 | 2d | 0d |  | Shoaib Alauddin | 16h |
| 37 | 1.1.1.15.2.3 | Decission making on Models for further development | 8h | 2021-08-06 | 2021-08-09 | 36 | 2d |  |  | Shoaib Alauddin | 8h |
| 38 | 2 | **Development of Version V2.1 (Bug Fixing Branch)** | 26.67d | 2021-08-11 | 2021-09-08 | 2 | 0d |  |  |  | 248h |
| 39 | 2.1 | **Version 2.0.1** | 26.67d | 2021-08-11 | 2021-09-08 |  | 0d |  |  |  | 248h |
| 40 | 2.1.1 | Change Assessment on Client feedback for change request | 16h | 2021-08-11 | 2021-08-13 |  | 21.33d | 0d | start no earlier than 2021-08-11 | Faisal Ahmed Farooqui | 16h |
| 41 | 2.1.2 | Bug Fixing | 40h | 2021-08-11 | 2021-08-18 |  | 0d |  | start no earlier than 2021-08-11 | Zeeshan Akhtar | 40h |
| 42 | 2.1.3 | Test Case Creation | 40h | 2021-08-18 | 2021-08-25 | 41 | 0d |  |  | Muhammad Naeem | 40h |
| 43 | 2.1.4 | Discussions And Management Activities | 16h | 2021-08-13 | 2021-08-17 | 40 | 21.33d |  |  | Faisal Ahmed Farooqui | 16h |
| 44 | 2.1.5 | Build Release | 8h | 2021-08-18 | 2021-08-19 | 40, 41 | 17.33d | 0d | start no earlier than 2021-08-18 | Faisal Ahmed Farooqui | 8h |
| 45 | 2.1.6 | Testing | 40h | 2021-08-25 | 2021-09-01 | 42 | 0d |  |  | Muhammad Naeem | 40h |
| 46 | 2.1.7 | Bug Fixing | 40h | 2021-08-18 | 2021-08-25 | 41 | 13.33d |  |  | Zeeshan Akhtar | 40h |
| 47 | 2.1.8 | Build Release | 8h | 2021-08-19 | 2021-08-20 | 44 | 17.33d |  |  | Faisal Ahmed Farooqui | 8h |
| 48 | 2.1.9 | Testing | 40h | 2021-09-01 | 2021-09-08 | 45 | 0d |  | start no earlier than 2021-09-01 | Muhammad Naeem | 40h |
