# AP Automation Phase 3

Schedule from MS Project, 2021-07-05 to 2021-09-14, 6 hours a day, A marks actual dates.

## Calendars

- APA Calendar: Mon-Fri 11:00-13:00, 14:00-18:00; Sat-Sun off. Exceptions (off unless hours are given): 2021-07-20 to 2021-07-23 (Eid ul Adha).

## Resources

| Resource | Group |
| --- | --- |
| Zeeshan Akhtar | Dev |
| Muhammad Naeem | QA |
| Faisal Ahmed Farooqui | Manager, Dev |
| Tao Lin | QA |
| Shoaib Alauddin | Dev |

## Schedule

| ID | WBS | Task | Type | Duration | Start | Finish | Predecessors | Complete | Remaining | Total slack | Free slack | Constraint | Resources | Work | Actual work |
| --- | --- | --- | --- | --- | --- | --- | --- | --- | --- | --- | --- | --- | --- | --- | --- |
| 1 | 1 | **Development Sprints** |  | 48d | 2021-07-05 A | 2021-09-14 |  | 21% | 37.7d | 0d |  |  |  | 581h | 138.9h |
| 2 | 1.1 | **Development of Version V3 (New Feature Branch)** |  | 48d | 2021-07-05 A | 2021-09-14 |  | 21% | 37.7d | 0d |  |  |  | 581h | 138.9h |
| 3 | 1.1.1 | **Version 2.1.0** |  | 32.67d | 2021-07-05 A | 2021-08-24 |  | 27% | 23.92d | 0d |  |  |  | 459h | 138.9h |
| 4 | 1.1.1.1 | Bug Fixing in Previous Version |  | 30h | 2021-07-05 A | 2021-07-09 A |  | 100% |  |  |  |  | Zeeshan Akhtar | 30h | 30h |
| 5 | 1.1.1.2 | **Code Refactoring** |  | 8.33d | 2021-07-13 A | 2021-07-29 |  | 33% | 5.58d | 6.67d | 0d |  |  | 50h | 16.5h |
| 6 | 1.1.1.2.1 | Lookups |  | 5h | 2021-07-13 A | 2021-07-13 A | 4 | 100% |  |  |  |  | Zeeshan Akhtar | 5h | 5h |
| 7 | 1.1.1.2.2 | Enumeration to be moved to Common |  | 4h | 2021-07-13 A | 2021-07-14 A | 6 | 100% |  |  |  |  | Zeeshan Akhtar | 4h | 4h |
| 8 | 1.1.1.2.3 | DTOs to be removed for enumerations type tables |  | 5h | 2021-07-14 A | 2021-07-15 A | 7 | 100% |  |  |  |  | Zeeshan Akhtar | 5h | 5h |
| 9 | 1.1.1.2.4 | API calls to be refactored in Javascript |  | 5h | 2021-07-15 A | 2021-07-16 | 8 | 50% | 2.5h | 6.67d | 0d |  | Zeeshan Akhtar | 5h | 2.5h |
| 10 | 1.1.1.2.5 | Polymorphism to be implemented for file saving mechanism |  | 10h | 2021-07-16 | 2021-07-19 | 9 |  |  | 1.67d | 0d |  | Zeeshan Akhtar | 10h |  |
| 11 | 1.1.1.2.6 | lambda functions for common routines |  | 6h | 2021-07-19 | 2021-07-26 | 10 |  |  | 1.67d | 0d |  | Zeeshan Akhtar | 6h |  |
| 12 | 1.1.1.2.7 | login related refactoring |  | 5h | 2021-07-26 | 2021-07-27 | 11 |  |  | 1.67d | 0d |  | Zeeshan Akhtar | 5h |  |
| 13 | 1.1.1.2.8 | Distributed Transaction Management |  | 10h | 2021-07-27 | 2021-07-29 | 12 |  |  | 1.67d |  |  | Zeeshan Akhtar | 10h |  |
| 14 | 1.1.1.3 | Deployment Data Search Service (DSS) |  | 24h | 2021-07-05 A | 2021-07-08 A |  | 100% |  |  |  | start no earlier than 2021-07-05 | Shoaib Alauddin | 24h | 24h |
| 15 | 1.1.1.4 | Performance Improvement of DSS |  | 24h | 2021-07-08 A | 2021-07-13 A | 14 | 100% |  |  |  |  | Shoaib Alauddin | 24h | 24h |
| 16 | 1.1.1.5 | Discussions, Planning And Management Activities |  | 30h | 2021-07-05 A | 2021-07-09 A |  | 100% |  |  |  |  | Faisal Ahmed Farooqui | 30h | 30h |
| 17 | 1.1.1.6 | Integration with Data Search Service |  | 18h | 2021-07-13 A | 2021-07-16 | 16, 15 | 40% | 10.8h | 7d | 0d |  | Faisal Ahmed Farooqui; Shoaib Alauddin | 36h | 14.4h |
| 18 | 1.1.1.7 | **Business Logic for Invoice Routing** |  | 6.67d | 2021-07-29 | 2021-08-06 | 5 |  |  | 6.67d | 0d |  |  | 40h |  |
| 19 | 1.1.1.7.1 | SP creation |  | 8h | 2021-07-29 | 2021-07-30 |  |  |  | 6.67d | 0d |  | Zeeshan Akhtar | 8h |  |
| 20 | 1.1.1.7.2 | Business Logic and Decission making for invoice routing |  | 24h | 2021-07-30 | 2021-08-05 | 19 |  |  | 6.67d | 0d |  | Zeeshan Akhtar | 24h |  |
| 21 | 1.1.1.7.3 | UI chnages (if any) - Dashboard for descripent invoices |  | 8h | 2021-08-05 | 2021-08-06 | 20 |  |  | 6.67d |  |  | Zeeshan Akhtar | 8h |  |
| 22 | 1.1.1.8 | Test Case Creation |  | 40h | 2021-07-12 | 2021-07-29 |  |  |  | 0d |  | start no earlier than 2021-07-12 | Muhammad Naeem [60%] | 24h |  |
| 23 | 1.1.1.9 | Discussions And Management Activities |  | 30h | 2021-07-16 | 2021-07-29 | 17 |  |  | 7d | 0d |  | Faisal Ahmed Farooqui | 30h |  |
| 24 | 1.1.1.10 | Build Release |  | 18h | 2021-07-29 | 2021-08-03 | 23 |  |  | 7d | 0d |  | Faisal Ahmed Farooqui | 18h |  |
| 25 | 1.1.1.11 | Testing |  | 70h | 2021-07-30 | 2021-08-24 | 22 |  |  | 0d |  |  | Muhammad Naeem [50%] | 35h |  |
| 26 | 1.1.1.12 | Bug Fixing for Business Logic for Invoice Routing |  | 30h | 2021-08-09 | 2021-08-13 | 18 |  |  | 6.67d |  |  | Zeeshan Akhtar | 30h |  |
| 27 | 1.1.1.13 | Bug Fixing Data Search Service |  | 40h | 2021-07-16 | 2021-08-02 | 17 |  |  | 16.33d |  |  | Shoaib Alauddin | 40h |  |
| 28 | 1.1.1.14 | Discussions And Management Activities |  | 30h | 2021-08-03 | 2021-08-10 | 24 |  |  | 7d | 0d |  | Faisal Ahmed Farooqui | 30h |  |
| 29 | 1.1.1.15 | Build Release | milestone | 18h | 2021-08-10 | 2021-08-13 | 28 |  |  | 7d |  |  | Faisal Ahmed Farooqui | 18h |  |

| ID | WBS | Task | Duration | Start | Finish | Predecessors | Total slack | Resources | Work |
| --- | --- | --- | --- | --- | --- | --- | --- | --- | --- |
| 30 | 1.1.2 | **Version 2.2.0** | 15.33d | 2021-08-24 | 2021-09-14 | 3 | 0d |  | 122h |
| 31 | 1.1.2.1 | **Data Analysis** | 9.33d | 2021-08-24 | 2021-09-06 | 27 | 0d |  | 56h |
| 32 | 1.1.2.1.1 | Gathering Data from DSS | 16h | 2021-08-24 | 2021-08-27 |  | 0d | Shoaib Alauddin | 16h |
| 33 | 1.1.2.1.2 | Data Preparation | 16h | 2021-08-27 | 2021-08-31 | 32 | 0d | Shoaib Alauddin | 16h |
| 34 | 1.1.2.1.3 | Exploratory Data Analysis - Data Visualization | 24h | 2021-09-01 | 2021-09-06 | 33 | 0d | Shoaib Alauddin | 24h |
| 35 | 1.1.2.2 | **R&D on ML Algos** | 6d | 2021-09-07 | 2021-09-14 | 31 | 0d |  | 36h |
| 36 | 1.1.2.2.1 | Decission making on ICR - based on current R&D and Data Analysis in hand | 4h | 2021-09-07 | 2021-09-07 |  | 0d | Shoaib Alauddin | 4h |
| 37 | 1.1.2.2.2 | **R&D on Existing ML Models to consider for our usage** | 5.33d | 2021-09-07 | 2021-09-14 | 36 | 0d |  | 32h |
| 38 | 1.1.2.2.2.1 | Finding most popular considerable ML Models | 8h | 2021-09-07 | 2021-09-08 |  | 0d | Shoaib Alauddin | 8h |
| 39 | 1.1.2.2.2.2 | R&D on each seelcted Models (4 Models * 4 hrs each) | 16h | 2021-09-09 | 2021-09-13 | 38 | 0d | Shoaib Alauddin | 16h |
| 40 | 1.1.2.2.2.3 | Decission making on Models for further development | 8h | 2021-09-13 | 2021-09-14 | 39 | 0d | Shoaib Alauddin | 8h |
| 41 | 1.1.2.3 | Development on New Features (Need Discussion) | 30h | 2021-08-24 | 2021-08-31 | 26 | 10.33d | Zeeshan Akhtar | 30h |
