# AP Automation Phase 3

Schedule from MS Project, 2021-07-05 to 2021-08-30, 6 hours a day, A marks actual dates.

## Calendars

- APA Calendar: Mon-Fri 11:00-13:00, 14:00-18:00; Sat-Sun off. Exceptions (off unless hours are given): 2021-07-20 to 2021-07-23 (Eid ul Adha).

## Resources

| Resource | Group |
| --- | --- |
| Zeeshan Akhtar | Dev |
| Muhammad Naeem | QA |
| Faisal Ahmed Farooqui | Manager, Dev |
| Shoaib Alauddin | Dev |
| A |  |

## Schedule

| ID | WBS | Task | Type | Duration | Start | Finish | Predecessors | Complete | Remaining | Total slack | Free slack | Constraint | Resources | Work | Actual work |
| --- | --- | --- | --- | --- | --- | --- | --- | --- | --- | --- | --- | --- | --- | --- | --- |
| 1 | 1 | **Development Sprints** |  | 37d | 2021-07-05 A | 2021-08-30 |  | 24% | 28.16d | 0d |  |  |  | 730h | 170.1h |
| 2 | 1.1 | **V2 Related Activities** |  | 12d | 2021-07-05 A | 2021-07-26 |  | 78% | 2.68d | 0d |  |  |  | 102h | 79.2h |
| 3 | 1.1.1 | Expense Report |  | 18h | 2021-07-05 A | 2021-07-07 A |  | 100% |  |  |  |  | Muhammad Naeem | 18h | 18h |
| 4 | 1.1.2 | Testing V2 |  | 12h | 2021-07-08 A | 2021-07-09 A | 3 | 100% |  |  |  |  | Muhammad Naeem | 12h | 12h |
| 5 | 1.1.3 | Distributed Load Testing R&D |  | 24h | 2021-07-12 A | 2021-07-15 | 4 | 80% | 4.8h | 0d |  |  | Muhammad Naeem | 24h | 19.2h |
| 6 | 1.1.4 | Bug Fixing V2 |  | 30h | 2021-07-05 A | 2021-07-09 A |  | 100% |  |  |  |  | Zeeshan Akhtar | 30h | 30h |
| 7 | 1.1.5 | Load Testing |  | 18h | 2021-07-16 | 2021-07-26 | 5 |  |  | 0d |  |  | Muhammad Naeem | 18h |  |
| 8 | 1.2 | **Development of Version V3 (New Feature Branch)** |  | 37d | 2021-07-05 A | 2021-08-30 |  | 14% | 31.66d | 0d |  |  |  | 628h | 90.9h |
| 9 | 1.2.1 | **Version 2.1.0** |  | 35d | 2021-07-05 A | 2021-08-26 |  | 18% | 28.74d | 2d |  |  |  | 516h | 90.9h |
| 10 | 1.2.1.1 | **Code Refactoring** |  | 8.33d | 2021-07-13 A | 2021-07-29 |  | 33% | 5.58d | 7d | 0d |  |  | 50h | 16.5h |
| 11 | 1.2.1.1.1 | Lookups |  | 5h | 2021-07-13 A | 2021-07-13 A | 6 | 100% |  |  |  |  | Zeeshan Akhtar | 5h | 5h |
| 12 | 1.2.1.1.2 | Enumeration to be moved to Common |  | 4h | 2021-07-13 A | 2021-07-14 A | 11 | 100% |  |  |  |  | Zeeshan Akhtar | 4h | 4h |
| 13 | 1.2.1.1.3 | DTOs to be removed for enumerations type tables |  | 5h | 2021-07-14 A | 2021-07-15 A | 12 | 100% |  |  |  |  | Zeeshan Akhtar | 5h | 5h |
| 14 | 1.2.1.1.4 | API calls to be refactored in Javascript |  | 5h | 2021-07-15 A | 2021-07-16 | 13 | 50% | 2.5h | 3d | 0d |  | Zeeshan Akhtar | 5h | 2.5h |
| 15 | 1.2.1.1.5 | Polymorphism to be implemented for file saving mechanism |  | 10h | 2021-07-16 | 2021-07-19 | 14 |  |  | 3d | 0d |  | Zeeshan Akhtar | 10h |  |
| 16 | 1.2.1.1.6 | lambda functions for common routines |  | 6h | 2021-07-19 | 2021-07-26 | 15 |  |  | 3d | 0d |  | Zeeshan Akhtar | 6h |  |
| 17 | 1.2.1.1.7 | login related refactoring |  | 5h | 2021-07-26 | 2021-07-27 | 16 |  |  | 3d | 0d |  | Zeeshan Akhtar | 5h |  |
| 18 | 1.2.1.1.8 | Distributed Transaction Management |  | 10h | 2021-07-27 | 2021-07-29 | 17 |  |  | 3d |  |  | Zeeshan Akhtar | 10h |  |
| 19 | 1.2.1.2 | Deployment Data Search Service (DSS) |  | 18h | 2021-07-05 A | 2021-07-07 A |  | 100% |  |  |  | start no earlier than 2021-07-05 | Shoaib Alauddin | 18h | 18h |
| 20 | 1.2.1.3 | Performance Improvement of DSS |  | 18h | 2021-07-08 A | 2021-07-12 A | 19 | 100% |  |  |  |  | Shoaib Alauddin | 18h | 18h |
| 21 | 1.2.1.4 | Discussions, Planning And Management Activities |  | 24h | 2021-07-05 A | 2021-07-08 A |  | 100% |  |  |  |  | Faisal Ahmed Farooqui | 24h | 24h |
| 22 | 1.2.1.5 | Integration with Data Search Service |  | 18h | 2021-07-13 A | 2021-07-16 | 21, 20 | 40% | 10.8h | 1.67d | 0d |  | Faisal Ahmed Farooqui; Shoaib Alauddin | 36h | 14.4h |
| 23 | 1.2.1.6 | Requirement Analysys from QA perspective |  | 24h | 2021-07-27 | 2021-07-30 | 7 |  |  | 0d |  |  | Muhammad Naeem; Faisal Ahmed Farooqui | 30h |  |
| 24 | 1.2.1.7 | **Business Logic for Invoice Routing** |  | 6.67d | 2021-07-29 | 2021-08-06 |  |  |  | 7d | 0d |  |  | 40h |  |
| 25 | 1.2.1.7.1 | SP creation |  | 8h | 2021-07-29 | 2021-07-30 | 10 |  |  | 3d | 0d |  | Zeeshan Akhtar | 8h |  |
| 26 | 1.2.1.7.2 | Business Logic and Decission making for invoice routing |  | 24h | 2021-07-30 | 2021-08-05 | 25 |  |  | 3d | 0d |  | Zeeshan Akhtar | 24h |  |
| 27 | 1.2.1.7.3 | UI chnages (if any) - Dashboard for descripent invoices |  | 8h | 2021-08-05 | 2021-08-06 | 26 |  |  | 3d |  |  | Zeeshan Akhtar | 8h |  |
| 28 | 1.2.1.8 | Test Plan Creation |  | 18h | 2021-08-02 | 2021-08-04 | 23, 22 |  |  | 0d |  |  | Muhammad Naeem; Faisal Ahmed Farooqui | 24h |  |
| 29 | 1.2.1.9 | Test Case Creation |  | 12h | 2021-08-05 | 2021-08-06 | 28 |  |  | 3d | 0d |  | Muhammad Naeem | 12h |  |
| 30 | 1.2.1.10 | Detailed Test Case Writing |  | 18h | 2021-08-09 | 2021-08-11 | 29 |  |  | 3d | 0d |  | Muhammad Naeem | 18h |  |
| 31 | 1.2.1.11 | Discussions And Management Activities |  | 30h | 2021-08-05 | 2021-08-11 | 28 |  |  | 0d |  |  | Faisal Ahmed Farooqui | 30h |  |
| 32 | 1.2.1.12 | Build Release |  | 24h | 2021-08-12 | 2021-08-17 | 31 |  |  | 0d |  |  | Faisal Ahmed Farooqui | 24h |  |
| 33 | 1.2.1.13 | Smoke Test Execution |  | 12h | 2021-08-12 | 2021-08-13 | 30 |  |  | 3d | 0d |  | Muhammad Naeem | 12h |  |
| 34 | 1.2.1.14 | Sanity Test Execution |  | 12h | 2021-08-16 | 2021-08-17 | 33 |  |  | 3d | 0d |  | Muhammad Naeem | 12h |  |
| 35 | 1.2.1.15 | Functional Test Execution |  | 36h | 2021-08-18 | 2021-08-25 | 34 |  |  | 3d |  |  | Muhammad Naeem | 36h |  |
| 36 | 1.2.1.16 | Bug Fixing for Business Logic for Invoice Routing |  | 42h | 2021-08-09 | 2021-08-17 | 24 |  |  | 3d |  |  | Zeeshan Akhtar | 42h |  |
| 37 | 1.2.1.17 | Bug Fixing Data Search Service |  | 30h | 2021-07-16 | 2021-07-29 | 22 |  |  | 1.67d | 0d |  | Shoaib Alauddin | 30h |  |
| 38 | 1.2.1.18 | Discussions And Management Activities |  | 24h | 2021-08-18 | 2021-08-23 | 32, 37 |  |  | 0d |  |  | Faisal Ahmed Farooqui [166.7%] | 24h |  |
| 39 | 1.2.1.19 | Build Release | milestone | 18h | 2021-08-24 | 2021-08-26 | 38 |  |  | 0d |  |  | Faisal Ahmed Farooqui; Zeeshan Akhtar | 36h |  |

| ID | WBS | Task | Duration | Start | Finish | Predecessors | Total slack | Free slack | Resources | Work |
| --- | --- | --- | --- | --- | --- | --- | --- | --- | --- | --- |
| 40 | 1.2.2 | **Version 2.2.0** | 22.33d | 2021-07-29 | 2021-08-30 |  | 0d |  |  | 112h |
| 41 | 1.2.2.1 | **Data Analysis** | 10d | 2021-07-29 | 2021-08-12 |  | 5.67d | 0d |  | 60h |
| 42 | 1.2.2.1.1 | Gathering Data from DSS | 18h | 2021-07-29 | 2021-08-03 | 37 | 1.67d | 0d | Shoaib Alauddin | 18h |
| 43 | 1.2.2.1.2 | Data Preparation | 18h | 2021-08-03 | 2021-08-06 | 42 | 1.67d | 0d | Shoaib Alauddin | 18h |
| 44 | 1.2.2.1.3 | Exploratory Data Analysis - Data Visualization | 24h | 2021-08-06 | 2021-08-12 | 43 | 1.67d |  | Shoaib Alauddin | 24h |
| 45 | 1.2.2.2 | **R&D on ML Algos** | 6.67d | 2021-08-12 | 2021-08-23 | 41 | 5.67d |  |  | 40h |
| 46 | 1.2.2.2.1 | Decission making on ICR - based on current R&D and Data Analysis in hand | 6h | 2021-08-12 | 2021-08-13 |  | 1.67d | 0d | Shoaib Alauddin | 6h |
| 47 | 1.2.2.2.2 | **R&D on Existing ML Models to consider for our usage** | 5.67d | 2021-08-13 | 2021-08-23 | 46 | 5.67d |  |  | 34h |
| 48 | 1.2.2.2.2.1 | Finding most popular considerable ML Models | 12h | 2021-08-13 | 2021-08-17 |  | 1.67d | 0d | Shoaib Alauddin | 12h |
| 49 | 1.2.2.2.2.2 | R&D on each seelcted Models (4 Models * 4 hrs each) | 16h | 2021-08-17 | 2021-08-20 | 48 | 1.67d | 0d | Shoaib Alauddin | 16h |
| 50 | 1.2.2.2.2.3 | Decission making on Models for further development | 6h | 2021-08-20 | 2021-08-23 | 49 | 1.67d |  | Shoaib Alauddin | 6h |
| 51 | 1.2.2.3 | Development on New Features (Need Discussion) | 12h | 2021-08-27 | 2021-08-30 | 36, 39 | 0d |  | Zeeshan Akhtar | 12h |
