# AP Automation Phase 3

Schedule from MS Project, 2021-07-05 to 2021-10-22, 6 hours a day, A marks actual dates.

## Calendars

- APA Calendar: Mon-Fri 11:00-13:00, 14:00-18:00; Sat-Sun off. Exceptions (off unless hours are given): 2021-07-20 to 2021-07-23 (Eid ul Adha).

## Resources

| Resource | Group |
| --- | --- |
| Zeeshan Akhtar | Dev |
| Muhammad Naeem | QA |
| Faisal Ahmed Farooqui | Manager, Dev |
| Shoaib Alauddin | Dev |

## Schedule

| ID | WBS | Task | Duration | Start | Finish | Predecessors | Complete | Remaining | Total slack | Free slack | Constraint | Resources | Work | Actual work |
| --- | --- | --- | --- | --- | --- | --- | --- | --- | --- | --- | --- | --- | --- | --- |
| 1 | 1 | **Development Sprints** | 76d? | 2021-07-05 A | 2021-10-22 |  | 16% | 63.71d? | 0d |  |  |  | 1734h | 302h |
| 2 | 1.1 | **V2 Related Activities** | 19d | 2021-07-05 A | 2021-08-04 |  | 91% | 1.73d | 0d |  |  |  | 150h | 138h |
| 3 | 1.1.1 | Testing V2 | 12h | 2021-07-08 A | 2021-07-09 A |  | 100% |  |  |  | start no earlier than 2021-07-08 | Muhammad Naeem | 12h | 12h |
| 4 | 1.1.2 | Distributed Load Testing R&D | 36h | 2021-07-12 A | 2021-07-19 A | 3 | 100% |  |  |  |  | Muhammad Naeem | 36h | 36h |
| 5 | 1.1.3 | Bug Fixing V2 | 18h | 2021-07-05 A | 2021-07-07 A |  | 100% |  |  |  |  | Zeeshan Akhtar; Faisal Ahmed Farooqui | 36h | 36h |
| 6 | 1.1.4 | Load Testing | 36h | 2021-07-26 A | 2021-08-02 A | 4 | 100% |  |  |  |  | Muhammad Naeem | 36h | 36h |
| 7 | 1.1.5 | Creation of Media, Production and System Setup Load Tests& Report Creation | 12h | 2021-08-03 | 2021-08-04 | 6 |  |  | 0d |  |  | Muhammad Naeem | 12h |  |
| 8 | 1.1.6 | R&D on DLT Infrastructure and Implementation | 18h | 2021-07-12 A | 2021-07-14 A | 5 | 100% |  |  |  |  | Faisal Ahmed Farooqui | 18h | 18h |
| 9 | 1.2 | **Development of Version V3 (New Feature Branch)** | 76d? | 2021-07-05 A | 2021-10-22 |  | 10% | 68.38d? | 0d |  |  |  | 1584h | 164h |
| 10 | 1.2.1 | **Version 2.1.0** | 65d? | 2021-07-05 A | 2021-10-07 |  | 14% | 55.61d? | 11d |  |  |  | 1104h | 164h |
| 11 | 1.2.1.1 | **Code Refactoring** | 21d | 2021-07-12 A | 2021-08-13 |  | 47% | 11.06d | 0d |  |  |  | 126h | 56h |
| 12 | 1.2.1.1.1 | Lookups | 11h | 2021-07-12 A | 2021-07-13 A | 5 | 100% |  |  |  |  | Zeeshan Akhtar | 12h | 12h |
| 13 | 1.2.1.1.2 | Enumeration to be moved to Common | 6h | 2021-07-13 A | 2021-07-14 A | 12 | 100% |  |  |  |  | Zeeshan Akhtar | 6h | 6h |
| 14 | 1.2.1.1.3 | DTOs to be removed for enumerations type tables | 6h | 2021-07-14 A | 2021-07-15 A | 13 | 100% |  |  |  |  | Zeeshan Akhtar | 6h | 6h |
| 15 | 1.2.1.1.4 | API calls to be refactored in Javascript | 12h | 2021-07-15 A | 2021-07-19 A | 14 | 100% |  |  |  |  | Zeeshan Akhtar | 12h | 12h |
| 16 | 1.2.1.1.5 | JavaScript component reorganization and restructuring | 28h | 2021-07-26 A | 2021-07-30 | 15 | 64% | 10h | 0d |  |  | Zeeshan Akhtar | 30h | 20h |
| 17 | 1.2.1.1.6 | Polymorphism to be implemented for file saving mechanism | 10h | 2021-08-02 | 2021-08-03 | 16 |  |  | 0d |  |  | Zeeshan Akhtar | 12h |  |
| 18 | 1.2.1.1.7 | lambda functions for common routines | 8h | 2021-08-03 | 2021-08-05 | 17 |  |  | 0d |  |  | Zeeshan Akhtar | 12h |  |
| 19 | 1.2.1.1.8 | login related refactoring | 17h | 2021-08-06 | 2021-08-10 | 18 |  |  | 0d |  |  | Zeeshan Akhtar | 18h |  |
| 20 | 1.2.1.1.9 | Distributed Transaction Management | 14h | 2021-08-10 | 2021-08-13 | 19 |  |  | 0d |  |  | Zeeshan Akhtar | 18h |  |
| 21 | 1.2.1.2 | Deployment Data Search Service (DSS) | 20h | 2021-07-05 A | 2021-07-07 A |  | 100% |  |  |  | start no earlier than 2021-07-05 | Shoaib Alauddin | 18h | 18h |
| 22 | 1.2.1.3 | Performance Improvement of DSS | 20h | 2021-07-08 A | 2021-07-12 A | 21 | 100% |  |  |  |  | Shoaib Alauddin | 18h | 18h |
| 23 | 1.2.1.4 | DSS Requirement Analysis for ML Data Requirement | 24h | 2021-07-14 A | 2021-07-26 A | 8 | 100% |  |  |  |  | Faisal Ahmed Farooqui | 24h | 24h |
| 24 | 1.2.1.5 | DLT Infrastructure Deployment | 24h | 2021-07-27 A | 2021-07-30 A | 23 | 100% |  |  |  |  | Faisal Ahmed Farooqui | 24h | 24h |
| 25 | 1.2.1.6 | Integration with APA | 20h | 2021-07-13 A | 2021-07-16 A | 22 | 100% |  |  |  |  | Shoaib Alauddin | 24h | 24h |
| 26 | 1.2.1.7 | Requirement Understanding | 18h | 2021-08-05 | 2021-08-09 | 7 |  |  | 0d |  |  | Muhammad Naeem | 18h |  |
| 27 | 1.2.1.8 | ModelScanner Lambda Updates | 12h | 2021-08-02 | 2021-08-03 | 24 |  |  | 2d | 0d |  | Faisal Ahmed Farooqui | 12h |  |
| 28 | 1.2.1.9 | DSS Integration Logic in APA | 24h | 2021-08-04 | 2021-08-09 | 27 |  |  | 2d | 0d |  | Faisal Ahmed Farooqui | 24h |  |

| ID | WBS | Task | Type | Duration | Start | Finish | Predecessors | Total slack | Free slack | Resources | Work |
| --- | --- | --- | --- | --- | --- | --- | --- | --- | --- | --- | --- |
| 29 | 1.2.1.10 | **Business Logic for Invoice Routing** |  | 8d | 2021-08-16 | 2021-08-25 |  | 0d |  |  | 48h |
| 30 | 1.2.1.10.1 | SP creation |  | 12h | 2021-08-16 | 2021-08-17 | 11 | 0d |  | Zeeshan Akhtar | 12h |
| 31 | 1.2.1.10.2 | Business Logic and Decission making for invoice routing |  | 24h | 2021-08-18 | 2021-08-23 | 30 | 0d |  | Zeeshan Akhtar | 24h |
| 32 | 1.2.1.10.3 | UI chnages (if any) - Dashboard for descripent invoices |  | 12h | 2021-08-24 | 2021-08-25 | 31 | 0d |  | Zeeshan Akhtar | 12h |
| 33 | 1.2.1.11 | ERD and data storage design for ML |  | 30h | 2021-07-19 | 2021-07-29 | 25 | 1d |  | Shoaib Alauddin | 30h |
| 34 | 1.2.1.12 | R&D On ML Models and Existing researches on similar problems |  | 60h | 2021-08-03 | 2021-08-16 | 33 | 1d | 0d | Shoaib Alauddin | 60h |
| 35 | 1.2.1.13 | Test Plan Creation |  | 24h | 2021-08-10 | 2021-08-13 | 26, 25 | 0d |  | Muhammad Naeem | 24h |
| 36 | 1.2.1.14 | Test Case Creation |  | 12h | 2021-08-16 | 2021-08-17 | 35 | 0d |  | Muhammad Naeem | 12h |
| 37 | 1.2.1.15 | Detailed Test Case Writing |  | 18h | 2021-08-18 | 2021-08-20 | 36 | 0d |  | Muhammad Naeem | 18h |
| 38 | 1.2.1.16 | Discussions And Management Activities for Development & QA |  | 18h | 2021-08-10 | 2021-08-12 | 28 | 2d | 0d | Faisal Ahmed Farooqui | 18h |
| 39 | 1.2.1.17 | Build Release |  | 24h | 2021-08-13 | 2021-08-18 | 38 | 2d | 0d | Faisal Ahmed Farooqui | 24h |
| 40 | 1.2.1.18 | Smoke Test Execution |  | 12h | 2021-08-23 | 2021-08-24 | 37 | 0d |  | Muhammad Naeem | 12h |
| 41 | 1.2.1.19 | Sanity Test Execution |  | 18h | 2021-08-25 | 2021-08-27 | 40 | 0d |  | Muhammad Naeem | 18h |
| 42 | 1.2.1.20 | Functional Test Execution |  | 36h | 2021-08-30 | 2021-09-06 | 41 | 0d |  | Muhammad Naeem | 36h |
| 43 | 1.2.1.21 | Bug Fixing for Business Logic for Invoice Routing |  | 24h | 2021-08-26 | 2021-08-31 | 29 | 0d |  | Zeeshan Akhtar | 24h |
| 44 | 1.2.1.22 | Bug Fixing Data Search Service |  | 24h | 2021-08-17 | 2021-08-20 | 34 | 1d | 0d | Shoaib Alauddin | 24h |
| 45 | 1.2.1.23 | Bug Fixing Related Discussions And Management Activities |  | 24h | 2021-08-19 | 2021-08-24 | 39 | 2d | 0d | Faisal Ahmed Farooqui | 24h |
| 46 | 1.2.1.24 | Results and Data Analysis of DSS for ML Models |  | 24h | 2021-08-25 | 2021-08-30 | 45 | 2d | 0d | Faisal Ahmed Farooqui | 24h |
| 47 | 1.2.1.25 | Development Finalization |  | 24h | 2021-09-01 | 2021-09-06 | 43 | 0d |  | Zeeshan Akhtar | 24h |
| 48 | 1.2.1.26 | Build Release | milestone | 6h? | 2021-09-07 | 2021-09-07 | 47 | 33d |  |  |  |
| 49 | 1.2.1.27 | **New Features on Core APA Version 2.1.0** |  | 28d? | 2021-08-31 | 2021-10-07 |  | 2d |  |  | 396h |
| 50 | 1.2.1.27.1 | **AP Cash Information Integration** |  | 17d? | 2021-08-31 | 2021-09-22 |  | 2d |  |  | 198h |
| 51 | 1.2.1.27.1.1 | Requirement Analysis |  | 18h | 2021-08-31 | 2021-09-02 | 46 | 2d | 0d | Faisal Ahmed Farooqui | 18h |
| 52 | 1.2.1.27.1.2 | Analysis on Design related Change |  | 12h | 2021-09-07 | 2021-09-08 | 47 | 0d |  | Zeeshan Akhtar | 12h |
| 53 | 1.2.1.27.1.3 | Requirement Understanding |  | 12h | 2021-09-07 | 2021-09-08 | 42 | 0d |  | Muhammad Naeem | 12h |
| 54 | 1.2.1.27.1.4 | ERD Updates |  | 12h | 2021-09-09 | 2021-09-10 | 52 | 0d |  | Zeeshan Akhtar | 12h |
| 55 | 1.2.1.27.1.5 | Changes in Data Sync Functionality |  | 12h | 2021-09-13 | 2021-09-14 | 54 | 0d |  | Zeeshan Akhtar | 12h |
| 56 | 1.2.1.27.1.6 | Test Plan Creation |  | 12h | 2021-09-09 | 2021-09-10 | 53 | 0d |  | Muhammad Naeem | 12h |
| 57 | 1.2.1.27.1.7 | Test Case Creation |  | 18h | 2021-09-13 | 2021-09-15 | 56 | 0d |  | Muhammad Naeem | 18h |
| 58 | 1.2.1.27.1.8 | Design Changes And Testing Plan |  | 24h | 2021-09-03 | 2021-09-08 | 51 | 2d | 0d | Faisal Ahmed Farooqui | 24h |
| 59 | 1.2.1.27.1.9 | SP Updates |  | 12h | 2021-09-15 | 2021-09-16 | 55 | 0d |  | Zeeshan Akhtar | 12h |
| 60 | 1.2.1.27.1.10 | UI Updates |  | 18h | 2021-09-17 | 2021-09-21 | 59 | 0d |  | Zeeshan Akhtar | 18h |
| 61 | 1.2.1.27.1.11 | Business Logic Implementation |  | 24h | 2021-09-09 | 2021-09-14 | 58 | 2d | 0d | Faisal Ahmed Farooqui | 24h |
| 62 | 1.2.1.27.1.12 | Detailed Functional Tests Writing |  | 24h | 2021-09-16 | 2021-09-21 | 57 | 0d |  | Muhammad Naeem | 24h |
| 63 | 1.2.1.27.1.13 | Build Release | milestone | 6h? | 2021-09-22 | 2021-09-22 | 60, 61, 62 | 22d |  |  |  |

| ID | WBS | Task | Type | Duration | Start | Finish | Predecessors | Total slack | Free slack | Resources | Work |
| --- | --- | --- | --- | --- | --- | --- | --- | --- | --- | --- | --- |
| 64 | 1.2.1.27.2 | **AP Invoice Model testing** |  | 12d | 2021-09-15 | 2021-09-30 |  | 0d |  |  | 132h |
| 65 | 1.2.1.27.2.1 | Requirement Analysis |  | 18h | 2021-09-15 | 2021-09-17 | 61 | 2d | 0d | Faisal Ahmed Farooqui | 18h |
| 66 | 1.2.1.27.2.2 | Analysis on Design Change |  | 12h | 2021-09-22 | 2021-09-23 | 60 | 0d |  | Zeeshan Akhtar | 12h |
| 67 | 1.2.1.27.2.3 | Requirement Understanding |  | 12h | 2021-09-22 | 2021-09-23 | 62 | 0d |  | Muhammad Naeem | 12h |
| 68 | 1.2.1.27.2.4 | UI Changes |  | 30h | 2021-09-24 | 2021-09-30 | 66 | 0d |  | Zeeshan Akhtar | 30h |
| 69 | 1.2.1.27.2.5 | Business Logic Implementation |  | 30h | 2021-09-20 | 2021-09-24 | 65 | 2d | 0d | Faisal Ahmed Farooqui | 30h |
| 70 | 1.2.1.27.2.6 | Test Case Creation |  | 30h | 2021-09-24 | 2021-09-30 | 67 | 0d |  | Muhammad Naeem | 30h |
| 71 | 1.2.1.27.3 | Build Release | milestone | 6h? | 2021-10-01 | 2021-10-01 | 64 | 15d |  |  |  |
| 72 | 1.2.1.27.4 | Bug Fixing of Cash Info |  | 18h | 2021-10-01 | 2021-10-05 | 68 | 0d |  | Zeeshan Akhtar | 18h |
| 73 | 1.2.1.27.5 | Bug Fixing Model Testing |  | 24h | 2021-09-27 | 2021-09-30 | 69 | 2d | 0d | Faisal Ahmed Farooqui | 24h |
| 74 | 1.2.1.27.6 | Test Execution |  | 24h | 2021-10-01 | 2021-10-06 | 70 | 0d |  | Muhammad Naeem | 24h |
| 75 | 1.2.1.27.7 | Build Release (Final for Ver 2.1.0) | milestone | 6h? | 2021-10-07 | 2021-10-07 | 72, 74 | 11d |  |  |  |
| 76 | 1.2.2 | **Version 2.2.0** |  | 45d? | 2021-08-23 | 2021-10-22 |  | 0d |  |  | 480h |
| 77 | 1.2.2.1 | **Data Analysis** |  | 10d | 2021-08-23 | 2021-09-03 |  | 1d | 0d |  | 60h |
| 78 | 1.2.2.1.1 | Gathering Data from DSS |  | 18h | 2021-08-23 | 2021-08-25 | 44 | 1d | 0d | Shoaib Alauddin | 18h |
| 79 | 1.2.2.1.2 | Data Preparation |  | 18h | 2021-08-26 | 2021-08-30 | 78 | 1d | 0d | Shoaib Alauddin | 18h |
| 80 | 1.2.2.1.3 | Exploratory Data Analysis - Data Visualization |  | 24h | 2021-08-31 | 2021-09-03 | 79 | 1d |  | Shoaib Alauddin | 24h |
| 81 | 1.2.2.2 | **R&D on ML Algos** |  | 9d | 2021-09-06 | 2021-09-16 | 77 | 1d | 0d |  | 54h |
| 82 | 1.2.2.2.1 | Decission making on ICR - based on current R&D and Data Analysis in hand |  | 12h | 2021-09-06 | 2021-09-07 |  | 1d | 0d | Shoaib Alauddin | 12h |
| 83 | 1.2.2.2.2 | **R&D on Existing ML Models to consider for our usage** |  | 7d | 2021-09-08 | 2021-09-16 | 82 | 1d |  |  | 42h |
| 84 | 1.2.2.2.2.1 | Finding most popular considerable ML Models |  | 12h | 2021-09-08 | 2021-09-09 |  | 1d | 0d | Shoaib Alauddin | 12h |
| 85 | 1.2.2.2.2.2 | R&D on each seelcted Models (4 Models * 4 hrs each) |  | 18h | 2021-09-10 | 2021-09-14 | 84 | 1d | 0d | Shoaib Alauddin | 18h |
| 86 | 1.2.2.2.2.3 | Decission making on Models for further development |  | 12h | 2021-09-15 | 2021-09-16 | 85 | 1d |  | Shoaib Alauddin | 12h |
| 87 | 1.2.2.3 | Model Architecture Finalization & Creation |  | 30h | 2021-09-17 | 2021-09-23 | 81 | 1d | 0d | Shoaib Alauddin | 30h |
| 88 | 1.2.2.4 | Model Training |  | 30h | 2021-09-24 | 2021-09-30 | 87 | 1d | 0d | Shoaib Alauddin | 30h |
| 89 | 1.2.2.5 | Model Testing & Retraining |  | 30h | 2021-10-01 | 2021-10-07 | 88 | 1d | 0d | Shoaib Alauddin | 30h |
| 90 | 1.2.2.6 | Requirement Understanding |  | 18h | 2021-10-07 | 2021-10-11 | 74 | 0d |  | Muhammad Naeem | 18h |
| 91 | 1.2.2.7 | Analysis on APA Integration with ML Model Service |  | 24h | 2021-10-01 | 2021-10-06 | 73 | 2d | 0d | Faisal Ahmed Farooqui | 24h |
| 92 | 1.2.2.8 | ML results utilization & Integration Logic Implementation |  | 18h | 2021-10-06 | 2021-10-08 | 72 | 0d |  | Zeeshan Akhtar | 18h |
| 93 | 1.2.2.9 | Business Logic Implementation |  | 30h | 2021-10-07 | 2021-10-13 | 91 | 2d | 0d | Faisal Ahmed Farooqui | 30h |
| 94 | 1.2.2.10 | Model Deployment |  | 24h | 2021-10-08 | 2021-10-13 | 89 | 1d | 0d | Shoaib Alauddin | 24h |
| 95 | 1.2.2.11 | Test Case Creation |  | 30h | 2021-10-12 | 2021-10-18 | 90 | 0d |  | Muhammad Naeem | 30h |
| 96 | 1.2.2.12 | UI Changes |  | 30h | 2021-10-11 | 2021-10-15 | 92 | 0d |  | Zeeshan Akhtar | 30h |
| 97 | 1.2.2.13 | First Build Release | milestone | 6h? | 2021-10-18 | 2021-10-18 | 93, 96 | 4d |  |  |  |
| 98 | 1.2.2.14 | Test Execution |  | 24h | 2021-10-19 | 2021-10-22 | 95 | 0d |  | Muhammad Naeem | 24h |
| 99 | 1.2.2.15 | Bug Fixing at APA side |  | 24h | 2021-10-18 | 2021-10-21 | 96 | 0d |  | Zeeshan Akhtar | 24h |
| 100 | 1.2.2.16 | Discussions on Bugs and ML Results |  | 24h | 2021-10-14 | 2021-10-19 | 93 | 2d |  | Faisal Ahmed Farooqui | 24h |
| 101 | 1.2.2.17 | Bug Fixing on ML Model and Retraining |  | 30h | 2021-10-14 | 2021-10-20 | 94 | 1d |  | Shoaib Alauddin | 30h |
| 102 | 1.2.2.18 | Build Release | milestone | 6h? | 2021-10-22 | 2021-10-22 | 99, 100, 101 | 0d |  |  |  |
