# AP Automation Phase 3

Schedule from MS Project, 2021-07-05 to 2021-11-15, 6 hours a day, A marks actual dates.

## Calendars

- APA Calendar: Mon-Fri 11:00-13:00, 14:00-18:00; Sat-Sun off. Exceptions (off unless hours are given): 2021-07-20 to 2021-07-23 (Eid ul Adha), 2021-08-18 to 2021-08-19 (Yom-e-Ashura).

## Resources

| Resource | Group |
| --- | --- |
| Zeeshan Akhtar | Dev |
| Muhammad Naeem | QA |
| Faisal Ahmed Farooqui | Manager, Dev |
| Shoaib Alauddin | Dev |

## Schedule

| ID | WBS | Task | Duration | Start | Finish | Predecessors | Complete | Remaining | Total slack | Free slack | Constraint | Resources | Work | Actual work |
| --- | --- | --- | --- | --- | --- | --- | --- | --- | --- | --- | --- | --- | --- | --- |
| 1 | 1 | **Development Sprints** | 90d? | 2021-07-05 A | 2021-11-15 |  | 24% | 68.58d? | 0d |  |  |  | 1938h | 510h |
| 2 | 1.1 | **V2 Related Activities** | 28d | 2021-07-05 A | 2021-08-17 A |  | 100% |  |  |  |  |  | 204h | 204h |
| 3 | 1.1.1 | Testing V2 | 12h | 2021-07-08 A | 2021-07-09 A |  | 100% |  |  |  | start no earlier than 2021-07-08 | Muhammad Naeem | 12h | 12h |
| 4 | 1.1.2 | Distributed Load Testing R&D | 36h | 2021-07-12 A | 2021-07-19 A | 3 | 100% |  |  |  |  | Muhammad Naeem | 36h | 36h |
| 5 | 1.1.3 | Bug Fixing V2 | 18h | 2021-07-05 A | 2021-07-07 A |  | 100% |  |  |  |  | Zeeshan Akhtar; Faisal Ahmed Farooqui | 36h | 36h |
| 6 | 1.1.4 | Load Testing | 36h | 2021-07-26 A | 2021-08-02 A | 4 | 100% |  |  |  |  | Muhammad Naeem | 36h | 36h |
| 7 | 1.1.5 | Creation of Media, Production and System Setup Load Tests& Report Creation | 36h | 2021-08-03 A | 2021-08-10 A | 6 | 100% |  |  |  |  | Muhammad Naeem | 36h | 36h |
| 8 | 1.1.6 | R&D on DLT Infrastructure and Implementation | 18h | 2021-07-12 A | 2021-07-14 A | 5 | 100% |  |  |  |  | Faisal Ahmed Farooqui | 18h | 18h |
| 9 | 1.1.7 | Load and Stress testing of ScannerFunction | 18h | 2021-08-11 A | 2021-08-13 A | 7 | 100% |  |  |  |  | Muhammad Naeem | 18h | 18h |
| 10 | 1.1.8 | Result Analysis of Load and Stress testing of scanner function | 12h | 2021-08-16 A | 2021-08-17 A | 29, 9 | 100% |  |  |  |  | Faisal Ahmed Farooqui | 12h | 12h |
| 11 | 1.2 | **Development of Version V3 (New Feature Branch)** | 90d? | 2021-07-05 A | 2021-11-15 |  | 16% | 75.97d? | 0d |  |  |  | 1734h | 306h |
| 12 | 1.2.1 | **Version 2.1.0** | 72d? | 2021-07-05 A | 2021-10-20 |  | 22% | 56.3d? | 18d |  |  |  | 1254h | 306h |
| 13 | 1.2.1.1 | **Code Refactoring** | 21d | 2021-07-12 A | 2021-08-13 |  | 63% | 7.69d | 10d | 0d |  |  | 126h | 78h |
| 14 | 1.2.1.1.1 | Lookups | 11h | 2021-07-12 A | 2021-07-13 A | 5 | 100% |  |  |  |  | Zeeshan Akhtar | 12h | 12h |
| 15 | 1.2.1.1.2 | Enumeration to be moved to Common | 6h | 2021-07-13 A | 2021-07-14 A | 14 | 100% |  |  |  |  | Zeeshan Akhtar | 6h | 6h |
| 16 | 1.2.1.1.3 | DTOs to be removed for enumerations type tables | 6h | 2021-07-14 A | 2021-07-15 A | 15 | 100% |  |  |  |  | Zeeshan Akhtar | 6h | 6h |
| 17 | 1.2.1.1.4 | API calls to be refactored in Javascript | 12h | 2021-07-15 A | 2021-07-19 A | 16 | 100% |  |  |  |  | Zeeshan Akhtar | 12h | 12h |
| 18 | 1.2.1.1.5 | JavaScript component reorganization and restructuring | 28h | 2021-07-26 A | 2021-07-30 A | 17 | 100% |  |  |  |  | Zeeshan Akhtar | 30h | 30h |
| 19 | 1.2.1.1.6 | Polymorphism to be implemented for file saving mechanism | 10h | 2021-08-02 | 2021-08-03 | 18 |  |  | 18.33d |  |  | Zeeshan Akhtar | 12h |  |
| 20 | 1.2.1.1.7 | lambda functions for common routines | 8h | 2021-08-03 A | 2021-08-05 A | 19 | 100% |  |  |  |  | Zeeshan Akhtar | 12h | 12h |
| 21 | 1.2.1.1.8 | login related refactoring | 17h | 2021-08-06 | 2021-08-10 | 20 |  |  | 10d | 0d |  | Zeeshan Akhtar | 18h |  |
| 22 | 1.2.1.1.9 | Distributed Transaction Management | 14h | 2021-08-10 | 2021-08-13 | 21 |  |  | 10d |  |  | Zeeshan Akhtar | 18h |  |
| 23 | 1.2.1.2 | Deployment Data Search Service (DSS) | 20h | 2021-07-05 A | 2021-07-07 A |  | 100% |  |  |  | start no earlier than 2021-07-05 | Shoaib Alauddin | 18h | 18h |
| 24 | 1.2.1.3 | Performance Improvement of DSS | 20h | 2021-07-08 A | 2021-07-12 A | 23 | 100% |  |  |  |  | Shoaib Alauddin | 18h | 18h |
| 25 | 1.2.1.4 | DSS Requirement Analysis for ML Data Requirement | 24h | 2021-07-14 A | 2021-07-26 A | 8 | 100% |  |  |  |  | Faisal Ahmed Farooqui | 24h | 24h |
| 26 | 1.2.1.5 | DLT Infrastructure Deployment | 24h | 2021-07-27 A | 2021-07-30 A | 25 | 100% |  |  |  |  | Faisal Ahmed Farooqui | 24h | 24h |
| 27 | 1.2.1.6 | Integration with APA | 20h | 2021-07-13 A | 2021-07-16 A | 24 | 100% |  |  |  |  | Shoaib Alauddin | 24h | 24h |
| 28 | 1.2.1.7 | ERD and data storage design for ML | 30h | 2021-07-19 | 2021-07-29 | 27 |  |  | 4d | 1d |  | Shoaib Alauddin | 30h |  |
| 29 | 1.2.1.8 | Analysis on Data Generation Strategies | 60h | 2021-08-02 A | 2021-08-13 A | 26, 28 | 100% |  |  |  |  | Faisal Ahmed Farooqui; Shoaib Alauddin | 90h | 90h |
| 30 | 1.2.1.9 | Simulation of Data Generation for dession making | 12h | 2021-08-16 A | 2021-08-17 A | 29 | 100% |  |  |  |  | Shoaib Alauddin | 12h | 12h |
| 31 | 1.2.1.10 | Data Preparation and Data Analysis | 36h | 2021-08-20 | 2021-08-27 | 30 |  |  | 0d |  |  | Shoaib Alauddin | 36h |  |
| 32 | 1.2.1.11 | Requirement Understanding | 18h | 2021-08-16 A | 2021-08-20 A | 9 | 100% |  |  |  |  | Muhammad Naeem | 18h | 18h |
| 33 | 1.2.1.12 | ModelScanner Lambda Updates | 12h | 2021-08-20 | 2021-08-23 | 10 |  |  | 4d | 0d |  | Faisal Ahmed Farooqui | 12h |  |
| 34 | 1.2.1.13 | DSS Integration Logic in APA | 24h | 2021-08-24 | 2021-08-27 | 33 |  |  | 4d | 0d |  | Faisal Ahmed Farooqui | 24h |  |

| ID | WBS | Task | Type | Duration | Start | Finish | Predecessors | Total slack | Free slack | Resources | Work |
| --- | --- | --- | --- | --- | --- | --- | --- | --- | --- | --- | --- |
| 35 | 1.2.1.14 | **Business Logic for Invoice Routing** |  | 12d | 2021-08-16 | 2021-09-02 |  | 10d | 0d |  | 72h |
| 36 | 1.2.1.14.1 | SP creation |  | 24h | 2021-08-16 | 2021-08-23 | 13 | 10d | 0d | Zeeshan Akhtar | 24h |
| 37 | 1.2.1.14.2 | Business Logic and Decission making for invoice routing |  | 24h | 2021-08-24 | 2021-08-27 | 36 | 10d | 0d | Zeeshan Akhtar | 24h |
| 38 | 1.2.1.14.3 | UI chnages (if any) - Dashboard for descripent invoices |  | 24h | 2021-08-30 | 2021-09-02 | 37 | 10d |  | Zeeshan Akhtar | 24h |
| 39 | 1.2.1.15 | R&D On ML Models and Existing researches on similar problems |  | 48h | 2021-08-30 | 2021-09-08 | 31 | 0d |  | Shoaib Alauddin | 48h |
| 40 | 1.2.1.16 | Test Plan Creation |  | 24h | 2021-08-23 | 2021-08-26 | 32, 27 | 7d | 0d | Muhammad Naeem | 24h |
| 41 | 1.2.1.17 | Test Case Creation |  | 12h | 2021-08-27 | 2021-08-30 | 40 | 7d | 0d | Muhammad Naeem | 12h |
| 42 | 1.2.1.18 | Detailed Test Case Writing |  | 18h | 2021-08-31 | 2021-09-02 | 41 | 7d | 0d | Muhammad Naeem | 18h |
| 43 | 1.2.1.19 | Discussions And Management Activities for Development & QA |  | 18h | 2021-08-30 | 2021-09-01 | 34 | 4d | 0d | Faisal Ahmed Farooqui | 18h |
| 44 | 1.2.1.20 | Build Release |  | 24h | 2021-09-02 | 2021-09-07 | 43 | 4d | 0d | Faisal Ahmed Farooqui | 24h |
| 45 | 1.2.1.21 | Smoke Test Execution |  | 12h | 2021-09-03 | 2021-09-06 | 42 | 7d | 0d | Muhammad Naeem | 12h |
| 46 | 1.2.1.22 | Sanity Test Execution |  | 18h | 2021-09-07 | 2021-09-09 | 45 | 7d | 0d | Muhammad Naeem | 18h |
| 47 | 1.2.1.23 | Functional Test Execution |  | 36h | 2021-09-10 | 2021-09-17 | 46 | 7d | 0d | Muhammad Naeem | 36h |
| 48 | 1.2.1.24 | Bug Fixing for Business Logic for Invoice Routing |  | 24h | 2021-09-03 | 2021-09-08 | 35 | 10d | 0d | Zeeshan Akhtar | 24h |
| 49 | 1.2.1.25 | Bug Fixing Data Search Service |  | 24h | 2021-09-09 | 2021-09-14 | 39 | 0d |  | Shoaib Alauddin | 24h |
| 50 | 1.2.1.26 | Bug Fixing Related Discussions And Management Activities |  | 24h | 2021-09-08 | 2021-09-13 | 44 | 4d | 0d | Faisal Ahmed Farooqui | 24h |
| 51 | 1.2.1.27 | Results and Data Analysis of DSS for ML Models |  | 24h | 2021-09-14 | 2021-09-17 | 50 | 4d | 0d | Faisal Ahmed Farooqui | 24h |
| 52 | 1.2.1.28 | Development Finalization |  | 24h | 2021-09-09 | 2021-09-14 | 48 | 10d | 0d | Zeeshan Akhtar | 24h |
| 53 | 1.2.1.29 | Build Release | milestone | 6h? | 2021-09-15 | 2021-09-15 | 52 | 43d |  |  |  |
| 54 | 1.2.1.30 | **New Features on Core APA Version 2.1.0** |  | 26d? | 2021-09-15 | 2021-10-20 |  | 7d |  |  | 396h |
| 55 | 1.2.1.30.1 | **AP Cash Information Integration** |  | 15d? | 2021-09-15 | 2021-10-05 |  | 7d |  |  | 198h |
| 56 | 1.2.1.30.1.1 | Requirement Analysis |  | 18h | 2021-09-20 | 2021-09-22 | 51 | 4d | 0d | Faisal Ahmed Farooqui | 18h |
| 57 | 1.2.1.30.1.2 | Analysis on Design related Change |  | 12h | 2021-09-15 | 2021-09-16 | 52 | 10d | 0d | Zeeshan Akhtar | 12h |
| 58 | 1.2.1.30.1.3 | Requirement Understanding |  | 12h | 2021-09-20 | 2021-09-21 | 47 | 7d | 0d | Muhammad Naeem | 12h |
| 59 | 1.2.1.30.1.4 | ERD Updates |  | 12h | 2021-09-17 | 2021-09-20 | 57 | 10d | 0d | Zeeshan Akhtar | 12h |
| 60 | 1.2.1.30.1.5 | Changes in Data Sync Functionality |  | 12h | 2021-09-21 | 2021-09-22 | 59 | 10d | 0d | Zeeshan Akhtar | 12h |
| 61 | 1.2.1.30.1.6 | Test Plan Creation |  | 12h | 2021-09-22 | 2021-09-23 | 58 | 7d | 0d | Muhammad Naeem | 12h |
| 62 | 1.2.1.30.1.7 | Test Case Creation |  | 18h | 2021-09-24 | 2021-09-28 | 61 | 7d | 0d | Muhammad Naeem | 18h |
| 63 | 1.2.1.30.1.8 | Design Changes And Testing Plan |  | 24h | 2021-09-23 | 2021-09-28 | 56 | 4d | 0d | Faisal Ahmed Farooqui | 24h |
| 64 | 1.2.1.30.1.9 | SP Updates |  | 12h | 2021-09-23 | 2021-09-24 | 60 | 10d | 0d | Zeeshan Akhtar | 12h |
| 65 | 1.2.1.30.1.10 | UI Updates |  | 18h | 2021-09-27 | 2021-09-29 | 64 | 10d | 0d | Zeeshan Akhtar | 18h |
| 66 | 1.2.1.30.1.11 | Business Logic Implementation |  | 24h | 2021-09-29 | 2021-10-04 | 63 | 4d | 0d | Faisal Ahmed Farooqui | 24h |
| 67 | 1.2.1.30.1.12 | Detailed Functional Tests Writing |  | 24h | 2021-09-29 | 2021-10-04 | 62 | 7d | 0d | Muhammad Naeem | 24h |
| 68 | 1.2.1.30.1.13 | Build Release | milestone | 6h? | 2021-10-05 | 2021-10-05 | 65, 66, 67 | 29d |  |  |  |

| ID | WBS | Task | Type | Duration | Start | Finish | Predecessors | Total slack | Free slack | Constraint | Resources | Work |
| --- | --- | --- | --- | --- | --- | --- | --- | --- | --- | --- | --- | --- |
| 69 | 1.2.1.30.2 | **AP Invoice Model testing** |  | 11d | 2021-09-30 | 2021-10-14 |  | 6d | 0d |  |  | 132h |
| 70 | 1.2.1.30.2.1 | Requirement Analysis |  | 18h | 2021-10-05 | 2021-10-07 | 66 | 4d | 0d |  | Faisal Ahmed Farooqui | 18h |
| 71 | 1.2.1.30.2.2 | Analysis on Design Change |  | 12h | 2021-09-30 | 2021-10-01 | 65 | 10d | 0d |  | Zeeshan Akhtar | 12h |
| 72 | 1.2.1.30.2.3 | Requirement Understanding |  | 12h | 2021-10-05 | 2021-10-06 | 67 | 7d | 0d |  | Muhammad Naeem | 12h |
| 73 | 1.2.1.30.2.4 | UI Changes |  | 30h | 2021-10-04 | 2021-10-08 | 71 | 10d | 0d |  | Zeeshan Akhtar | 30h |
| 74 | 1.2.1.30.2.5 | Business Logic Implementation |  | 30h | 2021-10-08 | 2021-10-14 | 70 | 4d | 0d |  | Faisal Ahmed Farooqui | 30h |
| 75 | 1.2.1.30.2.6 | Test Case Creation |  | 30h | 2021-10-07 | 2021-10-13 | 72 | 7d | 0d |  | Muhammad Naeem | 30h |
| 76 | 1.2.1.30.3 | Build Release | milestone | 6h? | 2021-10-15 | 2021-10-15 | 69 | 21d |  |  |  |  |
| 77 | 1.2.1.30.4 | Bug Fixing of Cash Info |  | 18h | 2021-10-11 | 2021-10-13 | 73 | 10d | 0d |  | Zeeshan Akhtar | 18h |
| 78 | 1.2.1.30.5 | Bug Fixing Model Testing |  | 24h | 2021-10-15 | 2021-10-20 | 74 | 4d | 0d |  | Faisal Ahmed Farooqui | 24h |
| 79 | 1.2.1.30.6 | Test Execution |  | 24h | 2021-10-14 | 2021-10-19 | 75 | 7d | 0d |  | Muhammad Naeem | 24h |
| 80 | 1.2.1.30.7 | Build Release (Final for Ver 2.1.0) | milestone | 6h? | 2021-10-20 | 2021-10-20 | 77, 79 | 18d |  |  |  |  |
| 81 | 1.2.2 | **Version 2.2.0** |  | 44d? | 2021-09-15 | 2021-11-15 |  | 0d |  |  |  | 480h |
| 82 | 1.2.2.1 | **Data Analysis** |  | 10d | 2021-09-15 | 2021-09-28 |  | 0d |  |  |  | 60h |
| 83 | 1.2.2.1.1 | Gathering Data from DSS |  | 18h | 2021-09-15 | 2021-09-17 | 49 | 0d |  |  | Shoaib Alauddin | 18h |
| 84 | 1.2.2.1.2 | Data Preparation |  | 18h | 2021-09-20 | 2021-09-22 | 83 | 0d |  |  | Shoaib Alauddin | 18h |
| 85 | 1.2.2.1.3 | Exploratory Data Analysis - Data Visualization |  | 24h | 2021-09-23 | 2021-09-28 | 84 | 0d |  |  | Shoaib Alauddin | 24h |
| 86 | 1.2.2.2 | **R&D on ML Algos** |  | 9d | 2021-09-29 | 2021-10-11 | 82 | 0d |  |  |  | 54h |
| 87 | 1.2.2.2.1 | Decission making on ICR - based on current R&D and Data Analysis in hand |  | 12h | 2021-09-29 | 2021-09-30 |  | 0d |  |  | Shoaib Alauddin | 12h |
| 88 | 1.2.2.2.2 | **R&D on Existing ML Models to consider for our usage** |  | 7d | 2021-10-01 | 2021-10-11 | 87 | 0d |  |  |  | 42h |
| 89 | 1.2.2.2.2.1 | Finding most popular considerable ML Models |  | 12h | 2021-10-01 | 2021-10-04 |  | 0d |  |  | Shoaib Alauddin | 12h |
| 90 | 1.2.2.2.2.2 | R&D on each seelcted Models (4 Models * 4 hrs each) |  | 18h | 2021-10-05 | 2021-10-07 | 89 | 0d |  |  | Shoaib Alauddin | 18h |
| 91 | 1.2.2.2.2.3 | Decission making on Models for further development |  | 12h | 2021-10-08 | 2021-10-11 | 90 | 0d |  |  | Shoaib Alauddin | 12h |
| 92 | 1.2.2.3 | Model Architecture Finalization & Creation |  | 30h | 2021-10-12 | 2021-10-18 | 86 | 0d |  |  | Shoaib Alauddin | 30h |
| 93 | 1.2.2.4 | Model Training |  | 30h | 2021-10-19 | 2021-10-25 | 92 | 0d |  |  | Shoaib Alauddin | 30h |
| 94 | 1.2.2.5 | Model Testing & Retraining |  | 30h | 2021-10-26 | 2021-11-01 | 93 | 0d |  |  | Shoaib Alauddin | 30h |
| 95 | 1.2.2.6 | Requirement Understanding |  | 18h | 2021-10-20 | 2021-10-22 | 79 | 7d | 0d |  | Muhammad Naeem | 18h |
| 96 | 1.2.2.7 | Analysis on APA Integration with ML Model Service |  | 24h | 2021-10-21 | 2021-10-26 | 78 | 4d | 0d |  | Faisal Ahmed Farooqui | 24h |
| 97 | 1.2.2.8 | ML results utilization & Integration Logic Implementation |  | 18h | 2021-10-14 | 2021-10-18 | 77 | 10d | 0d |  | Zeeshan Akhtar | 18h |
| 98 | 1.2.2.9 | Business Logic Implementation |  | 30h | 2021-10-27 | 2021-11-02 | 96 | 4d | 0d |  | Faisal Ahmed Farooqui | 30h |
| 99 | 1.2.2.10 | Model Deployment |  | 24h | 2021-11-02 | 2021-11-05 | 94 | 0d |  |  | Shoaib Alauddin | 24h |
| 100 | 1.2.2.11 | Test Case Creation |  | 30h | 2021-10-25 | 2021-10-29 | 95 | 7d | 0d |  | Muhammad Naeem | 30h |
| 101 | 1.2.2.12 | UI Changes |  | 30h | 2021-10-19 | 2021-10-25 | 97 | 10d | 0d |  | Zeeshan Akhtar | 30h |
| 102 | 1.2.2.13 | First Build Release | milestone | 6h? | 2021-11-03 | 2021-11-03 | 98, 101 | 8d |  |  |  |  |
| 103 | 1.2.2.14 | Test Execution |  | 24h | 2021-11-01 | 2021-11-04 | 100 | 7d |  |  | Muhammad Naeem | 24h |
| 104 | 1.2.2.15 | Bug Fixing at APA side |  | 24h | 2021-10-26 | 2021-10-29 | 101 | 10d |  |  | Zeeshan Akhtar | 24h |
| 105 | 1.2.2.16 | Discussions on Bugs and ML Results |  | 24h | 2021-11-03 | 2021-11-08 | 98 | 4d |  |  | Faisal Ahmed Farooqui | 24h |
| 106 | 1.2.2.17 | Bug Fixing on ML Model and Retraining |  | 30h | 2021-11-08 | 2021-11-12 | 99 | 0d |  |  | Shoaib Alauddin | 30h |
| 107 | 1.2.2.18 | Build Release | milestone | 6h? | 2021-11-15 | 2021-11-15 | 104, 105, 106 | 0d |  | finish no earlier than 2021-11-05 |  |  |
