# AP Automation Phase 3

Schedule from MS Project, 2021-07-05 to 2021-11-15, 6 hours a day, A marks actual dates.

## Calendars

- APA Calendar: Mon-Fri 11:00-13:00, 14:00-18:00; Sat-Sun off. Exceptions (off unless hours are given): 2021-07-20 to 2021-07-23 (Eid ul Adha), 2021-08-18 to 2021-08-19 (Yom-e-Ashura).

## Resources

| Resource | Group |
| --- | --- |
| Zeeshan Akhtar | Dev |
| Muhammad Naeem | QA |
| Faisal Ahmed Farooqui | Manager, Dev |
| Shoaib Alauddin | Dev |

## Schedule

| ID | WBS | Task | Duration | Start | Finish | Predecessors | Complete | Remaining | Baseline start | Baseline finish | Baseline duration | Total slack | Free slack | Constraint | Resources | Work | Actual work |
| --- | --- | --- | --- | --- | --- | --- | --- | --- | --- | --- | --- | --- | --- | --- | --- | --- | --- |
| 1 | 1 | **Development Sprints** | 90d? | 2021-07-05 A | 2021-11-15 |  | 35% | 58.94d? | 2021-07-05 | 2021-11-11 | 88d? | 0d |  |  |  | 2034h | 750h |
| 2 | 1.1 | **V2 Related Activities** | 28d | 2021-07-05 A | 2021-08-17 A |  | 100% |  | 2021-07-05 | 2021-08-17 | 28d |  |  |  |  | 204h | 204h |
| 3 | 1.1.1 | Testing V2 | 12h | 2021-07-08 A | 2021-07-09 A |  | 100% |  | 2021-07-08 | 2021-07-09 | 12h |  |  | start no earlier than 2021-07-08 | Muhammad Naeem | 12h | 12h |
| 4 | 1.1.2 | Distributed Load Testing R&D | 36h | 2021-07-12 A | 2021-07-19 A | 3 | 100% |  | 2021-07-12 | 2021-07-19 | 36h |  |  |  | Muhammad Naeem | 36h | 36h |
| 5 | 1.1.3 | Bug Fixing V2 | 18h | 2021-07-05 A | 2021-07-07 A |  | 100% |  | 2021-07-05 | 2021-07-07 | 18h |  |  |  | Zeeshan Akhtar; Faisal Ahmed Farooqui | 36h | 36h |
| 6 | 1.1.4 | Load Testing | 36h | 2021-07-26 A | 2021-08-02 A | 4 | 100% |  | 2021-07-26 | 2021-08-02 | 36h |  |  |  | Muhammad Naeem | 36h | 36h |
| 7 | 1.1.5 | Creation of Media, Production and System Setup Load Tests& Report Creation | 36h | 2021-08-03 A | 2021-08-10 A | 6 | 100% |  | 2021-08-03 | 2021-08-10 | 36h |  |  |  | Muhammad Naeem | 36h | 36h |
| 8 | 1.1.6 | R&D on DLT Infrastructure and Implementation | 18h | 2021-07-12 A | 2021-07-14 A | 5 | 100% |  | 2021-07-12 | 2021-07-14 | 18h |  |  |  | Faisal Ahmed Farooqui | 18h | 18h |
| 9 | 1.1.7 | Load and Stress testing of ScannerFunction | 18h | 2021-08-11 A | 2021-08-13 A | 7 | 100% |  | 2021-08-11 | 2021-08-13 | 18h |  |  |  | Muhammad Naeem | 18h | 18h |
| 10 | 1.1.8 | Result Analysis of Load and Stress testing of scanner function | 12h | 2021-08-16 A | 2021-08-17 A | 29, 9 | 100% |  | 2021-08-16 | 2021-08-17 | 12h |  |  |  | Faisal Ahmed Farooqui | 12h | 12h |
| 11 | 1.2 | **Development of Version V3 (New Feature Branch)** | 90d? | 2021-07-05 A | 2021-11-15 |  | 28% | 64.94d? | 2021-07-05 | 2021-11-11 | 88d? | 0d |  |  |  | 1830h | 546h |
| 12 | 1.2.1 | **Version 2.1.0** | 79d? | 2021-07-05 A | 2021-10-29 |  | 38% | 48.77d? | 2021-07-05 | 2021-10-18 | 70d? | 11d |  |  |  | 1350h | 546h |
| 13 | 1.2.1.1 | **Code Refactoring** | 21d | 2021-07-12 A | 2021-08-13 |  | 63% | 7.69d | 2021-07-12 | 2021-08-13 | 21d | 64d |  |  |  | 126h | 78h |
| 14 | 1.2.1.1.1 | Lookups | 11h | 2021-07-12 A | 2021-07-13 A | 5 | 100% |  | 2021-07-12 | 2021-07-13 | 11h |  |  |  | Zeeshan Akhtar | 12h | 12h |
| 15 | 1.2.1.1.2 | Enumeration to be moved to Common | 6h | 2021-07-13 A | 2021-07-14 A | 14 | 100% |  | 2021-07-13 | 2021-07-14 | 6h |  |  |  | Zeeshan Akhtar | 6h | 6h |
| 16 | 1.2.1.1.3 | DTOs to be removed for enumerations type tables | 6h | 2021-07-14 A | 2021-07-15 A | 15 | 100% |  | 2021-07-14 | 2021-07-15 | 6h |  |  |  | Zeeshan Akhtar | 6h | 6h |
| 17 | 1.2.1.1.4 | API calls to be refactored in Javascript | 12h | 2021-07-15 A | 2021-07-19 A | 16 | 100% |  | 2021-07-15 | 2021-07-19 | 12h |  |  |  | Zeeshan Akhtar | 12h | 12h |
| 18 | 1.2.1.1.5 | JavaScript component reorganization and restructuring | 28h | 2021-07-26 A | 2021-07-30 A | 17 | 100% |  | 2021-07-26 | 2021-07-30 | 28h |  |  |  | Zeeshan Akhtar | 30h | 30h |
| 19 | 1.2.1.1.6 | Polymorphism to be implemented for file saving mechanism | 10h | 2021-08-02 | 2021-08-03 | 18 |  |  | 2021-08-02 | 2021-08-03 | 10h | 72.33d |  |  | Zeeshan Akhtar | 12h |  |
| 20 | 1.2.1.1.7 | lambda functions for common routines | 8h | 2021-08-03 A | 2021-08-05 A | 19 | 100% |  | 2021-08-03 | 2021-08-05 | 8h |  |  |  | Zeeshan Akhtar | 12h | 12h |
| 21 | 1.2.1.1.8 | login related refactoring | 17h | 2021-08-06 | 2021-08-10 | 20 |  |  | 2021-08-06 | 2021-08-10 | 17h | 64d | 0d |  | Zeeshan Akhtar | 18h |  |
| 22 | 1.2.1.1.9 | Distributed Transaction Management (R&D Completed - feature not supported for .net) | 14h | 2021-08-10 | 2021-08-13 | 21 |  |  | 2021-08-10 | 2021-08-13 | 14h | 64d |  |  | Zeeshan Akhtar | 18h |  |
| 23 | 1.2.1.2 | Deployment Data Search Service (DSS) | 20h | 2021-07-05 A | 2021-07-07 A |  | 100% |  | 2021-07-05 | 2021-07-07 | 20h |  |  | start no earlier than 2021-07-05 | Shoaib Alauddin | 18h | 18h |
| 24 | 1.2.1.3 | Performance Improvement of DSS | 20h | 2021-07-08 A | 2021-07-12 A | 23 | 100% |  | 2021-07-08 | 2021-07-12 | 20h |  |  |  | Shoaib Alauddin | 18h | 18h |
| 25 | 1.2.1.4 | DSS Requirement Analysis for ML Data Requirement | 24h | 2021-07-14 A | 2021-07-26 A | 8 | 100% |  | 2021-07-14 | 2021-07-26 | 24h |  |  |  | Faisal Ahmed Farooqui | 24h | 24h |
| 26 | 1.2.1.5 | DLT Infrastructure Deployment | 24h | 2021-07-27 A | 2021-07-30 A | 25 | 100% |  | 2021-07-27 | 2021-07-30 | 24h |  |  |  | Faisal Ahmed Farooqui | 24h | 24h |
| 27 | 1.2.1.6 | Integration with APA | 20h | 2021-07-13 A | 2021-07-16 A | 24 | 100% |  | 2021-07-13 | 2021-07-16 | 20h |  |  |  | Shoaib Alauddin | 24h | 24h |
| 28 | 1.2.1.7 | ERD and data storage design for ML | 30h | 2021-07-19 | 2021-07-29 | 27 |  |  | 2021-07-19 | 2021-07-29 | 30h | 75d |  |  | Shoaib Alauddin | 30h |  |
| 29 | 1.2.1.8 | Analysis on Data Generation Strategies | 60h | 2021-08-02 A | 2021-08-13 A | 26, 28 | 100% |  | 2021-08-02 | 2021-08-13 | 60h |  |  |  | Faisal Ahmed Farooqui; Shoaib Alauddin | 90h | 90h |
| 30 | 1.2.1.9 | Simulation of Data Generation for decission making | 12h | 2021-08-16 A | 2021-08-17 A | 29 | 100% |  | 2021-08-16 | 2021-08-17 | 12h |  |  |  | Shoaib Alauddin | 12h | 12h |
| 31 | 1.2.1.10 | Data Preparation, DSS Updation according to new Data Generation Strategies | 36h | 2021-08-20 A | 2021-08-27 A | 30 | 100% |  | 2021-08-18 | 2021-08-25 | 36h |  |  |  | Shoaib Alauddin | 36h | 36h |
| 32 | 1.2.1.11 | Requirement Understanding | 18h | 2021-08-16 A | 2021-08-20 A | 9 | 100% |  | 2021-08-16 | 2021-08-18 | 18h |  |  |  | Muhammad Naeem | 18h | 18h |
| 33 | 1.2.1.12 | ModelScanner Lambda Updates | 12h | 2021-08-20 A | 2021-08-23 A | 10 | 100% |  | 2021-08-18 | 2021-08-19 | 12h |  |  |  | Faisal Ahmed Farooqui | 12h | 12h |
| 34 | 1.2.1.13 | DSS Integration Logic in APA | 24h | 2021-08-24 A | 2021-08-27 A | 33 | 100% |  | 2021-08-20 | 2021-08-25 | 24h |  |  |  | Faisal Ahmed Farooqui | 24h | 24h |

| ID | WBS | Task | Type | Duration | Start | Finish | Predecessors | Complete | Baseline start | Baseline finish | Baseline duration | Total slack | Free slack | Resources | Work | Actual work |
| --- | --- | --- | --- | --- | --- | --- | --- | --- | --- | --- | --- | --- | --- | --- | --- | --- |
| 35 | 1.2.1.14 | **Business Logic for Invoice Routing** |  | 12d | 2021-08-16 A | 2021-09-02 A |  | 100% | 2021-08-16 | 2021-08-31 | 10d |  |  |  | 72h | 72h |
| 36 | 1.2.1.14.1 | SP creation |  | 24h | 2021-08-16 A | 2021-08-23 A | 13 | 100% | 2021-08-16 | 2021-08-19 | 24h |  |  | Zeeshan Akhtar | 24h | 24h |
| 37 | 1.2.1.14.2 | Business Logic and Decission making for invoice routing |  | 24h | 2021-08-24 A | 2021-08-27 A | 36 | 100% | 2021-08-20 | 2021-08-25 | 24h |  |  | Zeeshan Akhtar | 24h | 24h |
| 38 | 1.2.1.14.3 | UI chnages (if any) - Dashboard for discrepant invoices |  | 24h | 2021-08-30 A | 2021-09-02 A | 37 | 100% | 2021-08-26 | 2021-08-31 | 24h |  |  | Zeeshan Akhtar | 24h | 24h |
| 39 | 1.2.1.15 | R&D On ML Models and Existing researches on similar problems |  | 48h | 2021-08-30 | 2021-09-08 | 31 |  | 2021-08-26 | 2021-09-06 | 48h | 0d |  | Shoaib Alauddin | 48h |  |
| 40 | 1.2.1.16 | Test Plan Creation |  | 24h | 2021-08-23 A | 2021-08-26 A | 32, 27 | 100% | 2021-08-19 | 2021-08-24 | 24h |  |  | Muhammad Naeem | 24h | 24h |
| 41 | 1.2.1.17 | Test Case Creation |  | 12h | 2021-08-27 A | 2021-08-30 A | 40 | 100% | 2021-08-25 | 2021-08-26 | 12h |  |  | Muhammad Naeem | 12h | 12h |
| 42 | 1.2.1.18 | Detailed Test Case Writing |  | 18h | 2021-08-31 A | 2021-09-02 A | 41 | 100% | 2021-08-27 | 2021-08-31 | 18h |  |  | Muhammad Naeem | 18h | 18h |
| 43 | 1.2.1.19 | Discussions And Management Activities for Development & QA |  | 18h | 2021-08-30 A | 2021-09-01 A | 34 | 100% | 2021-08-26 | 2021-08-30 | 18h |  |  | Faisal Ahmed Farooqui | 18h | 18h |
| 44 | 1.2.1.20 | Build Release |  | 24h | 2021-09-02 A | 2021-09-07 A | 43 | 100% | 2021-08-31 | 2021-09-03 | 24h |  |  | Faisal Ahmed Farooqui | 24h | 24h |
| 45 | 1.2.1.21 | Smoke Test Execution |  | 12h | 2021-09-03 | 2021-09-06 | 42 |  | 2021-09-01 | 2021-09-02 | 12h | 41d | 0d | Muhammad Naeem | 12h |  |
| 46 | 1.2.1.22 | Sanity Test Execution |  | 18h | 2021-09-07 | 2021-09-09 | 45 |  | 2021-09-03 | 2021-09-07 | 18h | 41d | 0d | Muhammad Naeem | 18h |  |
| 47 | 1.2.1.23 | Functional Test Execution |  | 36h | 2021-09-10 | 2021-09-17 | 46 |  | 2021-09-08 | 2021-09-15 | 36h | 41d |  | Muhammad Naeem | 36h |  |
| 48 | 1.2.1.24 | Bug Fixing for Business Logic for Invoice Routing |  | 24h | 2021-09-03 | 2021-09-08 | 35 |  | 2021-09-01 | 2021-09-06 | 24h | 0d |  | Zeeshan Akhtar | 24h |  |
| 49 | 1.2.1.25 | Bug Fixing Data Search Service |  | 24h | 2021-09-09 | 2021-09-14 | 39 |  | 2021-09-07 | 2021-09-10 | 24h | 0d |  | Shoaib Alauddin | 24h |  |
| 50 | 1.2.1.26 | Bug Fixing Related Discussions And Management Activities |  | 24h | 2021-09-08 | 2021-09-13 | 44 |  | 2021-09-06 | 2021-09-09 | 24h | 4d | 0d | Faisal Ahmed Farooqui | 24h |  |
| 51 | 1.2.1.27 | Results and Data Analysis of DSS for ML Models |  | 24h | 2021-09-14 | 2021-09-17 | 50 |  | 2021-09-10 | 2021-09-15 | 24h | 4d | 0d | Faisal Ahmed Farooqui | 24h |  |
| 52 | 1.2.1.28 | Development Finalization | milestone | 0h | 2021-09-08 | 2021-09-08 | 48 |  | 2021-09-07 | 2021-09-10 | 24h | 0d |  | Zeeshan Akhtar |  |  |
| 53 | 1.2.1.29 | Dashboard, Invoice Reposting, Email to Admin for Suggestion, Employee Selection Popup |  | 42h | 2021-09-09 | 2021-09-17 | 52 |  |  |  |  | 0d |  | Zeeshan Akhtar | 42h |  |
| 54 | 1.2.1.30 | TestCase updation on updated requirements (Task 53) |  | 12h | 2021-09-20 | 2021-09-21 | 53 |  |  |  |  | 0d |  | Muhammad Naeem | 12h |  |
| 55 | 1.2.1.31 | Build Release | milestone | 6h? | 2021-09-20 | 2021-09-20 | 53, 51 |  | 2021-09-13 | 2021-09-13 | 6h? | 39d | 4d | Faisal Ahmed Farooqui | 6h |  |
| 56 | 1.2.1.32 | Testing |  | 30h | 2021-09-22 | 2021-09-28 | 54 |  |  |  |  | 0d |  | Muhammad Naeem | 30h |  |
| 57 | 1.2.1.33 | Bug fixing |  | 30h | 2021-09-20 | 2021-09-24 | 53 |  |  |  |  | 2d | 0d | Zeeshan Akhtar | 30h |  |
| 58 | 1.2.1.34 | Build Release |  | 6h? | 2021-09-27 | 2021-09-27 | 57, 55 |  |  |  |  | 35d |  |  |  |  |

| ID | WBS | Task | Type | Duration | Start | Finish | Predecessors | Baseline start | Baseline finish | Baseline duration | Total slack | Free slack | Resources | Work |
| --- | --- | --- | --- | --- | --- | --- | --- | --- | --- | --- | --- | --- | --- | --- |
| 59 | 1.2.1.35 | **New Features on Core APA Version 2.2.0** |  | 30d? | 2021-09-20 | 2021-10-29 |  | 2021-09-13 | 2021-10-18 | 26d? | 4d |  |  | 396h |
| 60 | 1.2.1.35.1 | **AP Cash Information Integration** |  | 19d? | 2021-09-20 | 2021-10-14 |  | 2021-09-13 | 2021-10-01 | 15d? | 4d |  |  | 198h |
| 61 | 1.2.1.35.1.1 | Requirement Analysis |  | 18h | 2021-09-20 | 2021-09-22 | 51 | 2021-09-16 | 2021-09-20 | 18h | 4d | 0d | Faisal Ahmed Farooqui | 18h |
| 62 | 1.2.1.35.1.2 | Analysis on Design related Change |  | 12h | 2021-09-27 | 2021-09-28 | 57 | 2021-09-13 | 2021-09-14 | 12h | 2d | 0d | Zeeshan Akhtar | 12h |
| 63 | 1.2.1.35.1.3 | Requirement Understanding |  | 12h | 2021-09-29 | 2021-09-30 | 56 | 2021-09-16 | 2021-09-17 | 12h | 0d |  | Muhammad Naeem | 12h |
| 64 | 1.2.1.35.1.4 | ERD Updates |  | 12h | 2021-09-29 | 2021-09-30 | 62 | 2021-09-15 | 2021-09-16 | 12h | 2d | 0d | Zeeshan Akhtar | 12h |
| 65 | 1.2.1.35.1.5 | Changes in Data Sync Functionality |  | 12h | 2021-10-01 | 2021-10-04 | 64 | 2021-09-17 | 2021-09-20 | 12h | 2d | 0d | Zeeshan Akhtar | 12h |
| 66 | 1.2.1.35.1.6 | Test Plan Creation |  | 12h | 2021-10-01 | 2021-10-04 | 63 | 2021-09-20 | 2021-09-21 | 12h | 0d |  | Muhammad Naeem | 12h |
| 67 | 1.2.1.35.1.7 | Test Case Creation |  | 18h | 2021-10-05 | 2021-10-07 | 66 | 2021-09-22 | 2021-09-24 | 18h | 0d |  | Muhammad Naeem | 18h |
| 68 | 1.2.1.35.1.8 | Design Changes And Testing Plan |  | 24h | 2021-09-23 | 2021-09-28 | 61 | 2021-09-21 | 2021-09-24 | 24h | 4d | 0d | Faisal Ahmed Farooqui | 24h |
| 69 | 1.2.1.35.1.9 | SP Updates |  | 12h | 2021-10-05 | 2021-10-06 | 65 | 2021-09-21 | 2021-09-22 | 12h | 2d | 0d | Zeeshan Akhtar | 12h |
| 70 | 1.2.1.35.1.10 | UI Updates |  | 18h | 2021-10-07 | 2021-10-11 | 69 | 2021-09-23 | 2021-09-27 | 18h | 2d | 0d | Zeeshan Akhtar | 18h |
| 71 | 1.2.1.35.1.11 | Business Logic Implementation |  | 24h | 2021-09-29 | 2021-10-04 | 68 | 2021-09-27 | 2021-09-30 | 24h | 4d | 0d | Faisal Ahmed Farooqui | 24h |
| 72 | 1.2.1.35.1.12 | Detailed Functional Tests Writing |  | 24h | 2021-10-08 | 2021-10-13 | 67 | 2021-09-27 | 2021-09-30 | 24h | 0d |  | Muhammad Naeem | 24h |
| 73 | 1.2.1.35.1.13 | Build Release | milestone | 6h? | 2021-10-14 | 2021-10-14 | 70, 71, 72 | 2021-10-01 | 2021-10-01 | 6h? | 22d |  |  |  |
| 74 | 1.2.1.35.2 | **AP Invoice Model testing** |  | 14d | 2021-10-05 | 2021-10-22 |  | 2021-09-28 | 2021-10-12 | 11d | 0d |  |  | 132h |
| 75 | 1.2.1.35.2.1 | Requirement Analysis |  | 18h | 2021-10-05 | 2021-10-07 | 71 | 2021-10-01 | 2021-10-05 | 18h | 4d | 0d | Faisal Ahmed Farooqui | 18h |
| 76 | 1.2.1.35.2.2 | Analysis on Design Change |  | 12h | 2021-10-12 | 2021-10-13 | 70 | 2021-09-28 | 2021-09-29 | 12h | 2d | 0d | Zeeshan Akhtar | 12h |
| 77 | 1.2.1.35.2.3 | Requirement Understanding |  | 12h | 2021-10-14 | 2021-10-15 | 72 | 2021-10-01 | 2021-10-04 | 12h | 0d |  | Muhammad Naeem | 12h |
| 78 | 1.2.1.35.2.4 | UI Changes |  | 30h | 2021-10-14 | 2021-10-20 | 76 | 2021-09-30 | 2021-10-06 | 30h | 2d | 0d | Zeeshan Akhtar | 30h |
| 79 | 1.2.1.35.2.5 | Business Logic Implementation |  | 30h | 2021-10-08 | 2021-10-14 | 75 | 2021-10-06 | 2021-10-12 | 30h | 4d | 0d | Faisal Ahmed Farooqui | 30h |
| 80 | 1.2.1.35.2.6 | Test Case Creation |  | 30h | 2021-10-18 | 2021-10-22 | 77 | 2021-10-05 | 2021-10-11 | 30h | 0d |  | Muhammad Naeem | 30h |
| 81 | 1.2.1.35.3 | Build Release | milestone | 6h? | 2021-10-25 | 2021-10-25 | 74 | 2021-10-13 | 2021-10-13 | 6h? | 15d |  |  |  |
| 82 | 1.2.1.35.4 | Bug Fixing of Cash Info |  | 18h | 2021-10-21 | 2021-10-25 | 78 | 2021-10-07 | 2021-10-11 | 18h | 2d | 0d | Zeeshan Akhtar | 18h |
| 83 | 1.2.1.35.5 | Bug Fixing Model Testing |  | 24h | 2021-10-15 | 2021-10-20 | 79 | 2021-10-13 | 2021-10-18 | 24h | 4d | 0d | Faisal Ahmed Farooqui | 24h |
| 84 | 1.2.1.35.6 | Test Execution |  | 24h | 2021-10-25 | 2021-10-28 | 80 | 2021-10-12 | 2021-10-15 | 24h | 0d |  | Muhammad Naeem | 24h |
| 85 | 1.2.1.35.7 | Build Release (Final for Ver 2.1.0) | milestone | 6h? | 2021-10-29 | 2021-10-29 | 82, 84 | 2021-10-18 | 2021-10-18 | 6h? | 11d |  |  |  |

| ID | WBS | Task | Type | Duration | Start | Finish | Predecessors | Baseline start | Baseline finish | Baseline duration | Total slack | Free slack | Constraint | Resources | Work |
| --- | --- | --- | --- | --- | --- | --- | --- | --- | --- | --- | --- | --- | --- | --- | --- |
| 86 | 1.2.2 | **Version 3.0.0** |  | 44d? | 2021-09-15 | 2021-11-15 |  | 2021-09-13 | 2021-11-11 | 44d? | 0d |  |  |  | 480h |
| 87 | 1.2.2.1 | **Data Analysis** |  | 10d | 2021-09-15 | 2021-09-28 |  | 2021-09-13 | 2021-09-24 | 10d | 0d |  |  |  | 60h |
| 88 | 1.2.2.1.1 | Gathering Data from DSS |  | 18h | 2021-09-15 | 2021-09-17 | 49 | 2021-09-13 | 2021-09-15 | 18h | 0d |  |  | Shoaib Alauddin | 18h |
| 89 | 1.2.2.1.2 | Data Preparation |  | 18h | 2021-09-20 | 2021-09-22 | 88 | 2021-09-16 | 2021-09-20 | 18h | 0d |  |  | Shoaib Alauddin | 18h |
| 90 | 1.2.2.1.3 | Exploratory Data Analysis - Data Visualization |  | 24h | 2021-09-23 | 2021-09-28 | 89 | 2021-09-21 | 2021-09-24 | 24h | 0d |  |  | Shoaib Alauddin | 24h |
| 91 | 1.2.2.2 | **R&D on ML Algos** |  | 9d | 2021-09-29 | 2021-10-11 | 87 | 2021-09-27 | 2021-10-07 | 9d | 0d |  |  |  | 54h |
| 92 | 1.2.2.2.1 | Decission making on ICR - based on current R&D and Data Analysis in hand |  | 12h | 2021-09-29 | 2021-09-30 |  | 2021-09-27 | 2021-09-28 | 12h | 0d |  |  | Shoaib Alauddin | 12h |
| 93 | 1.2.2.2.2 | **R&D on Existing ML Models to consider for our usage** |  | 7d | 2021-10-01 | 2021-10-11 | 92 | 2021-09-29 | 2021-10-07 | 7d | 0d |  |  |  | 42h |
| 94 | 1.2.2.2.2.1 | Finding most popular considerable ML Models |  | 12h | 2021-10-01 | 2021-10-04 |  | 2021-09-29 | 2021-09-30 | 12h | 0d |  |  | Shoaib Alauddin | 12h |
| 95 | 1.2.2.2.2.2 | R&D on each seelcted Models (4 Models * 4 hrs each) |  | 18h | 2021-10-05 | 2021-10-07 | 94 | 2021-10-01 | 2021-10-05 | 18h | 0d |  |  | Shoaib Alauddin | 18h |
| 96 | 1.2.2.2.2.3 | Decission making on Models for further development |  | 12h | 2021-10-08 | 2021-10-11 | 95 | 2021-10-06 | 2021-10-07 | 12h | 0d |  |  | Shoaib Alauddin | 12h |
| 97 | 1.2.2.3 | Model Architecture Finalization & Creation |  | 30h | 2021-10-12 | 2021-10-18 | 91 | 2021-10-08 | 2021-10-14 | 30h | 0d |  |  | Shoaib Alauddin | 30h |
| 98 | 1.2.2.4 | Model Training |  | 30h | 2021-10-19 | 2021-10-25 | 97 | 2021-10-15 | 2021-10-21 | 30h | 0d |  |  | Shoaib Alauddin | 30h |
| 99 | 1.2.2.5 | Model Testing & Retraining |  | 30h | 2021-10-26 | 2021-11-01 | 98 | 2021-10-22 | 2021-10-28 | 30h | 0d |  |  | Shoaib Alauddin | 30h |
| 100 | 1.2.2.6 | Requirement Understanding |  | 18h | 2021-10-29 | 2021-11-02 | 84 | 2021-10-18 | 2021-10-20 | 18h | 0d |  |  | Muhammad Naeem | 18h |
| 101 | 1.2.2.7 | Analysis on APA Integration with ML Model Service |  | 24h | 2021-10-21 | 2021-10-26 | 83 | 2021-10-19 | 2021-10-22 | 24h | 4d | 0d |  | Faisal Ahmed Farooqui | 24h |
| 102 | 1.2.2.8 | ML results utilization & Integration Logic Implementation |  | 18h | 2021-10-26 | 2021-10-28 | 82 | 2021-10-12 | 2021-10-14 | 18h | 2d | 0d |  | Zeeshan Akhtar | 18h |
| 103 | 1.2.2.9 | Business Logic Implementation |  | 30h | 2021-10-27 | 2021-11-02 | 101 | 2021-10-25 | 2021-10-29 | 30h | 4d | 0d |  | Faisal Ahmed Farooqui | 30h |
| 104 | 1.2.2.10 | Model Deployment |  | 24h | 2021-11-02 | 2021-11-05 | 99 | 2021-10-29 | 2021-11-03 | 24h | 0d |  |  | Shoaib Alauddin | 24h |
| 105 | 1.2.2.11 | Test Case Creation |  | 30h | 2021-11-03 | 2021-11-09 | 100 | 2021-10-21 | 2021-10-27 | 30h | 0d |  |  | Muhammad Naeem | 30h |
| 106 | 1.2.2.12 | UI Changes |  | 30h | 2021-10-29 | 2021-11-04 | 102 | 2021-10-15 | 2021-10-21 | 30h | 2d | 0d |  | Zeeshan Akhtar | 30h |
| 107 | 1.2.2.13 | First Build Release | milestone | 6h? | 2021-11-05 | 2021-11-05 | 103, 106 | 2021-11-01 | 2021-11-01 | 6h? | 6d |  |  |  |  |
| 108 | 1.2.2.14 | Test Execution |  | 24h | 2021-11-10 | 2021-11-15 | 105 | 2021-10-28 | 2021-11-02 | 24h | 0d |  |  | Muhammad Naeem | 24h |
| 109 | 1.2.2.15 | Bug Fixing at APA side |  | 24h | 2021-11-05 | 2021-11-10 | 106 | 2021-10-22 | 2021-10-27 | 24h | 2d |  |  | Zeeshan Akhtar | 24h |
| 110 | 1.2.2.16 | Discussions on Bugs and ML Results |  | 24h | 2021-11-03 | 2021-11-08 | 103 | 2021-11-01 | 2021-11-04 | 24h | 4d |  |  | Faisal Ahmed Farooqui | 24h |
| 111 | 1.2.2.17 | Bug Fixing on ML Model and Retraining |  | 30h | 2021-11-08 | 2021-11-12 | 104 | 2021-11-04 | 2021-11-10 | 30h | 0d |  |  | Shoaib Alauddin | 30h |
| 112 | 1.2.2.18 | Build Release | milestone | 6h? | 2021-11-15 | 2021-11-15 | 109, 110, 111 | 2021-11-11 | 2021-11-11 | 6h? | 0d |  | finish no earlier than 2021-11-05 |  |  |
