# AP Automation Phase 4

Schedule from MS Project, 2022-02-01 to 2022-04-15, 6 hours a day.

## Calendars

- APA Calendar: Mon-Fri 11:00-13:00, 14:00-18:00; Sat-Sun off. Exceptions (off unless hours are given): 2022-03-07 to 2022-03-08 (Imran's visit).

## Resources

| Resource | Group |
| --- | --- |
| Zeeshan Akhtar | Dev |
| Muhammad Naeem | QA |
| Faisal Ahmed Farooqui | Manager, Dev |
| Shoaib Alauddin | Dev |

## Schedule

| ID | WBS | Task | Type | Duration | Start | Finish | Predecessors | Baseline start | Baseline finish | Baseline duration | Total slack | Free slack | Resources | Work |
| --- | --- | --- | --- | --- | --- | --- | --- | --- | --- | --- | --- | --- | --- | --- |
| 1 | 1 | **Version 3.0.2** |  | 27.67d | 2022-02-01 | 2022-03-14 |  |  |  |  | 8.33d |  |  | 384h |
| 2 | 1.1 | Load Test Execution on Version 3.0.1 |  | 24h | 2022-02-01 | 2022-02-04 |  |  |  |  | 27d | 0d | Muhammad Naeem | 24h |
| 3 | 1.2 | Application Side Logging Implementation to capture User Activity |  | 24h | 2022-02-01 | 2022-02-04 |  |  |  |  | 31.33d | 0d | Faisal Ahmed Farooqui | 24h |
| 4 | 1.3 | Change Requests V3 |  | 82h | 2022-02-07 | 2022-02-24 | 3 |  |  |  | 13.33d | 0d | Faisal Ahmed Farooqui | 82h |
| 5 | 1.4 | Bug Fixings V3 |  | 112h | 2022-02-01 | 2022-02-25 |  |  |  |  | 10.33d | 0d | Zeeshan Akhtar | 112h |
| 6 | 1.5 | Test Execution |  | 82h | 2022-02-07 | 2022-02-24 | 2 |  |  |  | 11.33d | 0d | Muhammad Naeem | 82h |
| 7 | 1.6 | Test Automation Cycle 1 |  | 30h | 2022-02-24 | 2022-03-03 | 6 |  |  |  | 11.33d | 0d | Muhammad Naeem | 30h |
| 8 | 1.7 | Test Automation Cycle 2 |  | 30h | 2022-03-03 | 2022-03-14 | 7 |  |  |  | 11.33d | 0d | Muhammad Naeem | 30h |
| 9 | 2 | **Version 4.0.1** |  | 40.67d? | 2022-02-01 | 2022-03-31 |  | 2021-09-13 | 2021-11-11 | 44d? | 0d |  |  | 414h |
| 10 | 2.1 | Training on AutoML based Frameworks |  | 24h | 2022-02-01 | 2022-02-04 |  |  |  |  | 0d |  | Shoaib Alauddin | 24h |
| 11 | 2.2 | Results comparisions with different ML-Models (SVM, Different AutoML Frameworks) |  | 12h | 2022-02-07 | 2022-02-08 | 10 |  |  |  | 0d |  | Shoaib Alauddin | 12h |
| 12 | 2.3 | Model Architecture Finalization & Creation |  | 12h | 2022-02-09 | 2022-02-10 | 11 | 2021-10-08 | 2021-10-14 | 30h | 0d |  | Shoaib Alauddin | 12h |
| 13 | 2.4 | Model Training |  | 30h | 2022-02-11 | 2022-02-17 | 12 | 2021-10-15 | 2021-10-21 | 30h | 0d |  | Shoaib Alauddin | 30h |
| 14 | 2.5 | Infrastructure Creation for ML Integration with APA |  | 18h | 2022-02-18 | 2022-02-22 | 13 | 2021-10-12 | 2021-10-14 | 18h | 0d |  | Shoaib Alauddin | 18h |
| 15 | 2.6 | Model Package Creation |  | 60h | 2022-02-23 | 2022-03-10 | 14 |  |  |  | 0d |  | Shoaib Alauddin | 60h |
| 16 | 2.7 | Model Deployment |  | 36h | 2022-03-11 | 2022-03-18 | 15 | 2021-10-29 | 2021-11-03 | 24h | 0d |  | Shoaib Alauddin | 36h |
| 17 | 2.8 | Model Deployment Help |  | 36h | 2022-02-24 | 2022-03-04 | 4 |  |  |  | 8.33d | 0d | Faisal Ahmed Farooqui | 36h |
| 18 | 2.9 | Business Logic Implementation for Invoice Creation based on ML-Model outcome |  | 24h | 2022-03-04 | 2022-03-14 | 17 | 2021-10-25 | 2021-10-29 | 30h | 8.33d | 0d | Faisal Ahmed Farooqui | 24h |
| 19 | 2.10 | Model Testing & Retraining |  | 24h | 2022-03-21 | 2022-03-24 | 16 | 2021-10-22 | 2021-10-28 | 30h | 0d |  | Shoaib Alauddin | 24h |
| 20 | 2.11 | Test Case Creation |  | 30h | 2022-03-14 | 2022-03-21 | 8 | 2021-10-21 | 2021-10-27 | 30h | 11.33d | 0d | Muhammad Naeem | 30h |
| 21 | 2.12 | First Build Release | milestone | 6h? | 2022-03-14 | 2022-03-15 | 18 | 2021-11-01 | 2021-11-01 | 6h? | 8.33d | 0d | Faisal Ahmed Farooqui | 6h |
| 22 | 2.13 | Test Execution |  | 24h | 2022-03-21 | 2022-03-25 | 20 | 2021-10-28 | 2021-11-02 | 24h | 11.33d | 0d | Muhammad Naeem | 24h |
| 23 | 2.14 | Bug Fixing in BL of ML-Model output utilization side |  | 24h | 2022-03-15 | 2022-03-21 | 21 | 2021-10-22 | 2021-10-27 | 24h | 8.33d | 0d | Faisal Ahmed Farooqui | 24h |
| 24 | 2.15 | Bug Fixing on ML Model and Retraining |  | 24h | 2022-03-25 | 2022-03-30 | 19 | 2021-11-04 | 2021-11-10 | 30h | 0d |  | Shoaib Alauddin | 24h |
| 25 | 2.16 | Build Release |  | 6h? | 2022-03-21 | 2022-03-22 | 23 | 2021-11-11 | 2021-11-11 | 6h? | 8.33d | 0d | Faisal Ahmed Farooqui | 6h |
| 26 | 2.17 | Test Execution |  | 24h | 2022-03-25 | 2022-03-31 | 22 |  |  |  | 11.33d |  | Muhammad Naeem | 24h |

| ID | WBS | Task | Type | Duration | Start | Finish | Predecessors | Baseline start | Baseline finish | Baseline duration | Total slack | Free slack | Resources | Work |
| --- | --- | --- | --- | --- | --- | --- | --- | --- | --- | --- | --- | --- | --- | --- |
| 27 | 3 | **Version 4.0.2** |  | 33.33d? | 2022-02-25 | 2022-04-15 |  | 2021-09-13 | 2021-11-11 | 44d? | 0d |  |  | 270h |
| 28 | 3.1 | Files removal from S3 when operation is cancelled |  | 24h | 2022-02-25 | 2022-03-03 | 5 |  |  |  | 14.33d | 0d | Zeeshan Akhtar | 24h |
| 29 | 3.2 | Stamping Configuration: Front/Back Cover Pages, Existing Page with Page Selection |  | 18h | 2022-03-03 | 2022-03-10 | 28 |  |  |  | 14.33d | 0d | Zeeshan Akhtar | 18h |
| 30 | 3.3 | DB Side Logging |  | 24h | 2022-03-10 | 2022-03-16 | 29 |  |  |  | 10.33d | 0d | Zeeshan Akhtar | 24h |
| 31 | 3.4 | **Code Refactoring** |  | 12d | 2022-03-16 | 2022-04-01 |  |  |  |  | 10.33d |  |  | 108h |
| 32 | 3.4.1 | Replacement of Set statement |  | 18h | 2022-03-16 | 2022-03-21 | 30 |  |  |  | 10.33d | 0d | Zeeshan Akhtar | 18h |
| 33 | 3.4.2 | Fixing of Javascript dependencies |  | 18h | 2022-03-21 | 2022-03-24 | 32 |  |  |  | 10.33d | 0d | Zeeshan Akhtar | 18h |
| 34 | 3.4.3 | Hyperlink Link Fixing to utilize "React Route" for client side navigation |  | 12h | 2022-03-24 | 2022-03-28 | 33 |  |  |  | 10.33d | 0d | Zeeshan Akhtar | 12h |
| 35 | 3.4.4 | Creation of separate JS file to API Calls |  | 24h | 2022-03-28 | 2022-04-01 | 34 |  |  |  | 10.33d |  | Zeeshan Akhtar | 24h |
| 36 | 3.4.5 | Redux implementation for better Data handling/caching on client side |  | 18h | 2022-03-22 | 2022-03-25 | 25 |  |  |  | 8.33d | 0d | Faisal Ahmed Farooqui | 18h |
| 37 | 3.4.6 | Login - Utilization of Security Token in place of plain user data |  | 18h | 2022-03-25 | 2022-03-30 | 36 |  |  |  | 8.33d | 0d | Faisal Ahmed Farooqui | 18h |
| 38 | 3.5 | SSO Fixing for AWS |  | 18h | 2022-03-30 | 2022-04-04 | 37 |  |  |  | 8.33d | 5.33d | Faisal Ahmed Farooqui | 18h |
| 39 | 3.6 | Analysis on Optimization of Data Search Service |  | 24h | 2022-03-31 | 2022-04-05 | 24 |  |  |  | 0d |  | Shoaib Alauddin | 24h |
| 40 | 3.7 | Implementation of Data Search Service Optimization |  | 24h | 2022-04-06 | 2022-04-11 | 39 |  |  |  | 0d |  | Shoaib Alauddin | 24h |
| 41 | 3.8 | Build Release | milestone | 6h? | 2022-04-12 | 2022-04-12 | 40, 38 |  |  |  | 3d |  | Faisal Ahmed Farooqui | 6h |
| 42 | 3.9 | Identification of gaps in ML-Model implementations |  | 24h | 2022-04-12 | 2022-04-15 | 40 |  |  |  | 0d |  | Shoaib Alauddin | 24h |
