# AP Automation Phase 4

Schedule from MS Project, 2022-02-01 to 2022-04-15, 6 hours a day, A marks actual dates.

## Calendars

- APA Calendar: Mon-Fri 11:00-13:00, 14:00-18:00; Sat-Sun off. Exceptions (off unless hours are given): 2022-03-07 to 2022-03-08 (Imran's visit).

## Resources

| Resource | Group |
| --- | --- |
| Zeeshan Akhtar | Dev |
| Muhammad Naeem | QA |
| Faisal Ahmed Farooqui | Manager, Dev |
| Shoaib Alauddin | Dev |

## Schedule

| ID | WBS | Task | Type | Duration | Start | Finish | Predecessors | Complete | Remaining | Baseline start | Baseline finish | Baseline duration | Total slack | Free slack | Resources | Work | Actual work |
| --- | --- | --- | --- | --- | --- | --- | --- | --- | --- | --- | --- | --- | --- | --- | --- | --- | --- |
| 1 | 1 | **Version 3.0.2** |  | 27.67d | 2022-02-01 A | 2022-03-14 |  | 85% | 4.21d |  |  |  | 11.33d |  |  | 394h | 334h |
| 2 | 1.1 | Load Test Execution on Version 3.0.1 |  | 24h | 2022-02-01 A | 2022-02-04 A |  | 100% |  |  |  |  |  |  | Muhammad Naeem | 24h | 24h |
| 3 | 1.2 | Application Side Logging Implementation to capture User Activity |  | 24h | 2022-02-01 A | 2022-02-04 A |  | 100% |  |  |  |  |  |  | Faisal Ahmed Farooqui | 24h | 24h |
| 4 | 1.3 | Change Requests V3 |  | 92h | 2022-02-07 A | 2022-02-28 A | 3 | 100% |  |  |  |  |  |  | Faisal Ahmed Farooqui | 92h | 92h |
| 5 | 1.4 | Bug Fixings V3 |  | 112h | 2022-02-01 A | 2022-02-25 A |  | 100% |  |  |  |  |  |  | Zeeshan Akhtar | 112h | 112h |
| 6 | 1.5 | Test Execution |  | 82h | 2022-02-07 A | 2022-02-24 A | 2 | 100% |  |  |  |  |  |  | Muhammad Naeem | 82h | 82h |
| 7 | 1.6 | Test Automation Cycle 1 |  | 30h | 2022-02-24 | 2022-03-03 | 6 |  |  |  |  |  | 11.33d | 0d | Muhammad Naeem | 30h |  |
| 8 | 1.7 | Test Automation Cycle 2 |  | 30h | 2022-03-03 | 2022-03-14 | 7 |  |  |  |  |  | 11.33d | 0d | Muhammad Naeem | 30h |  |
| 9 | 2 | **Version 4.0.1** |  | 45.33d? | 2022-02-01 A | 2022-04-07 |  | 38% | 28.25d? | 2021-09-13 | 2021-11-11 | 44d? | 6.67d |  |  | 414h | 156h |
| 10 | 2.1 | Training on AutoML based Frameworks |  | 24h | 2022-02-01 A | 2022-02-04 A |  | 100% |  |  |  |  |  |  | Shoaib Alauddin | 24h | 24h |
| 11 | 2.2 | Results comparisions with different ML-Models (SVM, Different AutoML Frameworks) |  | 12h | 2022-02-07 A | 2022-02-08 A | 10 | 100% |  |  |  |  |  |  | Shoaib Alauddin | 12h | 12h |
| 12 | 2.3 | Initial Model Architecture Finalization & Creation |  | 12h | 2022-02-09 A | 2022-02-10 A | 11 | 100% |  | 2021-10-08 | 2021-10-14 | 30h |  |  | Shoaib Alauddin | 12h | 12h |
| 13 | 2.4 | Model Training |  | 30h | 2022-02-11 A | 2022-02-17 A | 12 | 100% |  | 2021-10-15 | 2021-10-21 | 30h |  |  | Shoaib Alauddin | 30h | 30h |
| 14 | 2.5 | Infrastructure Creation for ML Integration with APA |  | 18h | 2022-02-18 A | 2022-02-22 A | 13 | 100% |  | 2021-10-12 | 2021-10-14 | 18h |  |  | Shoaib Alauddin | 18h | 18h |
| 15 | 2.6 | Model Package Creation |  | 60h | 2022-02-23 A | 2022-03-10 A | 14 | 100% |  |  |  |  |  |  | Shoaib Alauddin | 60h | 60h |
| 16 | 2.7 | Model Deployment |  | 36h | 2022-03-11 | 2022-03-18 | 15 |  |  | 2021-10-29 | 2021-11-03 | 24h | 0d |  | Shoaib Alauddin | 36h |  |
| 17 | 2.8 | Model Deployment Help |  | 36h | 2022-03-10 | 2022-03-18 | 38 |  |  |  |  |  | 4.67d | 0d | Faisal Ahmed Farooqui | 36h |  |
| 18 | 2.9 | Business Logic Implementation for Invoice Creation based on ML-Model outcome |  | 24h | 2022-03-18 | 2022-03-24 | 17 |  |  | 2021-10-25 | 2021-10-29 | 30h | 4.67d | 0d | Faisal Ahmed Farooqui | 24h |  |
| 19 | 2.10 | Model Testing & Retraining |  | 24h | 2022-03-21 | 2022-03-24 | 16 |  |  | 2021-10-22 | 2021-10-28 | 30h | 0d |  | Shoaib Alauddin | 24h |  |
| 20 | 2.11 | Test Case Creation |  | 30h | 2022-03-14 | 2022-03-21 | 8 |  |  | 2021-10-21 | 2021-10-27 | 30h | 11.33d | 0d | Muhammad Naeem | 30h |  |
| 21 | 2.12 | First Build Release | milestone | 6h? | 2022-03-24 | 2022-03-25 | 18 |  |  | 2021-11-01 | 2021-11-01 | 6h? | 4.67d | 0d | Faisal Ahmed Farooqui | 6h |  |
| 22 | 2.13 | Test Execution |  | 24h | 2022-03-25 | 2022-03-31 | 20, 21 |  |  | 2021-10-28 | 2021-11-02 | 24h | 7.67d | 1d | Muhammad Naeem | 24h |  |
| 23 | 2.14 | Bug Fixing in BL of ML-Model output utilization side |  | 24h | 2022-03-25 | 2022-03-31 | 21 |  |  | 2021-10-22 | 2021-10-27 | 24h | 4.67d | 0d | Faisal Ahmed Farooqui | 24h |  |
| 24 | 2.15 | Bug Fixing on ML Model and Retraining |  | 24h | 2022-03-25 | 2022-03-30 | 19 |  |  | 2021-11-04 | 2021-11-10 | 30h | 0d |  | Shoaib Alauddin | 24h |  |
| 25 | 2.16 | Build Release |  | 6h? | 2022-03-31 | 2022-04-01 | 23 |  |  | 2021-11-11 | 2021-11-11 | 6h? | 4.67d | 0d | Faisal Ahmed Farooqui | 6h |  |
| 26 | 2.17 | Test Execution |  | 24h | 2022-04-01 | 2022-04-07 | 22, 25 |  |  |  |  |  | 6.67d |  | Muhammad Naeem | 24h |  |

| ID | WBS | Task | Type | Duration | Start | Finish | Predecessors | Complete | Remaining | Baseline start | Baseline finish | Baseline duration | Total slack | Free slack | Resources | Work | Actual work |
| --- | --- | --- | --- | --- | --- | --- | --- | --- | --- | --- | --- | --- | --- | --- | --- | --- | --- |
| 27 | 3 | **Version 4.0.2** |  | 33.33d? | 2022-02-25 A | 2022-04-15 |  | 15% | 28.4d? | 2021-09-13 | 2021-11-11 | 44d? | 0d |  |  | 243h | 42h |
| 28 | 3.1 | Stamping Configuration: Front/Back Cover Pages, Existing Page with Page Selection |  | 18h | 2022-02-25 A | 2022-03-02 A | 5 | 100% |  |  |  |  |  |  | Zeeshan Akhtar | 18h | 18h |
| 29 | 3.2 | Files removal from S3 when operation is cancelled |  | 24h | 2022-03-02 A | 2022-03-10 A | 28 | 100% |  |  |  |  |  |  | Zeeshan Akhtar | 24h | 24h |
| 30 | 3.3 | DB Side Logging |  | 24h | 2022-03-10 | 2022-03-16 | 29 |  |  |  |  |  | 10.67d | 0d | Zeeshan Akhtar | 17h |  |
| 31 | 3.4 | **Code Refactoring** |  | 17.67d | 2022-03-16 | 2022-04-11 |  |  |  |  |  |  | 4.67d |  |  | 70h |  |
| 32 | 3.4.1 | Replacement of Set statement |  | 14h | 2022-03-16 | 2022-03-21 | 30 |  |  |  |  |  | 10.67d | 0d | Zeeshan Akhtar [50%] | 7h |  |
| 33 | 3.4.2 | Fixing of Javascript dependencies |  | 18h | 2022-03-21 | 2022-03-24 | 32 |  |  |  |  |  | 10.67d | 0d | Zeeshan Akhtar [50%] | 9h |  |
| 34 | 3.4.3 | Hyperlink Link Fixing to utilize "React Route" for client side navigation |  | 12h | 2022-03-24 | 2022-03-28 | 33 |  |  |  |  |  | 10.67d | 0d | Zeeshan Akhtar [50%] | 6h |  |
| 35 | 3.4.4 | Creation of separate JS file to API Calls |  | 24h | 2022-03-28 | 2022-04-01 | 34 |  |  |  |  |  | 10.67d |  | Zeeshan Akhtar [50%] | 12h |  |
| 36 | 3.4.5 | Redux implementation for better Data handling/caching on client side |  | 18h | 2022-04-01 | 2022-04-06 | 25 |  |  |  |  |  | 4.67d | 0d | Faisal Ahmed Farooqui | 18h |  |
| 37 | 3.4.6 | Login - Utilization of Security Token in place of plain user data |  | 18h | 2022-04-06 | 2022-04-11 | 36 |  |  |  |  |  | 4.67d |  | Faisal Ahmed Farooqui | 18h |  |
| 38 | 3.5 | SSO Fixing for AWS |  | 36h | 2022-02-28 | 2022-03-10 | 4 |  |  |  |  |  | 4.67d | 0d | Faisal Ahmed Farooqui | 36h |  |
| 39 | 3.6 | Analysis on Optimization of Data Search Service |  | 24h | 2022-03-31 | 2022-04-05 | 24 |  |  |  |  |  | 0d |  | Shoaib Alauddin | 24h |  |
| 40 | 3.7 | Implementation of Data Search Service Optimization |  | 24h | 2022-04-06 | 2022-04-11 | 39 |  |  |  |  |  | 0d |  | Shoaib Alauddin | 24h |  |
| 41 | 3.8 | Build Release | milestone | 6h? | 2022-04-12 | 2022-04-12 | 40, 38 |  |  |  |  |  | 3d |  | Faisal Ahmed Farooqui | 6h |  |
| 42 | 3.9 | Identification of gaps in ML-Model implementations |  | 24h | 2022-04-12 | 2022-04-15 | 40 |  |  |  |  |  | 0d |  | Shoaib Alauddin | 24h |  |
