# AP Automation Phase 4

Schedule from MS Project, 2022-02-01 to 2022-05-12, 6 hours a day, A marks actual dates.

## Calendars

- APA Calendar: Mon-Fri 11:00-13:00, 14:00-18:00; Sat-Sun off. Exceptions (off unless hours are given): 2020-02-05 to 2119-02-05 (Kashmir Day, recurring), 2020-03-23 to 2119-03-23 (Pakistan Day, recurring), 2022-03-07 to 2022-03-08 (Imran's visit).

## Resources

| Resource | Group |
| --- | --- |
| Zeeshan Akhtar | Dev |
| Muhammad Naeem | QA |
| Faisal Ahmed Farooqui | Manager, Dev |
| Shoaib Alauddin | Dev |

## Schedule

| ID | WBS | Task | Type | Duration | Start | Finish | Predecessors | Complete | Remaining | Baseline start | Baseline finish | Baseline duration | Total slack | Free slack | Constraint | Resources | Work | Actual work |
| --- | --- | --- | --- | --- | --- | --- | --- | --- | --- | --- | --- | --- | --- | --- | --- | --- | --- | --- |
| 1 | 1 | **Version 3.0.2** |  | 70d | 2022-02-01 A | 2022-05-12 |  | 53% | 33.12d |  |  |  | 0d |  |  |  | 514h | 334h |
| 2 | 1.1 | Load Test Execution on Version 3.0.1 |  | 24h | 2022-02-01 A | 2022-02-04 A |  | 100% |  |  |  |  |  |  |  | Muhammad Naeem | 24h | 24h |
| 3 | 1.2 | Application Side Logging Implementation to capture User Activity |  | 24h | 2022-02-01 A | 2022-02-04 A |  | 100% |  |  |  |  |  |  |  | Faisal Ahmed Farooqui | 24h | 24h |
| 4 | 1.3 | Change Requests V3 |  | 92h | 2022-02-07 A | 2022-02-28 A | 3 | 100% |  |  |  |  |  |  |  | Faisal Ahmed Farooqui | 92h | 92h |
| 5 | 1.4 | Bug Fixings V3 |  | 112h | 2022-02-01 A | 2022-02-25 A |  | 100% |  |  |  |  |  |  |  | Zeeshan Akhtar | 112h | 112h |
| 6 | 1.5 | Test Execution |  | 82h | 2022-02-07 A | 2022-02-24 A | 2 | 100% |  |  |  |  |  |  |  | Muhammad Naeem | 82h | 82h |
| 7 | 1.6 | Test Automation Cycle 1 |  | 30h | 2022-02-24 | 2022-03-03 | 6 |  |  |  |  |  | 25.33d | 0d |  | Muhammad Naeem | 30h |  |
| 8 | 1.7 | Test Automation Cycle 2 |  | 30h | 2022-03-03 | 2022-03-14 | 7 |  |  |  |  |  | 25.33d | 0d |  | Muhammad Naeem | 30h |  |
| 9 | 1.8 | Zeeshan's Nexelus Work |  | 240h | 2022-03-14 | 2022-05-12 |  |  |  |  |  |  | 0d |  | start no earlier than 2022-03-14 | Zeeshan Akhtar [50%] | 120h |  |
| 10 | 2 | **Version 4.0.1** |  | 49.33d? | 2022-02-01 A | 2022-04-14 |  | 53% | 23.11d? | 2021-09-13 | 2021-11-11 | 44d? | 16.67d |  |  |  | 474h | 252h |
| 11 | 2.1 | Training on AutoML based Frameworks |  | 24h | 2022-02-01 A | 2022-02-04 A |  | 100% |  |  |  |  |  |  |  | Shoaib Alauddin | 24h | 24h |
| 12 | 2.2 | Results comparisions with different ML-Models (SVM, Different AutoML Frameworks) |  | 12h | 2022-02-07 A | 2022-02-08 A | 11 | 100% |  |  |  |  |  |  |  | Shoaib Alauddin | 12h | 12h |
| 13 | 2.3 | Initial Model Architecture Finalization & Creation |  | 12h | 2022-02-09 A | 2022-02-10 A | 12 | 100% |  | 2021-10-08 | 2021-10-14 | 30h |  |  |  | Shoaib Alauddin | 12h | 12h |
| 14 | 2.4 | Model Training |  | 30h | 2022-02-11 A | 2022-02-17 A | 13 | 100% |  | 2021-10-15 | 2021-10-21 | 30h |  |  |  | Shoaib Alauddin | 30h | 30h |
| 15 | 2.5 | Infrastructure Creation for ML Integration with APA |  | 18h | 2022-02-18 A | 2022-02-22 A | 14 | 100% |  | 2021-10-12 | 2021-10-14 | 18h |  |  |  | Shoaib Alauddin | 18h | 18h |
| 16 | 2.6 | Model Package Creation |  | 60h | 2022-02-23 A | 2022-03-10 A | 15 | 100% |  |  |  |  |  |  |  | Shoaib Alauddin | 60h | 60h |
| 17 | 2.7 | Model Deployment |  | 36h | 2022-03-11 A | 2022-03-18 A | 16 | 100% |  | 2021-10-29 | 2021-11-03 | 24h |  |  |  | Shoaib Alauddin | 36h | 36h |
| 18 | 2.8 | Model Deployment Help |  | 36h | 2022-03-10 A | 2022-03-18 A | 41 | 100% |  |  |  |  |  |  |  | Faisal Ahmed Farooqui | 36h | 36h |
| 19 | 2.9 | Business Logic Implementation for Invoice Creation based on ML-Model outcome |  | 24h | 2022-03-18 A | 2022-03-25 | 18 | 50% | 12h | 2021-10-25 | 2021-10-29 | 30h | 16.67d | 0d |  | Faisal Ahmed Farooqui | 24h | 12h |
| 20 | 2.10 | Model Testing & Retraining |  | 24h | 2022-03-21 A | 2022-03-25 | 17 | 50% | 12h | 2021-10-22 | 2021-10-28 | 30h | 4d | 0d |  | Shoaib Alauddin | 24h | 12h |
| 21 | 2.11 | Test Case Creation |  | 30h | 2022-03-14 | 2022-03-21 | 8 |  |  | 2021-10-21 | 2021-10-27 | 30h | 25.33d | 3.67d |  | Muhammad Naeem | 30h |  |
| 22 | 2.12 | First Build Release | milestone | 6h? | 2022-03-25 | 2022-03-28 | 19 |  |  | 2021-11-01 | 2021-11-01 | 6h? | 16.67d | 0d |  | Faisal Ahmed Farooqui | 6h |  |
| 23 | 2.13 | Test Execution |  | 24h | 2022-03-28 | 2022-04-01 | 21, 22 |  |  | 2021-10-28 | 2021-11-02 | 24h | 21.67d | 5d |  | Muhammad Naeem | 24h |  |
| 24 | 2.14 | Bug Fixing in BL of ML-Model output utilization side |  | 24h | 2022-03-28 | 2022-04-01 | 22 |  |  | 2021-10-22 | 2021-10-27 | 24h | 16.67d | 0d |  | Faisal Ahmed Farooqui | 24h |  |
| 25 | 2.15 | Bug Fixing on ML Model and Retraining |  | 24h | 2022-03-28 | 2022-03-31 | 20 |  |  | 2021-11-04 | 2021-11-10 | 30h | 4d | 0d |  | Shoaib Alauddin | 24h |  |
| 26 | 2.16 | ML-Result storage for ML retraining and corrections |  | 24h | 2022-04-01 | 2022-04-07 | 24 |  |  |  |  |  | 16.67d | 0d |  | Faisal Ahmed Farooqui | 24h |  |
| 27 | 2.17 | Build Release |  | 6h? | 2022-04-07 | 2022-04-08 | 26 |  |  | 2021-11-11 | 2021-11-11 | 6h? | 16.67d | 0d |  | Faisal Ahmed Farooqui | 6h |  |
| 28 | 2.18 | ML-Results utilization for Model correction and retraining |  | 36h | 2022-04-01 | 2022-04-08 | 25 |  |  |  |  |  | 4d | 0d |  | Shoaib Alauddin | 36h |  |
| 29 | 2.19 | Test Execution |  | 24h | 2022-04-08 | 2022-04-14 | 23, 27 |  |  |  |  |  | 16.67d | 0d |  | Muhammad Naeem | 24h |  |

| ID | WBS | Task | Type | Duration | Start | Finish | Predecessors | Complete | Remaining | Baseline start | Baseline finish | Baseline duration | Total slack | Free slack | Resources | Work | Actual work |
| --- | --- | --- | --- | --- | --- | --- | --- | --- | --- | --- | --- | --- | --- | --- | --- | --- | --- |
| 30 | 3 | **Version 4.0.2** |  | 66d? | 2022-02-01 A | 2022-05-06 |  | 16% | 55.35d? | 2021-09-13 | 2021-11-11 | 44d? | 4d |  |  | 392h | 62h |
| 31 | 3.1 | Stamping Configuration: Front/Back Cover Pages, Existing Page with Page Selection |  | 18h | 2022-02-25 A | 2022-03-02 A | 5 | 100% |  |  |  |  |  |  | Zeeshan Akhtar | 18h | 18h |
| 32 | 3.2 | Files removal from S3 when operation is cancelled |  | 24h | 2022-03-02 A | 2022-03-10 A | 31 | 100% |  |  |  |  |  |  | Zeeshan Akhtar | 24h | 24h |
| 33 | 3.3 | DB Side Logging |  | 30h | 2022-03-10 A | 2022-03-17 A | 32 | 100% |  |  |  |  |  |  | Zeeshan Akhtar | 20h | 20h |
| 34 | 3.4 | **Code Refactoring** |  | 20.67d | 2022-03-17 | 2022-04-18 |  |  |  |  |  |  | 18.67d |  |  | 70h |  |
| 35 | 3.4.1 | Replacement of Set statement |  | 14h | 2022-03-17 | 2022-03-22 | 33 |  |  |  |  |  | 27.67d | 0d | Zeeshan Akhtar [50%] | 7h |  |
| 36 | 3.4.2 | Fixing of Javascript dependencies |  | 18h | 2022-03-22 | 2022-03-28 | 35 |  |  |  |  |  | 27.67d | 0d | Zeeshan Akhtar [50%] | 9h |  |
| 37 | 3.4.3 | Hyperlink Link Fixing to utilize "React Route" for client side navigation |  | 12h | 2022-03-28 | 2022-04-04 | 36 |  |  |  |  |  | 24.67d | 0d | Zeeshan Akhtar [50%] | 6h |  |
| 38 | 3.4.4 | Creation of separate JS file to API Calls |  | 24h | 2022-04-04 | 2022-04-08 | 37 |  |  |  |  |  | 24.67d |  | Zeeshan Akhtar [50%] | 12h |  |
| 39 | 3.4.5 | Redux implementation for better Data handling/caching on client side |  | 18h | 2022-04-08 | 2022-04-13 | 27 |  |  |  |  |  | 18.67d | 0d | Faisal Ahmed Farooqui | 18h |  |
| 40 | 3.4.6 | Login - Utilization of Security Token in place of plain user data |  | 18h | 2022-04-13 | 2022-04-18 | 39 |  |  |  |  |  | 18.67d |  | Faisal Ahmed Farooqui | 18h |  |
| 41 | 3.5 | SSO Fixing for AWS |  | 36h | 2022-02-28 | 2022-03-10 | 4 |  |  |  |  |  | 39.67d | 28.67d | Faisal Ahmed Farooqui | 36h |  |
| 42 | 3.6 | Analysis on Optimization of Data Search Service |  | 24h | 2022-04-11 | 2022-04-14 | 28 |  |  |  |  |  | 4d | 0d | Shoaib Alauddin | 24h |  |
| 43 | 3.7 | Implementation of Data Search Service Optimization |  | 24h | 2022-04-15 | 2022-04-20 | 42 |  |  |  |  |  | 4d | 0d | Shoaib Alauddin | 24h |  |
| 44 | 3.8 | Build Release | milestone | 6h? | 2022-04-21 | 2022-04-21 | 43, 41 |  |  |  |  |  | 11d | 0d | Faisal Ahmed Farooqui | 6h |  |
| 45 | 3.9 | Identification of gaps in ML-Model implementations |  | 24h | 2022-04-21 | 2022-04-26 | 43 |  |  |  |  |  | 4d | 0d | Shoaib Alauddin | 24h |  |
| 46 | 3.10 | R&D on MLOps (CI-CD pipeline for ML) |  | 24h | 2022-04-27 | 2022-05-02 | 45 |  |  |  |  |  | 4d | 0d | Shoaib Alauddin | 24h |  |
| 47 | 3.11 | Implementation of MLOps |  | 24h | 2022-05-03 | 2022-05-06 | 46 |  |  |  |  |  | 4d |  | Faisal Ahmed Farooqui | 24h |  |
| 48 | 3.12 | Test case creation |  | 24h | 2022-04-14 | 2022-04-20 | 29 |  |  |  |  |  | 16.67d |  | Muhammad Naeem | 24h |  |
| 49 | 3.13 | Test Automation Cycle 3 |  | 60h | 2022-02-01 | 2022-04-07 |  |  |  |  |  |  | 21d | 10d | Muhammad Naeem | 50h |  |
| 50 | 3.14 | Test execution |  | 24h | 2022-04-22 | 2022-04-27 | 44, 49 |  |  |  |  |  | 11d |  | Muhammad Naeem | 24h |  |
