# AP Automation Phase 4

Schedule from MS Project, 2022-06-13 to 2022-09-20, 6 hours a day.

## Calendars

- APA Calendar: Mon-Fri 11:00-13:00, 14:00-18:00; Sat-Sun off. Exceptions (off unless hours are given): 2020-02-05 to 2119-02-05 (Kashmir Day, recurring), 2020-03-23 to 2119-03-23 (Pakistan Day, recurring), 2022-07-08 to 2022-07-11 (Eid ul Adha).

## Resources

| Resource | Group |
| --- | --- |
| Zeeshan Akhtar | Dev |
| Muhammad Naeem | QA |
| Faisal Ahmed Farooqui | Manager, Dev |
| Shoaib Alauddin | Dev |
| Jr Dev 1 | Dev |

## Schedule

| ID | WBS | Task | Duration | Start | Finish | Predecessors | Baseline start | Baseline finish | Baseline duration | Total slack | Free slack | Constraint | Resources | Work |
| --- | --- | --- | --- | --- | --- | --- | --- | --- | --- | --- | --- | --- | --- | --- |
| 1 | 1 | **Version 3.1** | 4d? | 2022-06-13 | 2022-06-16 |  |  |  |  |  |  |  |  | 174h |
| 2 | 1.1 | Production Issues Fixing | 192h | 2022-06-13 | 2022-07-28 |  |  |  |  | 38d |  |  | Faisal Ahmed Farooqui [50%] | 96h |
| 3 | 1.2 | Development of Company Switching Functionality | 96h | 2022-06-13 | 2022-07-04 |  |  |  |  | 7d | 0d |  | Faisal Ahmed Farooqui [50%] | 48h |
| 4 | 1.3 | Quality testing for bug fixing | 150h | 2022-06-13 | 2022-07-19 |  |  |  |  | 0d |  |  | Muhammad Naeem [20%] | 30h |
| 5 | 2 | **Version 4.0.1** | 5d? | 2022-06-13 | 2022-06-17 |  | 2021-09-13 | 2021-11-11 | 44d? |  |  |  |  | 426h |
| 6 | 2.1 | ML-Model Enhancement and Training Session 1 | 30h | 2022-06-13 | 2022-06-17 |  |  |  |  | 19d | 0d |  | Shoaib Alauddin | 30h |
| 7 | 2.2 | Model Deployment 1 | 18h | 2022-06-20 | 2022-06-22 | 6 |  |  |  | 44d | 0d |  | Shoaib Alauddin | 18h |
| 8 | 2.3 | ML-Model Enhancement and Training Session 2 | 30h | 2022-06-23 | 2022-06-29 | 7 |  |  |  | 79d | 0d |  | Shoaib Alauddin | 30h |
| 9 | 2.4 | Model Deployment 2 | 18h | 2022-06-30 | 2022-07-04 | 8 |  |  |  | 44d | 0d |  | Shoaib Alauddin | 18h |
| 10 | 2.5 | ML-Model Enhancement and Training Session 3 | 30h | 2022-07-14 | 2022-07-20 | 18 |  |  |  | 66d | 0d |  | Shoaib Alauddin | 30h |
| 11 | 2.6 | Model Deployment 3 | 18h | 2022-07-21 | 2022-07-25 | 10 |  |  |  | 66d |  |  | Shoaib Alauddin | 18h |
| 12 | 2.7 | Application Understanding | 30h | 2022-07-15 | 2022-07-21 |  |  |  |  | 33d | 0d | start no earlier than 2022-07-15 | Jr Dev 1 | 30h |
| 13 | 2.8 | **Model integration with Application** | 49d | 2022-07-05 | 2022-09-13 | 3 |  |  |  | 5d |  |  |  | 156h |
| 14 | 2.8.1 | Development of ML Inference Consumption service | 36h | 2022-07-05 | 2022-07-14 |  |  |  |  | 33d | 0d |  | Faisal Ahmed Farooqui [50%] | 18h |
| 15 | 2.8.2 | Database design updates of ml-model integration | 24h | 2022-07-15 | 2022-07-20 | 14 |  |  |  | 33d | 0d |  | Faisal Ahmed Farooqui [50%] | 12h |
| 16 | 2.8.3 | UI Updates in "Make Corrections in Invoice" | 30h | 2022-07-22 | 2022-07-28 | 12 |  |  |  | 33d |  |  | Jr Dev 1 | 30h |
| 17 | 2.8.4 | Business Logic updates to store user-acceptance for ML-Results | 36h | 2022-07-21 | 2022-07-28 | 15 |  |  |  | 33d |  |  | Faisal Ahmed Farooqui [50%] | 18h |
| 18 | 2.8.5 | User Acceptance results data-aggregation | 30h | 2022-07-05 | 2022-07-13 | 9 |  |  |  | 44d | 0d |  | Shoaib Alauddin | 30h |
| 19 | 2.8.6 | Test Case writing for UI testing of "Make Corrections in Invoice" | 90h | 2022-07-20 | 2022-08-09 | 4 |  |  |  | 0d |  |  | Muhammad Naeem [20%] | 18h |
| 20 | 2.8.7 | UI testing of "Make Corrections in Invoice" | 150h | 2022-08-10 | 2022-09-13 | 19 |  |  |  | 5d |  |  | Muhammad Naeem [20%] | 30h |
| 21 | 2.9 | **Billing Engine Development** | 70d | 2022-06-13 | 2022-09-20 |  |  |  |  | 0d |  |  |  | 96h |
| 22 | 2.9.1 | Billing Dashboard (UI Designing) | 30h | 2022-06-13 | 2022-06-17 |  |  |  |  | 65d |  |  | Jr Dev 1 | 30h |
| 23 | 2.9.2 | Database design updates for Billing | 12h | 2022-07-29 | 2022-08-01 | 17 |  |  |  | 33d | 0d |  | Faisal Ahmed Farooqui | 12h |
| 24 | 2.9.3 | Scanner Function Updates for Statistics Gathering | 18h | 2022-08-02 | 2022-08-04 | 23 |  |  |  | 33d |  |  | Faisal Ahmed Farooqui | 18h |
| 25 | 2.9.4 | Test Case writing for Billing Dashboard | 60h | 2022-08-10 | 2022-08-23 | 19 |  |  |  | 0d |  |  | Muhammad Naeem [20%] | 12h |
| 26 | 2.9.5 | UI testing of Billing Dashboard | 120h | 2022-08-24 | 2022-09-20 | 25 |  |  |  | 0d |  |  | Muhammad Naeem [20%] | 24h |
