# Phase 1 Prototype

Schedule from MS Project, 2022-09-26 to 2022-11-11, 6 hours a day.

## Calendars

- APA Calendar: Mon-Fri 11:00-13:00, 14:00-18:00; Sat-Sun off. Exceptions (off unless hours are given): 2020-02-05 to 2119-02-05 (Kashmir Day, recurring), 2020-03-23 to 2119-03-23 (Pakistan Day, recurring).

## Resources

| Resource | Group |
| --- | --- |
| Dev Lead 1 | Dev |
| Faisal Ahmed Farooqui | Manager, Dev |

## Schedule

| ID | WBS | Task | Duration | Start | Finish | Predecessors | Total slack | Free slack | Resources | Work |
| --- | --- | --- | --- | --- | --- | --- | --- | --- | --- | --- |
| 1 | 1 | **Prerequisites Preparation** | 10d | 2022-09-26 | 2022-10-07 |  |  |  |  | 30h |
| 2 | 1.1 | Separate Code Repositories Creation for Login, Apps, Shared Components, Libraries | 24h | 2022-09-26 | 2022-09-29 |  | 0d |  | Faisal Ahmed Farooqui [50%] | 12h |
| 3 | 1.2 | VS Solutions Code Structure Creation for Login, Sub-Applications, Shared Libraries | 24h | 2022-09-30 | 2022-10-05 | 2 | 0d |  | Faisal Ahmed Farooqui [50%] | 12h |
| 4 | 1.3 | DB Creation/Migration | 12h | 2022-10-06 | 2022-10-07 | 3 | 0d |  | Faisal Ahmed Farooqui [50%] | 6h |
| 5 | 2 | **Sub Applications Creation** | 10d | 2022-10-10 | 2022-10-21 |  | 0d |  |  | 60h |
| 6 | 2.1 | Sub App1: Getting UI & Backend Basic Functionality Ready | 12h | 2022-10-10 | 2022-10-11 | 1 | 17.33d | 0d | Dev Lead 1 | 12h |
| 7 | 2.2 | Sub App2: Getting UI & Backend Basic Functionality Ready | 24h | 2022-10-10 | 2022-10-13 | 1 | 0d |  | Faisal Ahmed Farooqui [50%] | 12h |
| 8 | 2.3 | Application Specific (Unshared) Session Management | 6h | 2022-10-12 | 2022-10-12 | 6 | 17.33d | 0d | Dev Lead 1 | 6h |
| 9 | 2.4 | R&D on Sharing Code/Library for Shared Components UI Header, Menu | 36h | 2022-10-14 | 2022-10-21 | 7 | 0d |  | Faisal Ahmed Farooqui [50%] | 18h |
| 10 | 2.5 | R&D on Sharing Login Code (UI & Functionality) | 12h | 2022-10-13 | 2022-10-14 | 8 | 17.33d | 0d | Dev Lead 1 | 12h |
| 11 | 3 | **Login App Creation** | 13.33d | 2022-10-17 | 2022-11-03 |  | 4d |  |  | 61h |
| 12 | 3.1 | Getting UI & Backend Functionality Ready | 12h | 2022-10-17 | 2022-10-18 | 10 | 17.33d | 0d | Dev Lead 1 | 12h |
| 13 | 3.2 | Shared Session Management using Builtin Session Object | 24h | 2022-10-24 | 2022-10-27 | 9 | 0d |  | Faisal Ahmed Farooqui [50%] | 12h |
| 14 | 3.3 | R&D on Session Management on Browser (Same as ApWorks.ai) | 26h | 2022-10-28 | 2022-11-03 | 13 | 0d |  | Faisal Ahmed Farooqui [50%] | 13h |
| 15 | 3.4 | **R&D on Session Management on Redis or MemCacheD (Memory Database)** | 2d | 2022-10-19 | 2022-10-20 |  | 11.33d |  |  | 12h |
| 16 | 3.4.1 | Installation & Configuration of Redis & MemCacheD | 6h | 2022-10-19 | 2022-10-19 | 12 | 11.33d | 0d | Dev Lead 1 | 6h |
| 17 | 3.4.2 | Session persistence utilizing Connectors for .net Session | 6h | 2022-10-20 | 2022-10-20 | 16 | 11.33d | 0d | Dev Lead 1 | 6h |
| 18 | 3.5 | Logout: Session Removal for all Browser Tabs of Applications | 12h | 2022-10-21 | 2022-10-24 | 17 | 11.33d | 0d | Dev Lead 1 | 12h |
| 19 | 4 | Application Configuration Info Management for each separate App (Login, Sub-Apps) | 12h | 2022-10-25 | 2022-10-26 | 18 | 11.33d |  | Dev Lead 1 | 12h |
| 20 | 5 | Authentication & Authorization utilizing Shared Session Info | 36h | 2022-11-03 | 2022-11-11 | 14 | 0d |  | Faisal Ahmed Farooqui [50%] | 18h |
