Schedule from MS Project, 2025-03-17 to 2025-06-02, A marks actual dates.

## Calendars

- Standard: Mon-Fri 08:00-12:00, 13:00-17:00; Sat-Sun off. Exceptions (off unless hours are given): 2025-03-31 to 2025-04-02 (Eid ul Fiter).

## Resources

| Resource |
| --- |
| Ali |
| Abid |
| Asad |
| Arslan |
| Fawad |
| Bilal |
| Hamza |
| Ayesha |
| Yasir |
| Aimen |
| Arif |
| Kashif |
| Asim |
| Arshad |
| Mazamal |
| Muzamal |
| ArifK |

## Schedule

| ID | WBS | Task | Type | Duration | Start | Finish | Predecessors | Complete | Remaining | Total slack | Free slack | Resources | Work | Actual work |
| --- | --- | --- | --- | --- | --- | --- | --- | --- | --- | --- | --- | --- | --- | --- |
| 1 | 1 | **Release 2025.2** |  | 44.39d? | 2025-03-17 08:00 A | 2025-05-21 11:08 |  | 4% | 42.43d? | 8.61d |  |  | 1870.4h | 111.61h |
| 2 | 1.1 | **APWorks** |  | 43.75d? | 2025-03-17 08:00 A | 2025-05-20 14:59 |  | 6% | 40.91d? | 9.25d |  |  | 1198h | 111.61h |
| 3 | 1.1.1 | **Development** |  | 34.07d? | 2025-03-17 08:00 A | 2025-05-07 08:35 |  | 12% | 30.1d? | 18.93d |  |  | 690h | 111.61h |
| 4 | 1.1.1.1 | **Standardize the Status in Dashboard vs reports** |  | 1.5d? | 2025-03-17 08:00 A | 2025-03-18 12:00 A |  | 100% |  |  |  |  | 10h | 10h |
| 5 | 1.1.1.1.1 | Dot Net |  | 8.89h | 2025-03-17 08:00 A | 2025-03-18 08:53 A |  | 100% |  |  |  | Ali [90%] | 8h | 8h |
| 6 | 1.1.1.1.2 | DB | milestone | 0h | 2025-03-17 08:00 A | 2025-03-17 08:00 A |  | 100% |  |  |  |  |  |  |
| 7 | 1.1.1.1.3 | Review and Management |  | 2h | 2025-03-18 08:53 A | 2025-03-18 10:53 A | 5 | 100% |  |  |  | Abid [50%] | 1h | 1h |
| 8 | 1.1.1.1.4 | Fixes for point identified in Review. |  | 1.11h? | 2025-03-18 10:53 A | 2025-03-18 12:00 A | 7 | 100% |  |  |  | Ali [90%] | 1h | 1h |
| 9 | 1.1.1.2 | **Optimizing data retrieval processes to enhance performance, reduce processing time, and improve system efficiency** |  | 22.97d? | 2025-03-17 08:00 A | 2025-04-21 16:45 |  | 37% | 14.42d? | 15.35d | 0d |  | 189h | 76h |
| 10 | 1.1.1.2.1 | Team brainstorming. |  | 2h | 2025-03-17 08:00 A | 2025-03-17 10:00 A |  | 100% |  |  |  |  | 8h | 8h |
| 11 | 1.1.1.2.2 | R&D | milestone | 0h? | 2025-03-17 08:00 A | 2025-03-17 08:00 A |  | 100% |  |  |  |  |  |  |
| 12 | 1.1.1.2.3 | **Gadgets** |  | 6.5d | 2025-03-17 08:00 A | 2025-03-25 13:00 A |  | 100% |  |  |  |  | 58h | 58h |
| 13 | 1.1.1.2.3.1 | UI Changes + Loading panel optimization. |  | 17.78h | 2025-03-18 13:00 A | 2025-03-20 14:46 A | 4 | 100% |  |  |  | Ali [90%] | 16h | 16h |
| 14 | 1.1.1.2.3.2 | Dot Net |  | 17.78h | 2025-03-20 14:46 A | 2025-03-24 16:33 A | 13 | 100% |  |  |  | Ali [90%] | 16h | 16h |
| 15 | 1.1.1.2.3.3 | DB |  | 28.57h | 2025-03-17 08:00 A | 2025-03-20 13:34 A |  | 100% |  |  |  | Yasir [70%] | 20h | 20h |
| 16 | 1.1.1.2.3.4 | Review and Management |  | 4h | 2025-03-24 16:33 A | 2025-03-25 11:33 A | 14 | 100% |  |  |  | Abid [50%] | 2h | 2h |
| 17 | 1.1.1.2.3.5 | Fixes for point identified in Review. |  | 4.45h | 2025-03-24 16:33 A | 2025-03-25 13:00 A | 14 | 100% |  |  |  | Ali [90%] | 4h | 4h |
| 18 | 1.1.1.2.4 | **Manage Invoice ducument list** |  | 7.86d? | 2025-03-17 08:00 A | 2025-03-26 15:53 A |  | 100% |  |  |  |  | 10h | 10h |
| 19 | 1.1.1.2.4.1 | UI Changes |  | 2.22h | 2025-03-25 13:00 A | 2025-03-25 15:13 A | 12 | 100% |  |  |  | Ali [90%] | 2h | 2h |
| 20 | 1.1.1.2.4.2 | Dot Net |  | 6.67h | 2025-03-25 15:13 A | 2025-03-26 13:53 A | 19 | 100% |  |  |  | Ali [90%] | 6h | 6h |
| 21 | 1.1.1.2.4.3 | DB |  | 4h | 2025-03-17 08:00 A | 2025-03-17 12:00 A |  | 100% |  |  |  |  |  |  |
| 22 | 1.1.1.2.4.4 | Review and Management |  | 2h | 2025-03-26 13:53 A | 2025-03-26 15:53 A | 20 | 100% |  |  |  | Abid [50%] | 1h | 1h |
| 23 | 1.1.1.2.4.5 | Fixes for point identified in Review. |  | 1.11h? | 2025-03-26 13:53 A | 2025-03-26 15:00 A | 20 | 100% |  |  |  | Ali [90%] | 1h | 1h |
| 24 | 1.1.1.2.5 | **Vendor Invoice Report** |  | 6.43d? | 2025-03-17 08:00 | 2025-03-25 11:25 |  |  |  | 12.29d | 0d |  | 36h |  |
| 25 | 1.1.1.2.5.1 | UI Changes |  | 2.5h | 2025-03-17 08:00 | 2025-03-17 10:30 |  |  |  | 15.5d | 0d | Asad [80%] | 2h |  |
| 26 | 1.1.1.2.5.2 | Dot Net |  | 20h | 2025-03-17 10:30 | 2025-03-19 15:30 | 25 |  |  | 15.5d | 0d | Asad [80%] | 16h |  |
| 27 | 1.1.1.2.5.3 | DB |  | 22.86h | 2025-03-20 13:34 | 2025-03-25 11:25 | 15 |  |  | 12.29d | 0d | Yasir [70%] | 16h |  |
| 28 | 1.1.1.2.5.4 | Review and Management |  | 2h | 2025-03-19 15:30 | 2025-03-20 08:30 | 26 |  |  | 15.5d | 0d | Abid [50%] | 1h |  |
| 29 | 1.1.1.2.5.5 | Fixes for point identified in Review. |  | 1.25h? | 2025-03-20 08:30 | 2025-03-20 09:45 | 28 |  |  | 15.5d |  | Asad [80%] | 1h |  |

| ID | WBS | Task | Type | Duration | Start | Finish | Predecessors | Complete | Remaining | Total slack | Free slack | Resources | Work | Comments |
| --- | --- | --- | --- | --- | --- | --- | --- | --- | --- | --- | --- | --- | --- | --- |
| 30 | 1.1.1.2.6 | **Vendor Invoice Report Export** |  | 1.81d? | 2025-03-25 11:25 | 2025-03-27 09:55 |  |  |  | 12.29d | 0d |  | 11h |  |
| 31 | 1.1.1.2.6.1 | UI Changes |  | 2.5h | 2025-03-25 11:25 | 2025-03-25 14:55 | 24 |  |  | 12.29d | 0d | Asad [80%] | 2h |  |
| 32 | 1.1.1.2.6.2 | Dot Net |  | 7.5h | 2025-03-25 14:55 | 2025-03-26 14:25 | 31 |  |  | 12.29d | 0d | Asad [80%] | 6h |  |
| 33 | 1.1.1.2.6.3 | DB | milestone | 0h | 2025-03-25 11:25 | 2025-03-25 11:25 | 27 |  |  | 14.1d | 0d | Yasir [70%] |  | Dev: Part of 26 |
| 34 | 1.1.1.2.6.4 | Review and Management |  | 2h | 2025-03-26 14:25 | 2025-03-26 16:25 | 32 |  |  | 12.29d | 0d | Abid [50%] | 1h |  |
| 35 | 1.1.1.2.6.5 | Fixes for point identified in Review. |  | 2.5h? | 2025-03-26 16:25 | 2025-03-27 09:55 | 34 |  |  | 12.29d |  | Asad [80%] | 2h |  |
| 36 | 1.1.1.2.7 | **IO / PO Order Report** |  | 3.62d? | 2025-03-25 11:25 | 2025-04-03 08:25 |  |  |  | 14.1d |  |  | 20h |  |
| 37 | 1.1.1.2.7.1 | UI Changes |  | 2.5h | 2025-03-27 09:55 | 2025-03-27 13:25 | 30 |  |  | 12.29d | 0d | Asad [80%] | 2h |  |
| 38 | 1.1.1.2.7.2 | Dot Net |  | 10h | 2025-03-27 13:25 | 2025-03-28 15:25 | 37 |  |  | 12.29d | 0d | Asad [80%] | 8h |  |
| 39 | 1.1.1.2.7.3 | DB |  | 11.43h | 2025-03-25 11:25 | 2025-03-26 15:51 | 33 |  |  | 27.6d | 0d | Yasir [70%] | 8h |  |
| 40 | 1.1.1.2.7.4 | Review and Management |  | 2h | 2025-03-28 15:25 | 2025-04-03 08:25 | 39, 38 |  |  | 28.26d |  | Abid [50%] | 1h |  |
| 41 | 1.1.1.2.7.5 | Fixes for point identified in Review. |  | 1.25h? | 2025-03-28 15:25 | 2025-03-28 16:40 | 38 |  |  | 12.29d | 3.04d | Asad [80%] | 1h |  |
| 42 | 1.1.1.2.8 | **IO / PO Report Export** |  | 11.64d? | 2025-03-26 15:51 | 2025-04-16 12:00 |  |  |  | 15.96d |  |  | 9h |  |
| 43 | 1.1.1.2.8.1 | UI Changes |  | 1.25h | 2025-04-15 08:00 | 2025-04-15 09:15 | 360 |  |  | 10.58d | 0d | Asad [80%] | 1h |  |
| 44 | 1.1.1.2.8.2 | Dot Net |  | 7.5h | 2025-04-15 09:15 | 2025-04-16 08:45 | 43 |  |  | 10.58d | 0d | Asad [80%] | 6h |  |
| 45 | 1.1.1.2.8.3 | DB | milestone | 0h | 2025-03-26 15:51 | 2025-03-26 15:51 | 39 |  |  | 27.6d | 0d | Yasir [70%] |  | Dev: Part of 38 |
| 46 | 1.1.1.2.8.4 | Review and Management |  | 2h | 2025-04-16 08:45 | 2025-04-16 10:45 | 44 |  |  | 10.58d | 0d | Abid [50%] | 1h |  |
| 47 | 1.1.1.2.8.5 | Fixes for point identified in Review. |  | 1.25h? | 2025-04-16 10:45 | 2025-04-16 12:00 | 46 |  |  | 10.58d | 0d | Asad [80%] | 1h |  |
| 48 | 1.1.1.2.9 | **Vendor Invoices With Payment Status Report** |  | 13.46d? | 2025-03-26 15:51 | 2025-04-18 10:30 |  |  |  | 17d |  |  | 27h |  |
| 49 | 1.1.1.2.9.1 | Dot Net |  | 10h | 2025-04-16 13:00 | 2025-04-17 15:00 | 47 |  |  | 10.58d | 0d | Asad [80%] | 8h |  |
| 50 | 1.1.1.2.9.2 | DB |  | 22.86h | 2025-03-26 15:51 | 2025-04-03 14:42 | 45 |  |  | 27.6d |  | Yasir [70%] | 16h |  |
| 51 | 1.1.1.2.9.3 | Review and Management |  | 2h | 2025-04-17 15:00 | 2025-04-17 17:00 | 49 |  |  | 10.58d | 0d | Abid [50%] | 1h |  |
| 52 | 1.1.1.2.9.4 | Fixes for point identified in Review. |  | 2.5h? | 2025-04-18 08:00 | 2025-04-18 10:30 | 51 |  |  | 10.58d | 0d | Asad [80%] | 2h |  |
| 53 | 1.1.1.2.10 | **Vendor Invoices With Payment Status Export** |  | 12.25d? | 2025-04-03 14:42 A | 2025-04-21 16:45 |  |  | 12.25d? | 10.58d |  |  | 10h |  |
| 54 | 1.1.1.2.10.1 | UI Changes |  | 1.25h | 2025-04-18 10:30 | 2025-04-18 11:45 | 52 |  |  | 10.58d | 0d | Asad [80%] | 1h |  |
| 55 | 1.1.1.2.10.2 | Dot Net |  | 7.5h | 2025-04-18 11:45 | 2025-04-21 11:15 | 54 |  |  | 10.58d | 0d | Asad [80%] | 6h |  |
| 56 | 1.1.1.2.10.3 | DB | milestone | 0h | 2025-04-03 14:42 A | 2025-04-03 14:42 A | 50 | 100% |  |  |  | Yasir [70%] |  | Dev: Part of 49 |
| 57 | 1.1.1.2.10.4 | Review and Management |  | 2h | 2025-04-21 11:15 | 2025-04-21 14:15 | 55 |  |  | 10.58d | 0d | Abid [50%] | 1h |  |
| 58 | 1.1.1.2.10.5 | Fixes for point identified in Review. |  | 2.5h? | 2025-04-21 14:15 | 2025-04-21 16:45 | 57 |  |  | 10.58d | 0d | Asad [80%] | 2h |  |

| ID | WBS | Task | Type | Duration | Start | Finish | Predecessors | Total slack | Free slack | Resources | Work |
| --- | --- | --- | --- | --- | --- | --- | --- | --- | --- | --- | --- |
| 59 | 1.1.1.3 | **Credit Memo** |  | 7.15d? | 2025-04-21 16:45 | 2025-05-01 08:55 |  | 9.25d | 0d |  | 80h |
| 60 | 1.1.1.3.1 | Dot Net |  | 40h? | 2025-04-21 16:45 | 2025-04-28 16:45 | 58 | 10.58d | 0d | Asad [80%] | 32h |
| 61 | 1.1.1.3.2 | DB |  | 57.14h? | 2025-04-21 16:46 | 2025-05-01 08:55 | 74 | 9.25d | 0d | Yasir [70%] | 40h |
| 62 | 1.1.1.3.3 | Review and Management |  | 8h? | 2025-04-28 16:45 | 2025-04-29 16:45 | 60 | 10.58d | 0d | Abid [50%] | 4h |
| 63 | 1.1.1.3.4 | Fixes for point identified in Review. |  | 5h? | 2025-04-29 16:45 | 2025-04-30 13:45 | 62 | 10.58d | 0d | Asad [80%] | 4h |
| 64 | 1.1.1.4 | **Split invoice by MOS - Print / OOH / Digital** |  | 1d? | 2025-03-17 08:00 | 2025-03-17 17:00 |  | 52d |  |  |  |
| 65 | 1.1.1.4.1 | script for converting IO codes | milestone | 0h | 2025-03-17 08:00 | 2025-03-17 08:00 |  | 53d |  |  |  |
| 66 | 1.1.1.4.2 | Dot Net |  | 8h | 2025-03-17 08:00 | 2025-03-17 17:00 |  | 52d |  |  |  |
| 67 | 1.1.1.4.3 | DB | milestone | 0h | 2025-03-17 08:00 | 2025-03-17 08:00 |  | 53d |  |  |  |
| 68 | 1.1.1.4.4 | Review and Management |  | 1h | 2025-03-17 08:00 | 2025-03-17 09:00 |  | 52.88d |  |  |  |
| 69 | 1.1.1.4.5 | Review Fixes |  | 8h? | 2025-03-17 08:00 | 2025-03-17 17:00 |  | 52d |  |  |  |
| 70 | 1.1.1.5 | **Restriction by user group on which fields can be edited (all fields blocked for Media except clients)** |  | 28.58d? | 2025-03-17 08:00 | 2025-04-29 13:40 |  | 9.49d | 0d |  | 190h |
| 71 | 1.1.1.5.1 | User Group Screen UI Revamp |  | 66.67h? | 2025-03-26 15:00 | 2025-04-11 08:40 | 23 | 9.49d | 0d | Ali [90%] | 60h |
| 72 | 1.1.1.5.2 | New Group Rule Screen Implementation |  | 55.55h? | 2025-04-11 08:40 | 2025-04-22 08:13 | 71 | 9.49d | 0d | Ali [90%] | 50h |
| 73 | 1.1.1.5.3 | Rule Implementation on Invoice screen and email send |  | 44.45h | 2025-04-22 08:13 | 2025-04-29 13:40 | 72 | 9.49d | 0d | Ali [90%] | 40h |
| 74 | 1.1.1.5.4 | DB |  | 42.86h | 2025-04-14 13:55 | 2025-04-21 16:46 | 94 | 9.25d | 0d | Yasir [70%] | 30h |
| 75 | 1.1.1.5.5 | Review and Management |  | 166.67h | 2025-03-26 15:00 | 2025-04-29 13:40 | 23 | 9.49d |  | Abid [6%] | 10h |
| 76 | 1.1.1.5.6 | Fixes for point identified in Review. | milestone | 0h? | 2025-03-17 08:00 | 2025-03-17 08:00 |  | 38.08d |  |  |  |
| 77 | 1.1.1.6 | Add Service Date and Publication on invoice detail | inactive | 8h? | 2025-03-17 08:00 | 2025-03-17 17:00 |  | 52d |  |  |  |
| 78 | 1.1.1.7 | **In dashboard, manage invoice document screen, unmatch screen for Media discrepancy and other screens and reports, after the invoice is linked to an i/O and one client identified, client # should be displayed automatically. In cases where IO not found, Fin** |  | 12.86d | 2025-03-17 08:00 | 2025-04-07 15:51 |  | 23.29d | 0d |  | 10h |
| 79 | 1.1.1.7.1 | Dot Net |  | 8h | 2025-03-17 08:00 | 2025-03-17 17:00 |  | 46.89d |  |  |  |
| 80 | 1.1.1.7.2 | DB |  | 11.43h | 2025-04-04 11:25 | 2025-04-07 15:51 | 89 | 11.87d | 2.62d | Yasir [70%] | 8h |
| 81 | 1.1.1.7.3 | Review and Management |  | 6.67h | 2025-03-17 08:00 | 2025-03-17 15:40 |  | 47.06d |  | Abid [30%] | 2h |
| 82 | 1.1.1.8 | **Warren Lamb provided PDF ingestion** |  | 34.07d? | 2025-03-17 08:00 | 2025-05-07 08:35 |  | 13.55d | 0d |  | 27h |
| 83 | 1.1.1.8.1 | Dot Net |  | 30h | 2025-04-30 13:45 | 2025-05-06 10:45 | 63 | 10.58d | 0d | Asad [80%] | 24h |
| 84 | 1.1.1.8.2 | DB | milestone | 0h | 2025-03-17 08:00 | 2025-03-17 08:00 |  | 47.62d |  |  |  |
| 85 | 1.1.1.8.3 | Review and Management |  | 3.33h | 2025-05-06 10:45 | 2025-05-06 15:05 | 83 | 10.58d | 0d | Abid [30%] | 1h |
| 86 | 1.1.1.8.4 | Fixes for point identified in Review. |  | 2.5h? | 2025-05-06 15:05 | 2025-05-07 08:35 | 85 | 10.58d | 0d | Asad [80%] | 2h |

Notes:
- 64: Comments: script for converting IO codes
- 70: Comments: Ok, @Tao - Rules
- 77: Comments: Need more details, is this part of duplicate invoice by month of service request?
- 78: Comments: "Summary of Issue" content was changed. We need more clarity for this ask.
- 82: Comments: Ok

| ID | WBS | Task | Type | Duration | Start | Finish | Predecessors | Complete | Remaining | Total slack | Free slack | Constraint | Resources | Work | Actual work |
| --- | --- | --- | --- | --- | --- | --- | --- | --- | --- | --- | --- | --- | --- | --- | --- |
| 87 | 1.1.1.9 | **Auto populate call letters; media type and band after 1st mapping** |  | 4.58d? | 2025-03-28 14:21 A | 2025-04-09 10:01 |  | 70% | 1.36d? | 33.91d | 0d |  |  | 36h | 25.61h |
| 88 | 1.1.1.9.1 | Dot Net |  | 26.67h | 2025-03-28 14:21 A | 2025-04-08 08:01 | 202 | 80% | 5.33h | 0.45d | 0d |  | Arslan [90%] | 24h | 19.2h |
| 89 | 1.1.1.9.2 | DB |  | 5.71h | 2025-04-03 14:42 | 2025-04-04 11:25 | 56 |  |  | 11.87d | 0d |  | Yasir [70%] | 4h |  |
| 90 | 1.1.1.9.3 | Review and Management |  | 10h | 2025-04-08 08:01 A | 2025-04-09 10:01 | 88 | 80% | 2h | 33.91d |  |  | Abid [40%] | 4h | 3.2h |
| 91 | 1.1.1.9.4 | Fixes for point identified in Review. |  | 4.45h? | 2025-04-08 08:01 A | 2025-04-08 13:28 | 88 | 80% | 0.88h? | 18.3d | 0d |  | Arslan [90%] | 4h | 3.21h |
| 92 | 1.1.1.10 | **Ability to create templates across multiple Companies** |  | 7.94d? | 2025-04-08 14:35 | 2025-04-18 14:08 |  |  |  | 11.03d | 0d |  |  | 66h |  |
| 93 | 1.1.1.10.1 | Dot Net |  | 51.11h? | 2025-04-08 14:35 | 2025-04-17 08:41 | 110 |  |  | 18.3d | 0d |  | Arslan [90%] | 46h |  |
| 94 | 1.1.1.10.2 | DB |  | 17.14h? | 2025-04-10 11:46 | 2025-04-14 13:55 | 80, 364 |  |  | 9.25d | 0d |  | Yasir [70%] | 12h |  |
| 95 | 1.1.1.10.3 | Review and Management |  | 8h? | 2025-04-17 08:41 | 2025-04-18 08:41 | 93 |  |  | 18.3d | 0d |  | Abid [50%] | 4h |  |
| 96 | 1.1.1.10.4 | Fixes for point identified in Review. |  | 4.45h? | 2025-04-18 08:41 | 2025-04-18 14:08 | 95 |  |  | 18.3d | 0d |  | Arslan [90%] | 4h |  |
| 97 | 1.1.1.11 | **Ability to Approve the invoice when resolving discrepancy - provided that the discrepancy resolver is the Approver as well (Move from discpancy to pending; finance review and approve then HOLD and review later)** |  | 9.9d? | 2025-04-18 14:08 | 2025-05-02 13:21 |  |  |  | 13.54d | 0d |  |  | 40h |  |
| 98 | 1.1.1.11.1 | Dot Net |  | 26.67h | 2025-04-18 14:08 | 2025-04-23 16:48 | 96 |  |  | 18.3d | 0d |  | Arslan [90%] | 24h |  |
| 99 | 1.1.1.11.2 | DB |  | 11.43h | 2025-05-01 08:55 | 2025-05-02 13:21 | 61 |  |  | 9.25d | 0d |  | Yasir [70%] | 8h |  |
| 100 | 1.1.1.11.3 | Review and Management |  | 10h | 2025-04-23 16:48 | 2025-04-25 09:48 | 98 |  |  | 18.3d | 0.77d |  | Abid [40%] | 4h |  |
| 101 | 1.1.1.11.4 | Review Fixes |  | 4.45h? | 2025-04-28 08:00 | 2025-04-28 13:26 | 100 |  |  | 17.52d | 8.27d |  | Arslan [90%] | 4h |  |
| 102 | 1.1.1.12 | **APWorks - separate the financial integration API from the main application** |  | 16.67d? | 2025-04-07 08:00 | 2025-04-29 14:20 |  |  |  | 15d | 0d | start no earlier than 2025-04-07 08:00 |  | 40h |  |
| 103 | 1.1.1.12.1 | Application Structure changes |  | 133.33h? | 2025-04-07 08:00 | 2025-04-29 14:20 |  |  |  | 15d | 5.41d |  | Abid [30%] | 40h |  |
| 104 | 1.1.1.12.2 | Dot Net - Local application changes | inactive | 33.33h? | 2025-05-07 08:35 | 2025-05-13 09:55 | 103, 86 |  |  | 5.43d | 0d |  | Asad [90%] | 30h |  |
| 105 | 1.1.1.12.3 | DB |  | 8h? | 2025-04-07 08:00 | 2025-04-07 17:00 |  |  |  | 30.67d |  |  |  |  |  |
| 106 | 1.1.1.12.4 | Review and Management |  | 8h? | 2025-04-07 08:00 | 2025-04-07 17:00 |  |  |  | 30.67d |  |  |  |  |  |
| 107 | 1.1.1.12.5 | Deployment |  | 8h? | 2025-04-07 08:00 | 2025-04-07 17:00 |  |  |  | 30.67d |  |  |  |  |  |
| 108 | 1.1.1.13 | **Descripent gadget: show invoice# column** |  | 13.7d? | 2025-03-17 08:00 | 2025-04-08 14:35 |  |  |  | 31.86d |  |  |  | 2h |  |
| 109 | 1.1.1.13.1 | DB |  | 1.43h? | 2025-03-17 08:00 | 2025-03-17 09:25 |  |  |  | 52.82d |  |  | Yasir [70%] | 1h |  |
| 110 | 1.1.1.13.2 | DotNet |  | 1.11h? | 2025-04-08 13:28 | 2025-04-08 14:35 | 91 |  |  | 18.3d | 0d |  | Arslan [90%] | 1h |  |
| 111 | 1.1.2 | Remove "Managed non mapped invoices" link from left menu |  | 8h? | 2025-03-17 08:00 | 2025-03-17 17:00 |  |  |  | 52d |  |  |  |  |  |
| 112 | 1.1.3 | Fw: Mediaocean Ticket #1135489 - Isue between APworks and Media Ocean for invoice posting |  | 8h? | 2025-03-17 08:00 | 2025-03-17 17:00 |  |  |  | 52d |  |  |  |  |  |
| 113 | 1.1.4 | Show Vendor Name on 'Insertion Order' report. |  | 8h? | 2025-03-17 08:00 | 2025-03-17 17:00 |  |  |  | 52d |  |  |  |  |  |
| 114 | 1.1.5 | Show Media plan name on 'Vendor Invoices' report. |  | 8h? | 2025-03-17 08:00 | 2025-03-17 17:00 |  |  |  | 52d |  |  |  |  |  |
| 115 | 1.1.6 | Packaging and Code review |  | 266.67h? | 2025-03-17 08:00 | 2025-05-06 10:40 |  |  |  | 19.67d |  |  | Arif [15%] | 40h |  |
| 116 | 1.1.7 | Azure service version upgrade |  | 8h? | 2025-03-17 08:00 | 2025-03-17 17:00 |  |  |  | 52d |  |  |  |  |  |

Notes:
- 87: Comments: Add Key value pair option in vendor mapping to pick the value.

| ID | WBS | Task | Duration | Start | Finish | Predecessors | Total slack | Free slack | Resources | Work |
| --- | --- | --- | --- | --- | --- | --- | --- | --- | --- | --- |
| 117 | 1.1.8 | **QA** | 40.87d? | 2025-03-17 08:00 | 2025-05-15 15:59 |  | 9.25d | 0d |  | 416h |
| 118 | 1.1.8.1 | **Testing Case Writing** | 7.44d? | 2025-03-17 08:00 | 2025-03-26 11:30 |  | 37.76d |  |  | 87h |
| 119 | 1.1.8.1.1 | Standardize the Status in Dashboard vs reports | 2.5h? | 2025-03-17 08:00 | 2025-03-17 10:30 |  | 37.76d | 0d | Kashif [80%] | 2h |
| 120 | 1.1.8.1.2 | Optimizing data retrieval processes to enhance performance, reduce processing time, and improve system efficiency | 10h? | 2025-03-17 10:30 | 2025-03-18 13:30 | 119 | 37.76d | 0d | Kashif [80%]; Ayesha [80%] | 16h |
| 121 | 1.1.8.1.3 | Credit Memo | 15h? | 2025-03-18 13:30 | 2025-03-20 11:30 | 120 | 37.76d | 0d | Ayesha [80%] | 12h |
| 122 | 1.1.8.1.4 | Ability to create templates across multiple Companies | 7.5h? | 2025-03-18 13:30 | 2025-03-19 12:00 | 120 | 39.6d | 0d | Kashif [80%] | 6h |
| 123 | 1.1.8.1.5 | Split invoice by MOS - Print / OOH / Digital | 8h? | 2025-03-17 08:00 | 2025-03-17 17:00 |  | 48.12d | 0d |  |  |
| 124 | 1.1.8.1.6 | Restriction by user group on which fields can be edited (all fields blocked for Media except clients) | 25h? | 2025-03-20 11:30 | 2025-03-25 13:30 | 121 | 37.76d | 0d | Ayesha [80%] | 20h |
| 125 | 1.1.8.1.7 | In dashboard, manage invoice document screen, unmatch screen for Media discrepancy and other screens and reports, after the invoice is linked to an i/O and one client identified, client # should be displayed automatically. In cases where IO not found, Fin | 5h? | 2025-03-19 13:00 | 2025-03-20 09:00 | 122 | 39.6d | 0d | Kashif [80%] | 4h |
| 126 | 1.1.8.1.8 | Warren Lamb provided PDF ingestion | 10h? | 2025-03-20 09:00 | 2025-03-21 11:00 | 125 | 39.6d | 0d | Kashif [80%] | 8h |
| 127 | 1.1.8.1.9 | Ability to Approve the invoice when resolving discrepancy - provided that the discrepancy resolver is the Approver as well (Move from discpancy to pending; finance review and approve then HOLD and review later) | 5h? | 2025-03-25 13:30 | 2025-03-26 09:30 | 124 | 41.22d | 0d | Ayesha [80%] | 4h |
| 128 | 1.1.8.1.10 | Auto populate call letters; media type and band after 1st mapping | 5h? | 2025-03-21 11:00 | 2025-03-21 17:00 | 126 | 39.6d | 0d | Kashif [80%] | 4h |
| 129 | 1.1.8.1.11 | APWorks - seperate the financial integration API from the main application | 12.5h? | 2025-03-24 08:00 | 2025-03-25 13:30 | 128 | 39.6d | 24.6d | Kashif [80%] | 10h |
| 130 | 1.1.8.1.12 | Descripent gadget: show invoice# column | 2h? | 2025-03-26 09:30 | 2025-03-26 11:30 | 127 | 42.69d |  | Ayesha [50%] | 1h |
| 131 | 1.1.8.2 | **Testing** | 35.32d? | 2025-03-17 08:00 | 2025-05-08 10:35 |  | 14.8d |  |  | 145h |
| 132 | 1.1.8.2.1 | Standardize the Status in Dashboard vs reports | 2.5h? | 2025-04-21 16:45 | 2025-04-22 10:15 | 9 | 15.35d | 0d | Kashif [80%] | 2h |
| 133 | 1.1.8.2.2 | Optimizing data retrieval processes to enhance performance, reduce processing time, and improve system efficiency | 18.75h? | 2025-04-22 10:15 | 2025-04-24 14:00 | 9, 132 | 15.35d | 2.96d | Kashif [80%]; Ayesha [80%] | 30h |
| 134 | 1.1.8.2.3 | Credit Memo | 20h? | 2025-05-01 08:55 | 2025-05-05 13:55 | 59 | 11.04d | 1.79d | Ayesha [80%] | 16h |
| 135 | 1.1.8.2.4 | Ability to create templates across multiple Companies | 15h? | 2025-04-18 14:08 | 2025-04-22 13:08 | 92 | 21.56d | 12.31d | Kashif [80%] | 12h |
| 136 | 1.1.8.2.5 | Split invoice by MOS - Print / OOH / Digital | 8h? | 2025-03-17 08:00 | 2025-03-17 17:00 |  | 48.12d | 0d |  |  |
| 137 | 1.1.8.2.6 | Restriction by user group on which fields can be edited (all fields blocked for Media except clients) | 50h? | 2025-04-29 13:40 | 2025-05-07 15:40 | 70 | 9.49d | 0d | Ayesha [80%] | 40h |
| 138 | 1.1.8.2.7 | In dashboard, manage invoice document screen, unmatch screen for Media discrepancy and other screens and reports, after the invoice is linked to an i/O and one client identified, client # should be displayed automatically. In cases where IO not found, Fin | 5h? | 2025-04-07 15:51 | 2025-04-08 11:51 | 78 | 35.04d | 25.2d | Kashif [80%] | 4h |
| 139 | 1.1.8.2.8 | Warren Lamb provided PDF ingestion | 10h? | 2025-05-07 08:35 | 2025-05-08 10:35 | 82 | 13.55d | 2.5d | Kashif [80%] | 8h |
| 140 | 1.1.8.2.9 | Ability to Approve the invoice when resolving discrepancy - provided that the discrepancy resolver is the Approver as well (Move from discpancy to pending; finance review and approve then HOLD and review later) | 10h? | 2025-05-02 13:21 | 2025-05-05 15:21 | 97 | 15.61d | 0d | Ayesha [80%] | 8h |
| 141 | 1.1.8.2.10 | Auto populate call letters; media type and band after 1st mapping | 10h? | 2025-04-09 10:01 | 2025-04-10 13:01 | 87 | 33.91d | 0d | Kashif [80%] | 8h |
| 142 | 1.1.8.2.11 | APWorks - seperate the financial integration API from the main application | 20h? | 2025-04-29 14:20 | 2025-05-02 09:20 | 102 | 15d | 0d | Kashif [80%] | 16h |
| 143 | 1.1.8.2.12 | Descripent gadget: show invoice# column | 2h? | 2025-03-17 08:00 | 2025-03-17 10:00 |  | 49.88d |  | Ayesha [50%] | 1h |

| ID | WBS | Task | Duration | Start | Finish | Predecessors | Total slack | Free slack | Resources | Work |
| --- | --- | --- | --- | --- | --- | --- | --- | --- | --- | --- |
| 144 | 1.1.8.3 | **Bug Fixing and verification** | 39.87d? | 2025-03-18 08:00 | 2025-05-15 15:59 |  | 9.25d |  |  | 184h |
| 145 | 1.1.8.3.1 | **Standardize the Status in Dashboard vs reports** | 0.33d? | 2025-05-02 13:21 | 2025-05-02 16:01 | 132, 119 | 9.25d |  |  | 2h |
| 146 | 1.1.8.3.1.1 | DB - bug fixing | 1.43h? | 2025-05-02 13:21 | 2025-05-02 14:46 | 99 | 9.25d | 0d | Yasir [70%] | 1h |
| 147 | 1.1.8.3.1.2 | Bug verication | 1.25h? | 2025-05-02 14:46 | 2025-05-02 16:01 | 146 | 18.25d |  | Kashif [80%] | 1h |
| 148 | 1.1.8.3.2 | **Optimizing data retrieval processes to enhance performance, reduce processing time, and improve system efficiency** | 7.99d? | 2025-04-29 13:40 | 2025-05-09 13:35 | 133, 120 | 12.39d |  |  | 39h |
| 149 | 1.1.8.3.2.1 | DB - Bug Fixing | 21.43h? | 2025-05-02 14:46 | 2025-05-07 11:12 | 146 | 9.25d | 0d | Yasir [70%] | 15h |
| 150 | 1.1.8.3.2.2 | DotNet Bug fixing - Ali | 8.89h? | 2025-04-29 13:40 | 2025-04-30 14:33 | 73 | 14.63d | 5.14d | Ali [90%] | 8h |
| 151 | 1.1.8.3.2.3 | DotNet bug fixing - Asad | 10h? | 2025-05-07 08:35 | 2025-05-08 10:35 | 104 | 10.58d | 0d | Asad [80%] | 8h |
| 152 | 1.1.8.3.2.4 | Bugs verification | 10h? | 2025-05-08 10:35 | 2025-05-09 13:35 | 150, 151 | 13.55d |  | Kashif [80%] | 8h |
| 153 | 1.1.8.3.3 | **Credit Memo** | 3.42d? | 2025-05-07 11:12 | 2025-05-12 15:35 | 134, 121 | 9.25d |  |  | 24h |
| 154 | 1.1.8.3.3.1 | DB - Bug Fixing | 11.43h? | 2025-05-07 11:12 | 2025-05-08 15:38 | 149 | 9.25d | 0d | Yasir [70%] | 8h |
| 155 | 1.1.8.3.3.2 | DotNet - Bug fixing | 10h? | 2025-05-08 10:35 | 2025-05-09 13:35 | 151 | 10.58d | 0d | Asad [80%] | 8h |
| 156 | 1.1.8.3.3.3 | Bugs verification | 10h? | 2025-05-09 13:35 | 2025-05-12 15:35 | 154, 155 | 12.3d |  | Ayesha [80%] | 8h |
| 157 | 1.1.8.3.4 | **Ability to create templates across multiple Companies** | 2.93d? | 2025-05-08 15:38 | 2025-05-13 15:05 | 135, 122 | 9.25d |  |  | 18h |
| 158 | 1.1.8.3.4.1 | DB - Bug Fixing | 5.71h? | 2025-05-08 15:38 | 2025-05-09 13:21 | 101, 154 | 9.25d | 0d | Yasir [70%] | 4h |
| 159 | 1.1.8.3.4.2 | DotNet - Bug fixing | 10h? | 2025-05-09 13:35 | 2025-05-12 15:35 | 155 | 10.58d | 0d | Arslan [80%] | 8h |
| 160 | 1.1.8.3.4.3 | Bugs verification | 7.5h? | 2025-05-12 15:35 | 2025-05-13 15:05 | 158, 159 | 11.36d |  | Kashif [80%] | 6h |
| 161 | 1.1.8.3.5 | Split invoice by MOS - Print / OOH / Digital | 8h? | 2025-03-18 08:00 | 2025-03-18 17:00 | 136, 123 | 48.12d |  |  |  |
| 162 | 1.1.8.3.6 | **Restriction by user group on which fields can be edited (all fields blocked for Media except clients)** | 6.04d? | 2025-05-07 15:40 | 2025-05-15 15:59 | 137, 124 | 9.25d |  |  | 52h |
| 163 | 1.1.8.3.6.1 | DB - Bug Fixing | 17.14h? | 2025-05-09 13:21 | 2025-05-13 14:29 | 158 | 9.25d | 0d | Yasir [70%] | 12h |
| 164 | 1.1.8.3.6.2 | DotNet - Bug fixing | 28.89h? | 2025-05-07 15:40 | 2025-05-13 11:33 | 150 | 9.49d | 0.24d | Ali [90%] | 26h |
| 165 | 1.1.8.3.6.3 | Bugs verification | 17.5h? | 2025-05-13 14:29 | 2025-05-15 15:59 | 163, 164 | 9.25d |  | Ayesha [80%] | 14h |
| 166 | 1.1.8.3.7 | **In dashboard, manage invoice document screen, unmatch screen for Media discrepancy and other screens and reports, after the invoice is linked to an i/O and one client identified, client # should be displayed automatically. In cases where IO not found, Fin** | 0.33d? | 2025-05-13 14:29 | 2025-05-14 08:10 | 138, 125 | 9.83d |  |  | 2h |
| 167 | 1.1.8.3.7.1 | DB - Bug Fixing | 1.43h? | 2025-05-13 14:29 | 2025-05-13 15:55 | 163 | 9.83d | 0d | Yasir [70%] | 1h |
| 168 | 1.1.8.3.7.2 | Bugs verification | 1.25h? | 2025-05-13 15:55 | 2025-05-14 08:10 | 167 | 11.1d |  | Kashif [80%] | 1h |

| ID | WBS | Task | Duration | Start | Finish | Predecessors | Total slack | Free slack | Resources | Work |
| --- | --- | --- | --- | --- | --- | --- | --- | --- | --- | --- |
| 169 | 1.1.8.3.8 | **Warren Lamb provided PDF ingestion** | 1.25d? | 2025-05-12 15:35 | 2025-05-14 08:35 | 139, 126 | 11.05d |  |  | 8h |
| 170 | 1.1.8.3.8.1 | DotNet - Bug fixing | 6.25h? | 2025-05-12 15:35 | 2025-05-13 13:50 | 159 | 11.05d | 0d | Asad [80%] | 5h |
| 171 | 1.1.8.3.8.2 | Bugs verification | 3.75h? | 2025-05-13 13:50 | 2025-05-14 08:35 | 170 | 11.05d |  | Kashif [80%] | 3h |
| 172 | 1.1.8.3.9 | **Ability to Approve the invoice when resolving discrepancy - provided that the discrepancy resolver is the Approver as well (Move from discpancy to pending; finance review and approve then HOLD and review later)** | 6.79d? | 2025-05-05 15:21 | 2025-05-14 13:38 | 140, 127 | 10.55d |  |  | 16h |
| 173 | 1.1.8.3.9.1 | DB - Bug Fixing | 5.71h? | 2025-05-13 15:55 | 2025-05-14 13:38 | 167 | 9.83d | 0d | Yasir [70%] | 4h |
| 174 | 1.1.8.3.9.2 | DotNet - Bug fixing | 10h? | 2025-05-12 15:35 | 2025-05-14 08:35 | 159 | 10.58d | 0d | Arslan [80%] | 8h |
| 175 | 1.1.8.3.9.3 | Bugs verification | 5h? | 2025-05-05 15:21 | 2025-05-06 11:21 |  | 16.71d |  | Ayesha [80%] | 4h |
| 176 | 1.1.8.3.10 | **Auto populate call letters; media type and band after 1st mapping** | 24.79d? | 2025-04-10 13:01 | 2025-05-15 10:21 | 141, 128 | 9.83d |  |  | 11h |
| 177 | 1.1.8.3.10.1 | DB - Bug Fixing | 5.71h? | 2025-05-14 13:38 | 2025-05-15 10:21 | 173 | 9.83d |  | Yasir [70%] | 4h |
| 178 | 1.1.8.3.10.2 | DotNet - Bug fixing | 3.75h? | 2025-05-14 08:35 | 2025-05-14 13:20 | 174 | 10.58d |  | Arslan [80%] | 3h |
| 179 | 1.1.8.3.10.3 | Bugs verification | 5h? | 2025-04-10 13:01 | 2025-04-11 09:01 |  | 34d |  | Kashif [80%] | 4h |
| 180 | 1.1.8.3.11 | **APWorks - seperate the financial integration API from the main application** | 3.96d? | 2025-05-02 09:20 | 2025-05-08 09:00 | 142, 129 | 15d |  |  | 12h |
| 181 | 1.1.8.3.11.1 | DotNet - Bug fixing | 26.67h? | 2025-05-02 09:20 | 2025-05-07 12:00 |  | 15d | 0d | Abid [30%] | 8h |
| 182 | 1.1.8.3.11.2 | Bugs verification | 5h? | 2025-05-07 13:00 | 2025-05-08 09:00 | 181 | 15d |  | Kashif [80%] | 4h |
| 183 | 1.1.9 | **Integration Testing** | 1.88d? | 2025-05-15 15:59 | 2025-05-19 14:59 | 117 | 9.25d | 0d |  | 52h |
| 184 | 1.1.9.1 | Testing | 11.43h? | 2025-05-15 15:59 | 2025-05-19 10:25 |  | 9.7d |  | Bilal [70%] | 8h |
| 185 | 1.1.9.2 | Testing | 15h? | 2025-05-15 15:59 | 2025-05-19 14:59 |  | 9.25d |  | Kashif [80%] | 12h |
| 186 | 1.1.9.3 | Testing | 15h? | 2025-05-15 15:59 | 2025-05-19 14:59 |  | 9.25d |  | Ayesha [80%] | 12h |
| 187 | 1.1.9.4 | Bug fixing | 11.43h? | 2025-05-15 15:59 | 2025-05-19 10:25 |  | 9.7d |  | Ali [70%] | 8h |
| 188 | 1.1.9.5 | Bug fixing | 11.43h? | 2025-05-15 15:59 | 2025-05-19 10:25 |  | 9.7d |  | Asad [70%] | 8h |
| 189 | 1.1.9.6 | Review | 10h? | 2025-05-15 15:59 | 2025-05-19 08:59 |  | 9.88d |  | Abid [40%] | 4h |
| 190 | 1.1.10 | Ready For UAT | 8h? | 2025-05-19 14:59 | 2025-05-20 14:59 | 183 | 9.25d |  |  |  |
| 192 | 1.2 | **Nexelus** | 44.39d? | 2025-03-17 08:00 | 2025-05-21 11:08 |  | 8.61d |  |  | 672.4h |
| 193 | 1.2.1 | **Development** | 36.14d? | 2025-03-17 08:00 | 2025-05-09 09:08 |  | 9.7d |  |  | 467h |
| 194 | 1.2.1.1 | **Adding a 'Collapse All Packages/Placements' button on the Placements tab** | 1.25d? | 2025-03-17 08:00 | 2025-03-18 10:00 |  | 9.7d |  |  | 7h |
| 195 | 1.2.1.1.1 | DotNet | 5.55h | 2025-03-17 08:00 | 2025-03-17 14:33 |  | 9.7d | 0d | Arslan [90%] | 5h |
| 196 | 1.2.1.1.2 | Review and Management | 3.33h | 2025-03-17 14:33 | 2025-03-18 08:53 | 195 | 9.7d | 0d | Abid [30%] | 1h |
| 197 | 1.2.1.1.3 | Review Fixes | 1.11h? | 2025-03-18 08:53 | 2025-03-18 10:00 | 196 | 9.7d | 7.03d | Arslan [90%] | 1h |

| ID | WBS | Task | Type | Duration | Start | Finish | Predecessors | Total slack | Free slack | Constraint | Resources | Work |
| --- | --- | --- | --- | --- | --- | --- | --- | --- | --- | --- | --- | --- |
| 198 | 1.2.1.2 | **Allowing media plan changes directly within the Media Plan instead of navigating to the Campaign.** |  | 1.39d | 2025-03-27 10:15 | 2025-03-28 14:21 | 320 | 2.67d | 0d |  |  | 8h |
| 199 | 1.2.1.2.1 | DB | milestone | 0h | 2025-03-27 10:15 | 2025-03-27 10:15 |  | 37.16d |  |  | Arif [50%] |  |
| 200 | 1.2.1.2.2 | DotNet |  | 6.67h | 2025-03-27 10:15 | 2025-03-28 08:55 | 197 | 2.67d | 0d |  | Arslan [90%] | 6h |
| 201 | 1.2.1.2.3 | Review and Management |  | 3.33h | 2025-03-28 08:55 | 2025-03-28 13:15 | 200 | 2.67d | 0d |  | Abid [30%] | 1h |
| 202 | 1.2.1.2.4 | Fixes for point identified in Review. |  | 1.11h | 2025-03-28 13:15 | 2025-03-28 14:21 | 201 | 2.67d | 0d |  | Arslan [90%] | 1h |
| 203 | 1.2.1.3 | **Currency Rate changes** |  | 26.44d? | 2025-03-17 08:00 | 2025-04-25 11:33 |  | 10.31d | 0d |  |  | 140h |
| 204 | 1.2.1.3.1 | DB |  | 80h? | 2025-03-17 08:00 | 2025-03-28 17:00 |  | 26.75d | 0d |  | Arif [50%] | 40h |
| 205 | 1.2.1.3.2 | DotNet |  | 66.67h? | 2025-03-27 10:15 | 2025-04-15 13:55 | 31, 320 | 11.47d | 0d |  | Fawad [90%] | 60h |
| 206 | 1.2.1.3.3 | Review and Management |  | 13.33h? | 2025-04-15 13:55 | 2025-04-17 10:15 | 205 | 11.47d | 0d |  | Abid [30%] | 4h |
| 207 | 1.2.1.3.4 | Fixes for point identified in Review. |  | 4.45h? | 2025-04-17 10:15 | 2025-04-17 15:41 | 206 | 11.47d | 1.16d |  | Fawad [90%] | 4h |
| 208 | 1.2.1.3.5 | Changes recommended in meeting |  | 35.55h? | 2025-04-21 08:00 | 2025-04-25 11:33 | 207 | 10.31d | 0d | start no earlier than 2025-04-21 08:00 | Fawad [90%] | 32h |
| 209 | 1.2.1.4 | **Allow to issue RFP for site without actual Vendor** | inactive | 1d? | 2025-03-17 08:00 | 2025-03-17 17:00 |  | 45.06d | 9.3d |  |  |  |
| 210 | 1.2.1.4.1 | Dot Net | inactive | 8h? | 2025-03-17 08:00 | 2025-03-17 17:00 |  | 45.06d |  |  |  |  |
| 211 | 1.2.1.4.2 | DB | inactive | 8h? | 2025-03-17 08:00 | 2025-03-17 17:00 |  | 45.06d |  |  |  |  |
| 212 | 1.2.1.4.3 | Review and Management | inactive | 8h? | 2025-03-17 08:00 | 2025-03-17 17:00 |  | 45.06d |  |  |  |  |
| 213 | 1.2.1.4.4 | Fixes for point identified in Review. | inactive | 8h? | 2025-03-17 08:00 | 2025-03-17 17:00 |  | 45.06d |  |  |  |  |
| 214 | 1.2.1.5 | **DENTSU CHANGES** |  | 36.14d? | 2025-03-17 08:00 | 2025-05-09 09:08 |  | 8.61d | 0d |  |  | 81h |
| 215 | 1.2.1.5.1 | Job Close - DotNet |  | 8h? | 2025-04-30 08:00 | 2025-04-30 17:00 |  | 14.75d |  | start no earlier than 2025-04-30 08:00 | Abid [50%] | 4h |
| 216 | 1.2.1.5.2 | Restrict Aproval - Approval Chain UI Change |  | 10h? | 2025-03-17 08:00 | 2025-03-18 10:00 |  | 43.5d |  |  | Aimen [60%] | 6h |
| 217 | 1.2.1.5.3 | Restrict consective approval |  | 57.14h? | 2025-04-30 08:00 | 2025-05-09 09:08 |  | 8.61d |  | start no earlier than 2025-04-30 08:00 | Mazamal [70%] | 40h |
| 218 | 1.2.1.5.4 | DB |  | 50h? | 2025-04-03 08:00 | 2025-04-11 10:00 | 204 | 27.5d | 0d |  | Arif [50%] | 25h |
| 219 | 1.2.1.5.5 | Review and Management |  | 6.67h? | 2025-04-11 10:00 | 2025-04-14 08:40 | 218 | 27.67d |  |  | Abid [30%] | 2h |
| 220 | 1.2.1.5.6 | Fixes for point identified in Review. |  | 8h? | 2025-04-11 10:00 | 2025-04-14 10:00 | 218 | 27.5d | 10.75d |  | Arif [50%] | 4h |
| 221 | 1.2.1.6 | **Providing an option to include AdTech Fee in a separate invoice.** | inactive | 3.75d? | 2025-04-29 08:00 | 2025-05-02 15:00 |  | 14.31d | 0d | start no earlier than 2025-04-29 08:00 |  | 30h |
| 222 | 1.2.1.6.1 | Client Profile and Level3 Changes | inactive | 20h? | 2025-04-29 08:00 | 2025-05-01 12:00 |  | 15.56d |  |  | Mazamal [60%] | 12h |
| 223 | 1.2.1.6.2 | Dot Net | inactive | 30h? | 2025-04-29 08:00 | 2025-05-02 15:00 | 208 | 14.31d |  |  | Abid [40%] | 12h |
| 224 | 1.2.1.6.3 | DB | inactive | 12h? | 2025-04-29 08:00 | 2025-04-30 12:00 | 220 | 16.56d | 0d |  | Arif [50%] | 6h |
| 225 | 1.2.1.6.4 | Review and Management | inactive | 8h? | 2025-04-29 08:00 | 2025-04-29 17:00 |  | 17.06d |  |  |  |  |
| 226 | 1.2.1.6.5 | Fixes for point identified in Review. | milestone, inactive | 0h? | 2025-04-30 12:00 | 2025-04-30 12:00 | 224 | 16.56d | 0d |  | Arif [50%] |  |

| ID | WBS | Task | Type | Duration | Start | Finish | Predecessors | Total slack | Free slack | Constraint | Resources | Work | Comments |
| --- | --- | --- | --- | --- | --- | --- | --- | --- | --- | --- | --- | --- | --- |
| 227 | 1.2.1.7 | **Allowing manual adjustments for cases of partial billing by the client to align with their billing schedule** |  | 32d? | 2025-03-17 08:00 | 2025-05-02 17:00 |  | 12.81d | 4d |  |  | 46h |  |
| 228 | 1.2.1.7.1 | DB |  | 8h? | 2025-03-17 08:00 | 2025-03-17 17:00 |  | 43.81d |  |  |  |  |  |
| 229 | 1.2.1.7.2 | DotNet |  | 44.45h? | 2025-04-25 11:33 | 2025-05-02 17:00 | 208 | 12.81d | 0d |  | Fawad [90%] | 40h |  |
| 230 | 1.2.1.7.3 | Review and Management |  | 30h? | 2025-04-25 11:33 | 2025-05-01 09:33 | 208 | 14.62d |  |  | Abid [20%] | 6h |  |
| 231 | 1.2.1.7.4 | Fixes for point identified in Review. |  | 8h? | 2025-03-17 08:00 | 2025-03-17 17:00 |  | 43.81d |  |  |  |  |  |
| 232 | 1.2.1.8 | **Alerting users when an FX rate is unavailable to prevent the use of an incorrect rate** |  | 1d? | 2025-03-17 08:00 | 2025-03-17 17:00 |  | 50d | 13.98d |  |  | 8h |  |
| 233 | 1.2.1.8.1 | Dot Net |  | 8h? | 2025-03-17 08:00 | 2025-03-17 17:00 |  | 50d |  |  |  | 4h |  |
| 234 | 1.2.1.8.2 | DB |  | 8h? | 2025-03-17 08:00 | 2025-03-17 17:00 |  | 50d |  |  |  | 4h |  |
| 235 | 1.2.1.8.3 | Review and Management |  | 8h? | 2025-03-17 08:00 | 2025-03-17 17:00 |  | 50d |  |  |  |  |  |
| 236 | 1.2.1.8.4 | Fixes for point identified in Review. |  | 8h? | 2025-03-17 08:00 | 2025-03-17 17:00 |  | 50d |  |  |  |  |  |
| 237 | 1.2.1.9 | **Display Vendor distribution for individual client line under Client facing Tab** |  | 4.75d? | 2025-04-08 08:00 | 2025-04-14 15:00 |  | 33.25d | 0d | start no earlier than 2025-04-08 08:00 |  | 19h |  |
| 238 | 1.2.1.9.1 | DotNet |  | 32h? | 2025-04-08 08:00 | 2025-04-11 17:00 |  | 34.02d | 0d |  | Aimen [50%] | 16h |  |
| 239 | 1.2.1.9.2 | DB |  | 4h? | 2025-04-14 10:00 | 2025-04-14 15:00 | 226 | 29d | 0d |  | Arif [50%] | 2h |  |
| 240 | 1.2.1.9.3 | Review and Management. |  | 8h? | 2025-04-08 08:00 | 2025-04-08 17:00 |  | 37.02d |  |  |  | 1h |  |
| 241 | 1.2.1.10 | RE: Test site identifier |  | 8h? | 2025-03-17 08:00 | 2025-03-17 17:00 |  | 52d |  |  |  |  |  |
| 242 | 1.2.1.11 | **RE: TSY - UDF Order & Buy Details** | inactive | 0.95d? | 2025-04-14 08:00 | 2025-04-14 16:37 |  | 34.57d |  |  |  | 4h | Change file name for media plan export. |
| 243 | 1.2.1.11.1 | DotNet | inactive | 4.29h? | 2025-04-14 08:00 | 2025-04-14 13:17 | 238 | 34.57d | 0d |  | Aimen [70%] | 3h |  |
| 244 | 1.2.1.11.2 | Review and Management. | inactive | 3.33h? | 2025-04-14 13:17 | 2025-04-14 16:37 | 243 | 35.05d |  |  | Abid [30%] | 1h |  |
| 245 | 1.2.1.12 | **RE: PH IC: Update Trx UI is missng Exp type** | inactive | 19.75d? | 2025-03-17 08:00 | 2025-04-16 15:00 |  | 33.25d |  |  |  | 14h |  |
| 246 | 1.2.1.12.1 | DotNet | inactive | 7.14h? | 2025-04-14 13:17 | 2025-04-16 11:25 | 243 | 33.57d |  |  | Aimen [70%] | 5h |  |
| 247 | 1.2.1.12.2 | DB | inactive | 16h? | 2025-04-14 15:00 | 2025-04-16 15:00 | 239 | 27d | 16.69d |  | Arif [50%] | 8h |  |
| 248 | 1.2.1.12.3 | Review and Management. | inactive | 3.33h? | 2025-03-17 08:00 | 2025-03-17 11:20 |  | 52.58d |  |  | Abid [30%] | 1h |  |
| 249 | 1.2.1.13 | Re: [External]Re: Google Integration - Worthington (Garden Weasel) Media Plan |  | 8h? | 2025-03-17 08:00 | 2025-03-17 17:00 |  | 52d |  |  |  |  |  |
| 250 | 1.2.1.14 | **BO:Merge consective IO** |  | 7.14d? | 2025-03-17 08:00 | 2025-03-26 09:08 |  | 45.86d |  |  |  | 68h |  |
| 251 | 1.2.1.14.1 | .Net Development |  | 57.14h? | 2025-03-17 08:00 | 2025-03-26 09:08 |  | 45.86d |  |  | Muzamal [70%] | 40h |  |
| 252 | 1.2.1.14.2 | DB |  | 8h? | 2025-03-17 08:00 | 2025-03-17 17:00 |  | 52d |  |  |  | 8h |  |
| 253 | 1.2.1.14.3 | QA |  | 8h? | 2025-03-17 08:00 | 2025-03-17 17:00 |  | 52d |  |  |  | 20h |  |

| ID | WBS | Task | Type | Duration | Start | Finish | Predecessors | Total slack | Free slack | Resources | Work |
| --- | --- | --- | --- | --- | --- | --- | --- | --- | --- | --- | --- |
| 254 | 1.2.1.15 | **Vulnerabilities.** |  | 1d? | 2025-03-17 08:00 | 2025-03-17 17:00 |  | 52d |  |  | 90h |
| 255 | 1.2.1.15.1 | DotNet |  | 8h? | 2025-03-17 08:00 | 2025-03-17 17:00 |  | 52d |  |  | 80h |
| 256 | 1.2.1.15.2 | Review and Management. |  | 8h? | 2025-03-17 08:00 | 2025-03-17 17:00 |  | 52d |  |  | 10h |
| 257 | 1.2.1.16 | iPC Selfservice support |  | 8h? | 2025-03-17 08:00 | 2025-03-17 17:00 |  | 52d |  |  |  |
| 258 | 1.2.2 | **QA** |  | 31.02d? | 2025-03-28 14:21 | 2025-05-15 14:30 |  | 10.96d |  |  | 124h |
| 259 | 1.2.2.1 | Adding a 'Collapse All Packages/Placements' button on the Placements tab |  | 2.5h? | 2025-03-28 14:21 | 2025-03-28 16:51 | 198 | 35.77d | 0d | Hamza [80%] | 2h |
| 260 | 1.2.2.2 | Allowing media plan changes directly within the Media Plan instead of navigating to the Campaign. |  | 2.5h? | 2025-03-28 16:51 | 2025-04-03 10:21 | 259, 198 | 35.77d | 0d | Hamza [80%] | 2h |
| 261 | 1.2.2.3 | Allowing manual adjustments for cases of partial billing by the client to align with their billing schedule |  | 37.5h? | 2025-05-09 08:00 | 2025-05-15 14:30 | 227 | 8.81d | 0d | Hamza [80%] | 30h |
| 262 | 1.2.2.4 | Currency Rate changes |  | 80h? | 2025-04-25 11:33 | 2025-05-09 11:33 | 203 | 10.31d | 0d | Bilal [50%] | 40h |
| 263 | 1.2.2.5 | Allow to issue RFP for site without actual Vendor | milestone | 0h? | 2025-04-03 10:21 | 2025-04-03 10:21 | 209, 260 | 35.77d | 0d | Hamza [80%] |  |
| 264 | 1.2.2.6 | DENTSU CHANGES |  | 32h? | 2025-05-09 09:08 | 2025-05-15 09:08 | 214 | 8.61d | 0d | Bilal [50%] | 16h |
| 265 | 1.2.2.7 | Providing an option to include AdTech Fee in a separate invoice. |  | 37.5h? | 2025-04-03 10:21 | 2025-04-09 16:51 | 221, 263 | 35.77d | 0d | Hamza [80%] | 30h |
| 266 | 1.2.2.8 | Alerting users when an FX rate is unavailable to prevent the use of an incorrect rate | milestone | 0h? | 2025-04-09 16:51 | 2025-04-09 16:51 | 232, 265 | 36.02d | 0d | Hamza [80%] |  |
| 267 | 1.2.2.9 | Display Vendor distribution for individual client line under Client facing Tab |  | 5h? | 2025-04-14 15:00 | 2025-04-15 11:00 | 237 | 33.27d | 0d | Hamza [80%] | 4h |
| 268 | 1.2.3 | **Bug fixing and Verification** |  | 28.41d? | 2025-04-09 16:51 | 2025-05-20 11:08 |  | 8.61d | 0d |  | 73.4h |
| 269 | 1.2.3.1 | **Adding a 'Collapse All Packages/Placements' button on the Placements tab** |  | 5d? | 2025-05-05 08:00 | 2025-05-09 17:00 | 259 | 15d |  |  | 9.2h |
| 270 | 1.2.3.1.1 | Bug Fixing |  | 2.22h? | 2025-05-05 08:00 | 2025-05-05 10:13 | 229 | 15.83d | 0d | Fawad [90%] | 2h |
| 271 | 1.2.3.1.2 | Bug Verification |  | 8h? | 2025-05-09 08:00 | 2025-05-09 17:00 | 270 | 15d |  | Hamza [90%] | 7.2h |
| 272 | 1.2.3.2 | **Allowing media plan changes directly within the Media Plan instead of navigating to the Campaign.** |  | 4.72d? | 2025-05-05 10:13 | 2025-05-09 17:00 | 260 | 15d |  |  | 8.2h |
| 273 | 1.2.3.2.1 | Bug Fixing |  | 1.11h? | 2025-05-05 10:13 | 2025-05-05 11:20 | 270 | 15.83d | 3.58d | Fawad [90%] | 1h |
| 274 | 1.2.3.2.2 | Bug Verification |  | 8h? | 2025-05-09 08:00 | 2025-05-09 17:00 | 273 | 15d |  | Hamza [90%] | 7.2h |
| 275 | 1.2.3.3 | **Allowing manual adjustments for cases of partial billing by the client to align with their billing schedule** |  | 2.5d? | 2025-05-15 14:30 | 2025-05-20 09:30 | 261 | 8.81d |  |  | 16h |
| 276 | 1.2.3.3.1 | Bug Fixing |  | 20h? | 2025-05-15 14:30 | 2025-05-20 09:30 | 279 | 8.81d |  | Fawad [80%] | 16h |
| 277 | 1.2.3.3.2 | Bug Verification |  | 8h? | 2025-05-15 14:30 | 2025-05-16 14:30 |  | 10.31d |  |  |  |

| ID | WBS | Task | Type | Duration | Start | Finish | Predecessors | Complete | Total slack | Free slack | Constraint | Resources | Work | Actual work |
| --- | --- | --- | --- | --- | --- | --- | --- | --- | --- | --- | --- | --- | --- | --- |
| 278 | 1.2.3.4 | **Currency Rate changes** |  | 3d? | 2025-05-09 11:33 | 2025-05-14 11:33 | 262 |  | 10.31d |  |  |  | 20h |  |
| 279 | 1.2.3.4.1 | Bug Fixing |  | 10h? | 2025-05-09 11:33 | 2025-05-12 14:33 | 273 |  | 11.81d | 0.75d |  | Fawad [80%] | 8h |  |
| 280 | 1.2.3.4.2 | Bug Fixing - DB |  | 16h? | 2025-05-09 11:33 | 2025-05-13 11:33 | 247 |  | 10.31d | 0d |  | Arif [50%] | 8h |  |
| 281 | 1.2.3.4.3 | Bug Verification |  | 8h? | 2025-05-13 11:33 | 2025-05-14 11:33 | 279, 280 |  | 12.56d |  |  | Bilal [50%] | 4h |  |
| 282 | 1.2.3.5 | **Allow to issue RFP for site without actual Vendor** | inactive | 1d? | 2025-04-03 10:21 | 2025-04-04 10:21 | 263 |  | 40.7d |  |  |  |  |  |
| 283 | 1.2.3.5.1 | Bug Fixing | inactive | 8h? | 2025-04-03 10:21 | 2025-04-04 10:21 |  |  | 40.7d |  |  |  |  |  |
| 284 | 1.2.3.5.2 | Bug Verification | inactive | 8h? | 2025-04-03 10:21 | 2025-04-04 10:21 |  |  | 40.7d |  |  |  |  |  |
| 285 | 1.2.3.6 | **DENTSU CHANGES** |  | 3d? | 2025-05-15 09:08 | 2025-05-20 09:08 | 264 |  | 8.61d |  |  |  | 12h |  |
| 286 | 1.2.3.6.1 | Bug Fixing |  | 16h? | 2025-05-15 09:08 | 2025-05-19 09:08 | 280 |  | 8.61d | 0d |  | Arif [50%] | 8h |  |
| 287 | 1.2.3.6.2 | Bug Verification |  | 8h? | 2025-05-19 09:08 | 2025-05-20 09:08 | 286 |  | 8.86d |  |  | Bilal [50%] | 4h |  |
| 288 | 1.2.3.7 | **Providing an option to include AdTech Fee in a separate invoice.** |  | 1.25d? | 2025-05-19 09:08 | 2025-05-20 11:08 | 265 |  | 8.61d |  |  |  | 5h |  |
| 289 | 1.2.3.7.1 | Bug Fixing |  | 4h? | 2025-05-19 09:08 | 2025-05-19 14:08 | 286 |  | 8.61d | 0d |  | Arif [50%] | 2h |  |
| 290 | 1.2.3.7.2 | Bug Verification |  | 6h? | 2025-05-19 14:08 | 2025-05-20 11:08 | 289 |  | 8.61d |  |  | Bilal [50%] | 3h |  |
| 291 | 1.2.3.8 | **Alerting users when an FX rate is unavailable to prevent the use of an incorrect rate** |  | 1d? | 2025-04-09 16:51 | 2025-04-10 16:51 | 266 |  | 36.02d |  |  |  |  |  |
| 292 | 1.2.3.8.1 | Bug Fixing |  | 8h? | 2025-04-09 16:51 | 2025-04-10 16:51 |  |  | 36.02d |  |  |  |  |  |
| 293 | 1.2.3.8.2 | Bug Verification |  | 8h? | 2025-04-09 16:51 | 2025-04-10 16:51 |  |  | 36.02d |  |  |  |  |  |
| 294 | 1.2.3.9 | **Display Vendor distribution for individual client line under Client facing Tab** |  | 0.98d? | 2025-04-15 11:00 | 2025-04-16 10:51 | 267 |  | 32.64d |  |  |  | 3h |  |
| 295 | 1.2.3.9.1 | Bug Fixing |  | 2.86h? | 2025-04-16 08:00 | 2025-04-16 10:51 |  |  | 32.64d |  |  | Aimen [70%] | 2h |  |
| 296 | 1.2.3.9.2 | Bug Verification |  | 1.43h? | 2025-04-15 11:00 | 2025-04-15 13:25 |  |  | 33.45d |  |  | Hamza [70%] | 1h |  |
| 297 | 1.2.4 | Integration Testing |  | 8h? | 2025-05-20 11:08 | 2025-05-21 11:08 | 268 |  | 8.61d |  |  |  | 8h |  |
| 299 | 2 | **Nexelus 2025.1 SP1** |  | 7.64d? | 2025-03-20 08:00 A | 2025-04-03 14:08 A |  | 100% |  |  | start no earlier than 2025-03-20 08:00 |  | 87h | 87h |
| 300 | 2.1 | Brainstorming |  | 4h? | 2025-03-20 08:00 A | 2025-03-20 12:00 A |  | 100% |  |  |  | Abid [50%]; Arslan [50%]; Fawad [50%] | 6h | 6h |
| 301 | 2.2 | **Development** |  | 3.78d? | 2025-03-20 13:00 A | 2025-03-26 10:15 A | 300 | 100% |  |  |  |  | 49h | 49h |
| 302 | 2.2.1 | **TTD: Generate schedule based on Placement Flights** |  | 3.66d? | 2025-03-20 13:00 A | 2025-03-26 09:15 A |  | 100% |  |  |  |  | 26h | 26h |
| 303 | 2.2.1.1 | DB |  | 8h? | 2025-03-20 13:00 A | 2025-03-21 12:00 A |  | 100% |  |  |  |  |  |  |
| 304 | 2.2.1.2 | DotNet |  | 20h? | 2025-03-20 13:00 A | 2025-03-24 17:00 A |  | 100% |  |  |  | Arslan [80%] | 16h | 16h |
| 305 | 2.2.1.3 | Review and Management |  | 2h? | 2025-03-25 08:00 A | 2025-03-25 10:00 A | 304 | 100% |  |  |  | Abid [50%] | 1h | 1h |
| 306 | 2.2.1.4 | Fixes for point identified in Review. |  | 1.25h? | 2025-03-25 08:00 A | 2025-03-25 09:15 A | 304 | 100% |  |  |  | Arslan [80%] | 1h | 1h |
| 307 | 2.2.1.5 | QA |  | 8h? | 2025-03-25 09:15 A | 2025-03-26 09:15 A | 306 | 100% |  |  |  | Bilal [50%] | 4h | 4h |
| 308 | 2.2.1.6 | Bug Fixing |  | 2.5h? | 2025-03-25 09:15 A | 2025-03-25 11:45 A | 306 | 100% |  |  |  | Arslan [80%] | 2h | 2h |
| 309 | 2.2.1.7 | Bugs verification |  | 4h? | 2025-03-25 11:45 A | 2025-03-25 16:45 A | 308 | 100% |  |  |  | Bilal [50%] | 2h | 2h |

| ID | WBS | Task | Type | Duration | Start | Finish | Predecessors | Complete | Total slack | Resources | Work | Actual work |
| --- | --- | --- | --- | --- | --- | --- | --- | --- | --- | --- | --- | --- |
| 310 | 2.2.2 | **Provide end date column in flight import export.** |  | 3.78d? | 2025-03-20 13:00 A | 2025-03-26 10:15 A |  | 100% |  |  | 23h | 23h |
| 311 | 2.2.2.1 | DB |  | 8h? | 2025-03-20 13:00 A | 2025-03-21 12:00 A |  | 100% |  |  |  |  |
| 312 | 2.2.2.2 | DotNet |  | 15h? | 2025-03-20 13:00 A | 2025-03-24 11:00 A |  | 100% |  | Fawad [80%] | 12h | 12h |
| 313 | 2.2.2.3 | Review and Management |  | 4h? | 2025-03-24 11:00 A | 2025-03-24 16:00 A | 312 | 100% |  | Abid [50%] | 2h | 2h |
| 314 | 2.2.2.4 | Fixes for point identified in Review. |  | 1.25h? | 2025-03-24 16:00 A | 2025-03-25 08:15 A | 313 | 100% |  | Fawad [80%] | 1h | 1h |
| 315 | 2.2.2.5 | QA |  | 5h? | 2025-03-25 08:15 A | 2025-03-25 14:15 A | 314 | 100% |  | Hamza [80%] | 4h | 4h |
| 316 | 2.2.2.6 | Bug Fixing |  | 2.5h? | 2025-03-25 14:15 A | 2025-03-25 16:45 A | 315 | 100% |  | Fawad [80%] | 2h | 2h |
| 317 | 2.2.2.7 | Bugs verification |  | 2.5h? | 2025-03-25 16:45 A | 2025-03-26 10:15 A | 316 | 100% |  | Hamza [80%] | 2h | 2h |
| 318 | 2.3 | **QA** |  | 1.25d? | 2025-03-26 10:15 A | 2025-03-27 13:15 A |  | 100% |  |  | 16h | 16h |
| 319 | 2.3.1 | Integration Testing |  | 10h? | 2025-03-26 10:15 A | 2025-03-27 13:15 A | 302, 310 | 100% |  | Bilal [80%] | 8h | 8h |
| 320 | 2.3.2 | Bug fixing |  | 8h? | 2025-03-26 10:15 A | 2025-03-27 10:15 A | 302, 310 | 100% |  | Fawad [50%]; Arslan [50%] | 8h | 8h |
| 321 | 2.4 | Release environment upgrade | inactive | 14.03h? | 2025-03-27 13:15 | 2025-04-03 14:08 | 318 |  | 42.36d | Bilal [50%]; Hamza [80%]; Ayesha [80%] | 16h |  |
| 322 | 2.5 | UAT Upgrade |  | 14.03h? | 2025-03-27 13:15 A | 2025-04-03 14:08 A | 321 | 100% |  | Bilal [50%]; Hamza [80%]; Ayesha [80%] | 16h | 16h |
| 324 | 3 | **Management** |  | 53d? | 2025-03-17 08:00 | 2025-06-02 17:00 |  |  | 0d |  | 460h |  |
| 325 | 3.1 | Project Management and Team Task Review and Technical support |  | 350h? | 2025-03-17 08:00 | 2025-05-20 15:00 |  |  | 9.25d | Abid [20%] | 70h |  |
| 326 | 3.2 | **Daily Development Meetings** |  | 53d? | 2025-03-17 08:00 | 2025-06-02 17:00 |  |  | 0d |  | 180h |  |
| 327 | 3.2.1 | Daily Development Meeting |  | 400h? | 2025-03-17 08:00 | 2025-05-28 17:00 |  |  | 3d | Abid [5%] | 20h |  |
| 328 | 3.2.2 | Daily Development Meeting |  | 400h? | 2025-03-17 08:00 | 2025-05-28 17:00 |  |  | 3d | Ali [5%] | 20h |  |
| 329 | 3.2.3 | Daily Development Meeting |  | 400h? | 2025-03-17 08:00 | 2025-06-02 17:00 |  |  | 0d | Asad [5%] | 20h |  |
| 330 | 3.2.4 | Daily Development Meeting |  | 400h? | 2025-03-17 08:00 | 2025-05-30 17:00 |  |  | 1d | Fawad [5%] | 20h |  |
| 331 | 3.2.5 | Daily Development Meeting |  | 400h? | 2025-03-17 08:00 | 2025-05-30 17:00 |  |  | 1d | Arslan [5%] | 20h |  |
| 332 | 3.2.6 | Daily Development Meeting |  | 400h? | 2025-03-17 08:00 | 2025-05-29 17:00 |  |  | 2d | Aimen [5%] | 20h |  |
| 333 | 3.2.7 | Daily Development Meeting |  | 400h? | 2025-03-17 08:00 | 2025-05-28 17:00 |  |  | 3d | Arif [5%] | 20h |  |
| 334 | 3.2.8 | Daily Development Meeting |  | 400h? | 2025-03-17 08:00 | 2025-05-28 17:00 |  |  | 3d | Yasir [5%] | 20h |  |
| 335 | 3.2.9 | Daily Development Meeting |  | 400h? | 2025-03-17 08:00 | 2025-05-29 17:00 |  |  | 2d | Bilal [5%] | 20h |  |

| ID | WBS | Task | Duration | Start | Finish | Predecessors | Total slack | Free slack | Constraint | Resources | Work |
| --- | --- | --- | --- | --- | --- | --- | --- | --- | --- | --- | --- |
| 336 | 3.3 | **Daily Support Meetings** | 50d? | 2025-03-17 08:00 | 2025-05-28 17:00 |  | 3d |  |  |  | 130h |
| 337 | 3.3.1 | Daily Support Meeting | 400h? | 2025-03-17 08:00 | 2025-05-28 17:00 |  | 3d |  |  | Asim [10%] | 40h |
| 338 | 3.3.2 | Daily Support Meeting | 375h? | 2025-03-17 08:00 | 2025-05-23 16:00 |  | 6.12d |  |  | Abid [8%] | 30h |
| 339 | 3.3.3 | Daily Support Meeting | 375h? | 2025-03-17 08:00 | 2025-05-26 16:00 |  | 5.12d |  |  | Bilal [8%] | 30h |
| 340 | 3.3.4 | Daily Support Meeting | 375h? | 2025-03-17 08:00 | 2025-05-23 16:00 |  | 6.12d |  |  | Arif [8%] | 30h |
| 341 | 3.4 | **Project Weekly Review Meetings** | 1d? | 2025-03-17 08:00 | 2025-03-17 17:00 |  | 52d |  |  |  |  |
| 342 | 3.4.1 | Project Weekly Review Meetings | 8h? | 2025-03-17 08:00 | 2025-03-17 17:00 |  | 52d |  |  |  |  |
| 343 | 3.4.2 | Project Weekly Review Meetings | 8h? | 2025-03-17 08:00 | 2025-03-17 17:00 |  | 52d |  |  |  |  |
| 344 | 3.4.3 | Project Weekly Review Meetings | 8h? | 2025-03-17 08:00 | 2025-03-17 17:00 |  | 52d |  |  |  |  |
| 345 | 3.4.4 | Project Weekly Review Meetings | 8h? | 2025-03-17 08:00 | 2025-03-17 17:00 |  | 52d |  |  |  |  |
| 346 | 3.4.5 | Project Weekly Review Meetings | 8h? | 2025-03-17 08:00 | 2025-03-17 17:00 |  | 52d |  |  |  |  |
| 347 | 3.5 | **Session with USA Team** | 46.88d? | 2025-03-17 08:00 | 2025-05-23 16:00 |  | 6.12d |  |  |  | 80h |
| 348 | 3.5.1 | Session with USA Team | 333.33h? | 2025-03-17 08:00 | 2025-05-16 14:20 |  | 11.33d |  |  | Asim [15%] | 50h |
| 349 | 3.5.2 | Session with USA Team | 375h? | 2025-03-17 08:00 | 2025-05-23 16:00 |  | 6.12d |  |  | Abid [8%] | 30h |
| 350 | 3.5.3 | Session with USA Team | 200h? | 2025-03-17 08:00 | 2025-04-23 17:00 |  | 28d |  |  |  |  |
| 351 | 3.5.4 | Support meeting with USA Team | 8h? | 2025-03-17 08:00 | 2025-03-17 17:00 |  | 52d |  |  |  |  |
| 352 | 4 | **Adhoc Items - Anticipated Resource Consumption** | 53d? | 2025-03-17 08:00 | 2025-06-02 17:00 |  | 0d |  |  |  | 140h |
| 353 | 4.1 | Adhoc items | 400h? | 2025-03-17 08:00 | 2025-05-28 17:00 |  | 3d |  |  | Arif [10%] | 40h |
| 354 | 4.2 | Adhoc items and queries | 400h? | 2025-03-17 08:00 | 2025-05-29 17:00 |  | 2d |  |  | Bilal [10%] | 40h |
| 355 | 4.3 | Adhoc items | 400h? | 2025-03-17 08:00 | 2025-05-28 17:00 |  | 3d |  |  | Abid [10%] | 40h |
| 356 | 4.4 | Adhoc items | 400h? | 2025-03-17 08:00 | 2025-06-02 17:00 |  | 0d |  |  | Asad [5%] | 20h |
| 357 | 5 | Meta API Upgrad by May 2025 | 8h? | 2025-03-17 08:00 | 2025-03-17 17:00 |  | 52d |  |  |  |  |
| 359 | 6 | **APWorks 2025.1 - hotfix_1** | 6d? | 2025-04-08 08:00 | 2025-04-15 17:00 |  | 9.25d |  | start no earlier than 2025-04-08 08:00 |  | 52h |
| 360 | 6.1 | **MediaOcian Posting: Create edi files again with default data.** | 5d? | 2025-04-08 08:00 | 2025-04-14 17:00 | 41 | 9.25d | 0d |  |  | 52h |
| 361 | 6.1.1 | Dot Net (new lambda and application changes) | 17.78h? | 2025-04-08 08:00 | 2025-04-10 09:46 |  | 9.25d | 0d |  | Asad [90%] | 16h |
| 362 | 6.1.2 | DB | 5.71h? | 2025-04-08 08:00 | 2025-04-08 14:42 |  | 14.87d |  |  | Yasir [70%] | 4h |
| 363 | 6.1.3 | Review and Management | 40h? | 2025-04-08 08:00 | 2025-04-14 17:00 |  | 10.58d |  |  | Abid [15%] | 6h |
| 364 | 6.1.4 | Packaging and deployment | 2h? | 2025-04-10 09:46 | 2025-04-10 11:46 | 361 | 9.25d | 0d |  | Yasir; Abid | 4h |
| 365 | 6.1.5 | QA | 8.89h? | 2025-04-10 11:46 | 2025-04-11 13:40 | 364 | 11.04d | 0d | start no earlier than 2025-04-10 08:00 | Kashif [90%] | 8h |
| 366 | 6.1.6 | Bug fixing | 4.45h? | 2025-04-14 08:00 | 2025-04-14 13:26 | 364 | 11.03d |  | start no earlier than 2025-04-14 08:00 | Asad [90%] | 4h |
| 367 | 6.1.7 | Bug verification and integration testing. | 7.69h? | 2025-04-11 13:40 | 2025-04-14 13:21 | 365 | 11.04d |  |  | Kashif [90%]; Bilal [40%] | 10h |
| 368 | 6.2 | Ready for Deployment | 8h? | 2025-04-15 08:00 | 2025-04-15 17:00 | 360 | 34d |  |  |  |  |

| ID | WBS | Task | Type | Duration | Start | Finish | Predecessors | Complete | Remaining | Total slack | Free slack | Constraint | Resources | Work | Comments |
| --- | --- | --- | --- | --- | --- | --- | --- | --- | --- | --- | --- | --- | --- | --- | --- |
| 370 | 7 | **Hotfixes** |  | 10d? | 2025-03-17 08:00 A | 2025-04-03 08:00 |  | 99% | 0d? | 43d |  |  |  |  |  |
| 371 | 7.1 | **Apworks** |  | 10d? | 2025-03-17 08:00 A | 2025-04-03 08:00 A |  | 100% |  |  |  |  |  |  |  |
| 372 | 7.1.1 | RE: APWorks - Broadcast PDF EDI Generation changes |  | 8h? | 2025-03-17 08:00 A | 2025-03-17 17:00 A |  | 100% |  |  |  |  |  |  | please exclude the invoice (INV# 200163) |
| 373 | 7.1.2 | RE: Error Occurred while fetching the records ( NEX 20818) | milestone | 0h? | 2025-04-03 08:00 A | 2025-04-03 08:00 A |  | 100% |  |  |  | start no earlier than 2025-04-03 08:00 | Arif |  |  |
| 374 | 7.2 | **Nexelus** |  | 0d? | 2025-04-03 08:00 A | 2025-04-03 08:00 |  |  | 0d? | 43d |  |  |  |  |  |
| 375 | 7.2.1 | RE: Delivery Override Data Discrepancy (NEX 20815) | milestone | 0h? | 2025-04-03 08:00 A | 2025-04-03 08:00 A |  | 100% |  |  |  | start no earlier than 2025-04-03 08:00 | Arif |  |  |
| 376 | 7.2.2 | RE: RFP submission to Site of an inactive vendor | milestone | 0h? | 2025-04-03 08:00 A | 2025-04-03 08:00 A |  | 100% |  |  |  | start no earlier than 2025-04-03 08:00 | Arif |  |  |
| 377 | 7.2.3 | RE: PH IC: Update Trx UI is missng Exp type | milestone | 0h? | 2025-04-03 08:00 | 2025-04-03 08:00 |  |  |  | 43d |  | start no earlier than 2025-04-03 08:00 | Arif |  |  |
| 378 | 7.2.4 | RE: Dentsu Ticket: RITM1337425 (NEX 20730) | milestone | 0h? | 2025-04-03 08:00 A | 2025-04-03 08:00 A |  | 100% |  |  |  | start no earlier than 2025-04-03 08:00 | Arif |  |  |
| 379 | 7.2.5 | RE: Update failed - Cannot save work ( NEX 20809) | milestone | 0h? | 2025-04-03 08:00 A | 2025-04-03 08:00 A |  | 100% |  |  |  | start no earlier than 2025-04-03 08:00 | Arif |  |  |
| 380 | 7.2.6 | Re: Propel Health - test file for HSTAR ONE LINE VOUCHER CUSTOM UPLOAD | milestone | 0h? | 2025-04-03 08:00 | 2025-04-03 08:00 |  |  |  | 43d |  | start no earlier than 2025-04-03 08:00 | Arshad |  |  |
| 381 | 8 | Meta API upgrade |  | 8h? | 2025-03-17 08:00 | 2025-03-17 17:00 |  |  |  | 52d |  |  | Muzamal | 8h | Breaking changes. |
| 382 | 9 | **Yahoo API Upgrade** |  | 1d? | 2025-03-17 08:00 | 2025-03-17 17:00 |  |  |  | 52d |  |  |  |  |  |
| 383 | 9.1 | DotNet |  | 8h? | 2025-03-17 08:00 | 2025-03-17 17:00 |  |  |  | 52d |  |  |  |  |  |
| 384 | 9.2 | Review and Management. |  | 8h? | 2025-03-17 08:00 | 2025-03-17 17:00 |  |  |  | 52d |  |  |  |  |  |
| 386 | 10 | **Nexelus 2025.1 Hotfix 2** |  | 1d? | 2025-03-17 08:00 | 2025-03-17 17:00 |  |  |  | 52d |  |  |  |  |  |
| 387 | 10.1 | BO:Merge consective IO |  | 8h? | 2025-03-17 08:00 | 2025-03-17 17:00 |  |  |  | 52d |  |  |  |  |  |
| 388 | 10.2 | RE: [External]Re: Google Integration - Worthington (Garden Weasel) Media Plan |  | 8h? | 2025-03-17 08:00 | 2025-03-17 17:00 |  |  |  | 52d |  |  |  |  |  |
| 390 | 11 | **APWorks 2025.1 Hotfix 2** |  | 38.33d? | 2025-03-17 08:00 | 2025-05-13 10:40 |  |  |  | 14.67d |  |  |  | 48h |  |
| 391 | 11.1 | Broadcast posting issue - Lambda creation to post existing invoices |  | 17.78h? | 2025-05-08 08:00 | 2025-05-12 09:46 |  |  |  | 14.67d | 0d | start no earlier than 2025-05-08 08:00 | Asad [90%] | 16h |  |
| 392 | 11.2 | Application change |  | 8.89h? | 2025-05-12 09:46 | 2025-05-13 10:40 | 391 |  |  | 14.67d |  |  | Asad [90%] | 8h |  |
| 393 | 11.3 | Database - Data fixes and changes |  | 34.29h? | 2025-05-06 08:00 | 2025-05-12 10:17 |  |  |  | 15.71d |  | start no earlier than 2025-05-06 08:00 | ArifK [70%] | 24h |  |
