Schedule from MS Project, 2025-06-17 to 2025-12-22.

## Calendars

- Standard: Mon-Fri 08:00-12:00, 13:00-17:00; Sat-Sun off. Exceptions (off unless hours are given): 2025-08-14 (Augus 14).

## Resources

| Resource |
| --- |
| Abid |
| Asad |
| Yasir |
| Arslan |
| Ali |
| Bilal |
| Asim |
| Muzamal |
| Arif |
| Hamza |
| Tao |
| Shoaib |
| Ayesha |
| Aimen |
| Kashif |

## Schedule

| ID | WBS | Task | Type | Duration | Start | Finish | Predecessors | Total slack | Free slack | Constraint | Resources | Work |
| --- | --- | --- | --- | --- | --- | --- | --- | --- | --- | --- | --- | --- |
| 1 | 1 | **2025.3** |  | 106.71d? | 2025-06-17 | 2025-11-13 |  | 26.5d |  |  |  | 4285.5h |
| 2 | 1.1 | **Nexelus** |  | 61.95d? | 2025-06-17 | 2025-09-11 |  | 53.54d |  |  |  | 1560h |
| 3 | 1.1.1 | Planning |  | 60h | 2025-06-17 | 2025-06-26 |  | 125.71d |  |  | Abid [50%] | 30h |
| 4 | 1.1.2 | Release briefing |  | 4.17h | 2025-06-23 | 2025-06-23 |  | 49.41d | 0d | start no earlier than 2025-06-23 | Muzamal [60%]; Bilal [60%]; Arif [60%]; Abid [60%] | 10h |
| 5 | 1.1.3 | **Delopment** |  | 45.59d? | 2025-06-23 | 2025-08-27 |  | 49.41d |  |  |  | 1220h |
| 6 | 1.1.3.1 | Rapid 7 Report Vulnerabilities. |  | 6.25d? | 2025-06-23 | 2025-07-01 | 4 | 49.41d | 0d | start no earlier than 2025-06-23 | Muzamal [60%] | 30h |
| 7 | 1.1.3.2 | **Allow PO numbers to be appended automatically to campaign names. By Default the IO number is added but when replacing name with Placement or Package name, can the IO number be appended?** |  | 19.69d? | 2025-06-27 | 2025-07-25 |  | 50.89d |  |  |  | 73h |
| 8 | 1.1.3.2.1 | Design document |  | 6h | 2025-06-27 | 2025-06-30 | 255 | 50.89d | 0d | start no earlier than 2025-06-23 | Asim | 6h |
| 9 | 1.1.3.2.2 | Design document review and structural changes marking |  | 5.46h | 2025-07-01 | 2025-07-02 | 8, 4, 6 | 49.41d | 0d |  | Abid [50%]; Muzamal [60%] | 6h |
| 10 | 1.1.3.2.3 | **Development** |  | 7.5d? | 2025-07-02 | 2025-07-14 |  | 49.41d | 0d |  |  | 36h |
| 11 | 1.1.3.2.3.1 | DotNet |  | 60h | 2025-07-02 | 2025-07-14 | 9 | 49.41d | 0d |  | Muzamal [60%] | 36h |
| 12 | 1.1.3.2.3.2 | DB | milestone | 0h | 2025-07-02 | 2025-07-02 | 9 | 118.51d | 7.5d |  | Arif [50%] |  |
| 13 | 1.1.3.2.3.3 | DB Packaging | milestone | 0d? | 2025-07-14 | 2025-07-14 | 11, 12 | 111.01d |  |  | Arif [50%] |  |
| 14 | 1.1.3.2.4 | **QA** |  | 9.38d? | 2025-07-02 | 2025-07-15 |  | 79.01d |  |  |  | 13h |
| 15 | 1.1.3.2.4.1 | Test case writing |  | 0.62d? | 2025-07-02 | 2025-07-03 | 9 | 79.01d | 0d |  | Hamza [80%] | 4h |
| 16 | 1.1.3.2.4.2 | Testing |  | 1.88d? | 2025-07-14 | 2025-07-15 | 10 | 111.01d | 0d |  | Bilal [60%] | 9h |
| 17 | 1.1.3.2.5 | Bug fixing |  | 1.25d? | 2025-07-24 | 2025-07-25 | 16, 24 | 104.85d |  |  | Muzamal [60%] | 6h |
| 18 | 1.1.3.2.6 | Review and Management |  | 30h | 2025-07-02 | 2025-07-08 | 9 | 117.88d |  |  | Abid [20%] | 6h |
| 19 | 1.1.3.3 | **Showold vs. new valueson revision screens (e.g., budget, dates) (Meta, TTD, LinkedIN, Twitter, Bing Ad, DV360)** |  | 33.96d? | 2025-06-30 | 2025-08-18 |  | 55.77d | 6.36d |  |  | 400h |
| 20 | 1.1.3.3.1 | Design document |  | 24h | 2025-06-30 | 2025-07-03 | 85 | 82.98d | 0d |  |  | 16h |
| 21 | 1.1.3.3.2 | Design document review and structural changes marking |  | 4.24h | 2025-07-14 | 2025-07-14 | 11 | 49.41d | 0d |  | Abid [60%]; Muzamal [60%]; Arif [60%]; Bilal [60%]; Hamza [60%] | 12h |
| 22 | 1.1.3.3.3 | **Development** |  | 22.22d? | 2025-07-14 | 2025-08-13 |  | 49.41d |  |  |  | 224h |
| 23 | 1.1.3.3.3.1 | **DotNet** |  | 21.59d | 2025-07-14 | 2025-08-13 |  | 49.41d |  |  |  | 168h |
| 24 | 1.1.3.3.3.1.1 | TTD |  | 60h | 2025-07-14 | 2025-07-24 | 21 | 49.41d | 0d |  | Muzamal [60%] | 36h |
| 25 | 1.1.3.3.3.1.2 | LinkedIn |  | 60h | 2025-07-30 | 2025-08-08 | 21, 130 | 56.47d | 0d |  | Abid [60%] | 36h |
| 26 | 1.1.3.3.3.1.3 | Twitter |  | 45h | 2025-08-05 | 2025-08-13 | 93 | 55.77d | 0d |  | Arslan [80%] | 36h |
| 27 | 1.1.3.3.3.1.4 | DV360 |  | 37.5h | 2025-07-28 | 2025-08-04 | 31 | 56.57d | 0d |  | Shoaib [80%] | 30h |
| 28 | 1.1.3.3.3.1.5 | Meta |  | 37.5h | 2025-08-06 | 2025-08-12 | 32 | 56.57d | 0d |  | Shoaib [80%] | 30h |

| ID | WBS | Task | Type | Duration | Start | Finish | Predecessors | Total slack | Free slack | Resources | Work |
| --- | --- | --- | --- | --- | --- | --- | --- | --- | --- | --- | --- |
| 29 | 1.1.3.3.3.2 | **iPC** |  | 10.31d? | 2025-07-22 | 2025-08-06 |  | 56.57d |  |  | 36h |
| 30 | 1.1.3.3.3.2.1 | BingAd |  | 1.88d? | 2025-07-22 | 2025-07-24 | 295 | 56.57d | 0d | Shoaib [80%] | 12h |
| 31 | 1.1.3.3.3.2.2 | DV360 |  | 1.88d? | 2025-07-24 | 2025-07-28 | 30 | 56.57d | 0d | Shoaib [80%] | 12h |
| 32 | 1.1.3.3.3.2.3 | Meta |  | 1.88d? | 2025-08-04 | 2025-08-06 | 27 | 56.57d | 0d | Shoaib [80%] | 12h |
| 33 | 1.1.3.3.3.3 | DB |  | 50h | 2025-08-05 | 2025-08-13 | 93 | 57.2d | 0d | Arif [40%] | 20h |
| 34 | 1.1.3.3.4 | Deploymnet and Packaging |  | 0.62d? | 2025-08-13 | 2025-08-15 | 33 | 57.2d |  | Arif [40%] | 2h |
| 35 | 1.1.3.3.5 | **QA** |  | 29.53d? | 2025-07-03 | 2025-08-15 |  | 57.2d |  |  | 102h |
| 36 | 1.1.3.3.5.1 | Test case writing |  | 3.75d? | 2025-07-03 | 2025-07-09 | 20 | 82.98d |  | Hamza [80%] | 24h |
| 37 | 1.1.3.3.5.2 | **Testing** |  | 15.34d? | 2025-07-24 | 2025-08-15 |  | 49.41d |  |  | 48h |
| 38 | 1.1.3.3.5.2.1 | TTD |  | 1.88d? | 2025-07-24 | 2025-07-25 | 24 | 49.41d | 0d | Hamza [80%] | 12h |
| 39 | 1.1.3.3.5.2.2 | LinkedIn |  | 1.88d? | 2025-08-08 | 2025-08-12 | 25 | 56.47d | 0d | Hamza [80%] | 12h |
| 40 | 1.1.3.3.5.2.3 | Twitter |  | 1.25d? | 2025-08-13 | 2025-08-15 | 26, 39 | 55.77d | 0d | Hamza [80%] | 8h |
| 41 | 1.1.3.3.5.2.4 | DV360 |  | 1.25d? | 2025-08-04 | 2025-08-05 | 27 | 62.07d | 5.31d | Hamza [80%] | 8h |
| 42 | 1.1.3.3.5.2.5 | Meta |  | 1.25d? | 2025-08-12 | 2025-08-13 | 28 | 56.57d | 0d | Hamza [80%] | 8h |
| 43 | 1.1.3.3.5.3 | QA Review and Management |  | 9.38d | 2025-07-24 | 2025-08-06 | 24 | 63.16d |  | Bilal [40%] | 30h |
| 44 | 1.1.3.3.6 | **Bug fixing** |  | 14.89d? | 2025-07-25 | 2025-08-18 |  | 49.41d |  |  | 32h |
| 45 | 1.1.3.3.6.1 | TTD |  | 1.25d? | 2025-07-25 | 2025-07-29 | 38, 24 | 49.41d | 0d | Muzamal [60%] | 6h |
| 46 | 1.1.3.3.6.2 | LinkedIn |  | 2.5d? | 2025-08-12 | 2025-08-15 | 39 | 56.65d |  | Abid [30%] | 6h |
| 47 | 1.1.3.3.6.3 | Twitter |  | 1.43d? | 2025-08-15 | 2025-08-18 | 40, 26 | 55.77d |  | Arslan [70%] | 8h |
| 48 | 1.1.3.3.6.4 | DV360 |  | 1.07d? | 2025-08-12 | 2025-08-13 | 41, 28 | 56.75d | 0.18d | Shoaib [70%] | 6h |
| 49 | 1.1.3.3.6.5 | Meta |  | 1.07d? | 2025-08-15 | 2025-08-18 | 42, 48 | 56.57d | 7.16d | Shoaib [70%] | 6h |
| 50 | 1.1.3.3.7 | Review and Management |  | 60h | 2025-08-05 | 2025-08-15 | 90 | 56.89d |  | Abid [20%] | 12h |
| 51 | 1.1.3.4 | **Explore ifobjective field can pre-populatefrom media plan** | inactive | 17.05d? | 2025-06-30 | 2025-07-23 |  | 48.66d |  |  | 151h |
| 52 | 1.1.3.4.1 | Design document | inactive | 8h | 2025-06-30 | 2025-07-01 | 85 | 48.66d | 0d | Asim | 8h |
| 53 | 1.1.3.4.2 | Design document review and structural changes marking | inactive | 3.33h | 2025-07-04 | 2025-07-04 | 52, 186 | 46.31d | 0d | Arslan [60%]; Abid [60%]; Arif [60%]; Yasir [60%]; Bilal [60%]; Hamza [60%] | 12h |

| ID | WBS | Task | Type | Duration | Start | Finish | Predecessors | Total slack | Free slack | Resources | Work |
| --- | --- | --- | --- | --- | --- | --- | --- | --- | --- | --- | --- |
| 54 | 1.1.3.4.3 | **Development** | inactive | 9.74d? | 2025-07-04 | 2025-07-18 |  | 46.31d |  |  | 79h |
| 55 | 1.1.3.4.3.1 | **DotNet** | inactive | 9.22d? | 2025-07-07 | 2025-07-18 | 53 | 45.79d | 0d |  | 59h |
| 56 | 1.1.3.4.3.1.1 | Placement / Package UI (Default on Child Placements) | inactive | 2.5d? | 2025-07-07 | 2025-07-09 | 194 | 45.79d | 0d | Arslan [80%] | 16h |
| 57 | 1.1.3.4.3.1.2 | Placement Copy / Paste | inactive | 0.47d? | 2025-07-09 | 2025-07-10 | 56 | 45.79d | 0d | Arslan [80%] | 3h |
| 58 | 1.1.3.4.3.1.3 | Import / Export | inactive | 3.75d? | 2025-07-10 | 2025-07-15 | 57 | 45.79d | 0d | Arslan [80%] | 24h |
| 59 | 1.1.3.4.3.1.4 | Buying | inactive | 2.5d? | 2025-07-15 | 2025-07-18 | 58 | 45.79d | 0d | Arslan [80%] | 16h |
| 60 | 1.1.3.4.3.2 | DB | inactive | 4.17d? | 2025-07-04 | 2025-07-10 | 53 | 115.36d |  | Arif [60%] | 20h |
| 61 | 1.1.3.4.4 | **QA** | inactive | 4.13d? | 2025-07-15 | 2025-07-22 |  | 66.23d | 0d |  | 32h |
| 62 | 1.1.3.4.4.1 | Test case writing | inactive | 0.94d? | 2025-07-15 | 2025-07-16 | 53, 16 | 69.42d |  | Hamza [80%] | 6h |
| 63 | 1.1.3.4.4.2 | **Testing** | inactive | 1.67d? | 2025-07-18 | 2025-07-22 | 55 | 66.23d |  |  | 26h |
| 64 | 1.1.3.4.4.2.1 | Placement / Package UI (Default on Child Placements) | inactive | 1.67d | 2025-07-18 | 2025-07-22 |  | 66.23d | 0d | Bilal [60%] | 8h |
| 65 | 1.1.3.4.4.2.2 | Placement Copy / Paste | inactive | 0.42d? | 2025-07-18 | 2025-07-18 |  | 67.48d |  | Bilal [60%] | 2h |
| 66 | 1.1.3.4.4.2.3 | Import / Export | inactive | 1.67d? | 2025-07-18 | 2025-07-22 |  | 66.23d |  | Bilal [60%] | 8h |
| 67 | 1.1.3.4.4.2.4 | Buying | inactive | 1.67d? | 2025-07-18 | 2025-07-22 |  | 66.23d |  | Bilal [60%] | 8h |
| 68 | 1.1.3.4.5 | **Bug Fixing** | inactive | 1.88d? | 2025-07-22 | 2025-07-23 |  | 106.25d |  |  | 18h |
| 69 | 1.1.3.4.5.1 | Bug fixing | inactive | 1.88d? | 2025-07-22 | 2025-07-23 | 64 | 106.25d |  | Arslan [80%] | 12h |
| 70 | 1.1.3.4.5.2 | DB Bug Fixing | inactive | 1.25d? | 2025-07-22 | 2025-07-23 | 64 | 106.87d |  | Arif [60%] | 6h |
| 71 | 1.1.3.4.6 | Review and Management | inactive | 1.25d? | 2025-07-03 | 2025-07-07 | 20 | 119.04d |  | Abid [20%] | 2h |
| 72 | 1.1.3.5 | **Assess ability to toggleadvantage campaign budget on/offvia API** |  | 22.22d? | 2025-06-30 | 2025-07-31 |  | 56.63d | 18.1d |  | 111h |
| 73 | 1.1.3.5.1 | Design document |  | 1d? | 2025-06-30 | 2025-07-01 | 52 | 56.63d | 0d | Asim | 8h |
| 74 | 1.1.3.5.2 | Design document review and architechtural changes marking |  | 0.42d? | 2025-07-16 | 2025-07-17 | 73, 114 | 55.01d | 0d | Arslan [60%]; Abid [60%]; Arif [60%]; Yasir [60%]; Bilal [60%]; Hamza [60%] | 12h |
| 75 | 1.1.3.5.3 | **Development** |  | 7.05d? | 2025-07-17 | 2025-07-28 |  | 56.43d | 0d |  | 46h |
| 76 | 1.1.3.5.3.1 | DotNet |  | 5.62d? | 2025-07-18 | 2025-07-28 | 74, 121 | 55.01d | 0d | Arslan [80%] | 36h |
| 77 | 1.1.3.5.3.2 | DB |  | 2.08d? | 2025-07-17 | 2025-07-21 | 74, 102 | 74.21d |  | Arif [60%] | 10h |

| ID | WBS | Task | Type | Duration | Start | Finish | Predecessors | Total slack | Free slack | Constraint | Resources | Work |
| --- | --- | --- | --- | --- | --- | --- | --- | --- | --- | --- | --- | --- |
| 78 | 1.1.3.5.4 | **QA** |  | 8.12d? | 2025-07-17 | 2025-07-29 |  | 69.25d |  |  |  | 15h |
| 79 | 1.1.3.5.4.1 | Test case writing |  | 0.94d? | 2025-07-17 | 2025-07-18 | 74 | 76.43d |  |  | Hamza [80%] | 6h |
| 80 | 1.1.3.5.4.2 | Testing |  | 0.94d? | 2025-07-28 | 2025-07-29 | 75 | 69.25d |  |  | Hamza [80%] | 6h |
| 81 | 1.1.3.5.4.3 | QA Review and Management |  | 0.94d? | 2025-07-28 | 2025-07-29 | 75 | 69.25d |  |  | Bilal [40%] | 3h |
| 82 | 1.1.3.5.5 | Bug fixing |  | 1.56d? | 2025-07-29 | 2025-07-31 | 86 | 55.01d | 0d |  | Arslan [80%] | 10h |
| 83 | 1.1.3.5.6 | Review and Management |  | 8.33d? | 2025-07-01 | 2025-07-14 | 73, 61 | 80.4d |  |  | Abid [30%] | 20h |
| 84 | 1.1.3.6 | **Add KPI input fields forall metric types, not just Viewability** |  | 26.16d? | 2025-06-30 | 2025-08-05 |  | 58.36d |  |  |  | 46h |
| 85 | 1.1.3.6.1 | Design document |  | 4h | 2025-06-30 | 2025-06-30 | 8 | 58.36d | 0d |  | Asim | 4h |
| 86 | 1.1.3.6.2 | Design document review and structural changes marking |  | 8.89h | 2025-07-28 | 2025-07-29 | 85, 76 | 55.01d | 0d |  | Abid [30%]; Arif [20%]; Arslan [40%] | 8h |
| 87 | 1.1.3.6.3 | **Development** |  | 2.5d | 2025-07-31 | 2025-08-04 |  | 55.77d | 0d |  |  | 16h |
| 88 | 1.1.3.6.3.1 | DotNet |  | 20h | 2025-07-31 | 2025-08-04 | 82 | 55.77d |  |  | Arslan [80%] | 16h |
| 89 | 1.1.3.6.3.2 | DB | milestone | 0h | 2025-07-31 | 2025-07-31 | 82 | 58.27d |  |  |  |  |
| 90 | 1.1.3.6.4 | **QA** |  | 23.06d? | 2025-07-03 | 2025-08-05 |  | 56.89d | 0d |  |  | 10h |
| 91 | 1.1.3.6.4.1 | Test case writing |  | 0.94d? | 2025-07-03 | 2025-07-04 | 15 | 79.01d |  |  | Hamza [80%] | 6h |
| 92 | 1.1.3.6.4.2 | Testing |  | 0.62d? | 2025-08-04 | 2025-08-05 | 87 | 56.89d |  |  | Hamza [80%] | 4h |
| 93 | 1.1.3.6.5 | Bug fixing |  | 0.94d? | 2025-08-04 | 2025-08-05 | 87 | 55.77d | 0d |  | Arslan [80%] | 6h |
| 94 | 1.1.3.6.6 | Review and Management |  | 10h | 2025-07-31 | 2025-08-01 | 82 | 99.82d |  |  | Abid [20%] | 2h |
| 95 | 1.1.3.7 | **Enable multiple media plans under one Bing IO** |  | 37.65d? | 2025-07-03 | 2025-08-27 |  | 49.41d | 0d |  |  | 312h |
| 96 | 1.1.3.7.1 | Design document |  | 1d? | 2025-07-03 | 2025-07-04 | 111 | 57.23d | 0d | start no earlier than 2025-07-01 | Asim | 8h |
| 97 | 1.1.3.7.2 | Design document review and architechtural changes marking |  | 0.5d? | 2025-07-04 | 2025-07-07 | 96 | 57.23d | 0d |  | Asim [50%]; Abid [50%]; Bilal [50%]; Arif [50%] | 8h |
| 98 | 1.1.3.7.3 | **Development** |  | 31.15d? | 2025-07-07 | 2025-08-20 |  | 49.41d | 0d |  |  | 192h |
| 99 | 1.1.3.7.3.1 | DotNet - Revise Only |  | 20d? | 2025-07-14 | 2025-08-11 | 97 | 52.19d | 0d | start no earlier than 2025-07-14 | Asim [50%] | 80h |
| 100 | 1.1.3.7.3.2 | Consecutive Merge |  | 7.5d? | 2025-07-29 | 2025-08-07 | 45 | 49.41d | 0d |  | Muzamal [60%] | 36h |
| 101 | 1.1.3.7.3.3 | Cancel/Close IO - DotNet |  | 7.5d? | 2025-08-07 | 2025-08-20 | 100 | 49.41d |  |  | Muzamal [60%] | 36h |
| 102 | 1.1.3.7.3.4 | DB |  | 8.33d? | 2025-07-07 | 2025-07-17 | 97 | 72.23d | 0d |  | Arif [60%] | 40h |

| ID | WBS | Task | Duration | Start | Finish | Predecessors | Total slack | Free slack | Constraint | Resources | Work |
| --- | --- | --- | --- | --- | --- | --- | --- | --- | --- | --- | --- |
| 103 | 1.1.3.7.4 | **QA** | 25.18d? | 2025-07-17 | 2025-08-22 |  | 52.19d |  |  |  | 52h |
| 104 | 1.1.3.7.4.1 | Test case writing | 1.88d? | 2025-07-17 | 2025-07-21 | 97, 74 | 75.5d |  |  | Hamza [80%] | 12h |
| 105 | 1.1.3.7.4.2 | Testing | 8.33d? | 2025-08-11 | 2025-08-22 | 99 | 52.19d |  |  | Bilal [60%] | 40h |
| 106 | 1.1.3.7.5 | **Bug Fixing** | 11.11d? | 2025-08-11 | 2025-08-27 |  | 49.41d |  |  |  | 32h |
| 107 | 1.1.3.7.5.1 | Bug fixing | 3.33d? | 2025-08-11 | 2025-08-15 | 99 | 57.19d |  |  | Asim [60%] | 16h |
| 108 | 1.1.3.7.5.2 | Bug fixing DB | 5d | 2025-08-20 | 2025-08-27 | 98 | 49.41d |  |  | Arif [40%] | 16h |
| 109 | 1.1.3.7.6 | Review and Management | 12.5d? | 2025-07-04 | 2025-07-25 | 96 | 71.56d |  |  | Abid [20%] | 20h |
| 110 | 1.1.3.8 | **DENTSU _ Implementing a custom upload error log in Excel to provide detailed error tracking and improved troubleshooting.** | 33.72d? | 2025-07-01 | 2025-08-19 |  | 55.01d | 5.6d |  |  | 155h |
| 111 | 1.1.3.8.1 | Design document | 1.67d? | 2025-07-01 | 2025-07-03 | 73 | 56.63d | 0d |  | Asim [60%] | 8h |
| 112 | 1.1.3.8.2 | Design document review and architechtural changes marking | 0.62d? | 2025-07-07 | 2025-07-07 | 111, 59 | 55.01d | 0d |  | Arslan [40%]; Abid [40%]; Arif [40%]; Yasir [40%]; Bilal [40%]; Hamza [40%] | 12h |
| 113 | 1.1.3.8.3 | **Development** | 7.03d? | 2025-07-07 | 2025-07-16 |  | 55.01d | 0d |  |  | 73h |
| 114 | 1.1.3.8.3.1 | DotNet | 7.03d? | 2025-07-07 | 2025-07-16 | 112 | 55.01d | 0d |  | Arslan [80%] | 45h |
| 115 | 1.1.3.8.3.2 | DB (For 1 uploads) | 4.17d? | 2025-07-07 | 2025-07-11 | 112 | 78.15d |  |  | Yasir [60%] | 20h |
| 116 | 1.1.3.8.3.3 | DB Review and Management | 5d | 2025-07-07 | 2025-07-14 | 112 | 77.32d |  |  | Arif [20%] | 8h |
| 117 | 1.1.3.8.4 | **QA** | 9.53d? | 2025-07-07 | 2025-07-21 |  | 75.29d |  |  |  | 32h |
| 118 | 1.1.3.8.4.1 | Test case writing | 1.25d? | 2025-07-07 | 2025-07-09 | 112 | 83.57d |  |  | Hamza [80%] | 8h |
| 119 | 1.1.3.8.4.2 | Testing | 2.5d? | 2025-07-16 | 2025-07-21 | 113 | 75.29d |  |  | Hamza [80%] | 16h |
| 120 | 1.1.3.8.4.3 | QA Review and Management | 2.5d? | 2025-07-16 | 2025-07-21 | 113 | 75.29d |  |  | Bilal [40%] | 8h |
| 121 | 1.1.3.8.5 | Bug fixing | 1.56d? | 2025-07-17 | 2025-07-18 | 74 | 55.01d | 0d |  | Arslan [80%] | 10h |
| 122 | 1.1.3.8.6 | Review and Management | 12.5d? | 2025-07-31 | 2025-08-19 | 111, 82 | 55.01d |  |  | Abid [20%] | 20h |
| 123 | 1.1.3.9 | **MC rates for PBG** | 14.17d? | 2025-07-14 | 2025-08-01 |  | 58.47d |  | start no earlier than 2025-07-14 |  | 93h |
| 124 | 1.1.3.9.1 | **Development** | 10d? | 2025-07-14 | 2025-07-28 |  | 56.47d | 0d | start no earlier than 2025-07-07 |  | 65h |
| 125 | 1.1.3.9.1.1 | DotNet | 8d? | 2025-07-14 | 2025-07-28 |  | 56.47d |  |  | Abid [50%] | 32h |
| 126 | 1.1.3.9.1.2 | DB | 6.67d? | 2025-07-14 | 2025-07-22 |  | 59.59d | 0d |  | Arif [60%] | 32h |
| 127 | 1.1.3.9.1.3 | DB Packaging | 0.21d? | 2025-07-22 | 2025-07-22 | 126 | 59.59d |  |  | Arif [60%] | 1h |

| ID | WBS | Task | Type | Duration | Start | Finish | Predecessors | Total slack | Free slack | Resources | Work |
| --- | --- | --- | --- | --- | --- | --- | --- | --- | --- | --- | --- |
| 128 | 1.1.3.9.2 | **QA** |  | 4.17d? | 2025-07-28 | 2025-08-01 |  | 99.92d |  |  | 20h |
| 129 | 1.1.3.9.2.1 | Testing |  | 4.17d? | 2025-07-28 | 2025-08-01 | 124 | 99.92d |  | Bilal [60%] | 20h |
| 130 | 1.1.3.9.3 | Bug fixing |  | 2d? | 2025-07-28 | 2025-07-30 | 124 | 56.47d | 0d | Abid [50%] | 8h |
| 131 | 1.1.4 | Reports: R&D on Technologies(Easy Migration, Rich Features, Community) - Compatibility, integration, licensing | manual | 1d? | 2025-06-17 | 2025-06-17 |  |  |  |  |  |
| 133 | 1.1.5 | **QA 2nd Iteration / Integration Testing** |  | 7.14d? | 2025-08-27 | 2025-09-05 | 110, 95, 72, 19 | 49.41d | 0d |  | 240h |
| 134 | 1.1.5.1 | Testing |  | 7.14d? | 2025-08-27 | 2025-09-05 |  | 71.26d |  | Bilal [70%] | 40h |
| 135 | 1.1.5.2 | Testing |  | 6.25d? | 2025-08-27 | 2025-09-04 |  | 72.15d |  | Hamza [80%] | 40h |
| 136 | 1.1.5.3 | Bug Fixing |  | 7.14d? | 2025-08-27 | 2025-09-05 |  | 71.26d |  | Arif [70%] | 40h |
| 137 | 1.1.5.4 | Bug Fixing |  | 7.14d? | 2025-08-27 | 2025-09-05 |  | 49.41d | 0d | Arslan [70%] | 40h |
| 138 | 1.1.5.5 | Bug Fixing |  | 7.14d? | 2025-08-27 | 2025-09-05 |  | 71.26d |  | Muzamal [70%] | 40h |
| 139 | 1.1.5.6 | Bug Fixing |  | 7.14d? | 2025-08-27 | 2025-09-05 | 49 | 71.26d |  | Shoaib [70%] | 40h |
| 140 | 1.1.6 | **Release environments upgrade** |  | 3.57d? | 2025-09-05 | 2025-09-10 | 133 | 71.26d | 0d |  | 60h |
| 141 | 1.1.6.1 | JG, TSY |  | 1.19d? | 2025-09-05 | 2025-09-08 |  | 71.26d | 0d | Bilal [70%]; Hamza [80%]; Ayesha [70%] | 20h |
| 142 | 1.1.6.2 | TA,Whirlpool, HS, Pursuit |  | 1.19d? | 2025-09-08 | 2025-09-09 | 141 | 71.26d | 0d | Bilal [70%]; Hamza [80%]; Ayesha [70%] | 20h |
| 143 | 1.1.6.3 | HY, WF, Dentsu Creative |  | 1.19d | 2025-09-09 | 2025-09-10 | 142 | 71.26d |  | Bilal [70%]; Hamza [80%]; Ayesha [70%] | 20h |
| 144 | 1.1.7 | Ready for UAT |  | 1d? | 2025-09-10 | 2025-09-11 | 140 | 71.26d |  |  |  |
| 146 | 1.2 | **APWorks** |  | 34.39d? | 2025-06-17 | 2025-08-04 |  | 28.06d |  |  | 827.5h |
| 147 | 1.2.1 | Planning |  | 7.14d | 2025-06-17 | 2025-06-26 |  | 126.07d |  | Abid [70%] | 40h |
| 148 | 1.2.2 | Team Brainstorming |  | 0.62d | 2025-06-17 | 2025-06-17 |  | 52.32d | 1.04d | Asad [80%]; Yasir [80%]; Arslan [80%]; Ali [80%]; Bilal [80%] | 20h |
| 149 | 1.2.3 | **Development** |  | 28.39d? | 2025-06-17 | 2025-07-25 |  | 28.06d | 0d |  | 661.5h |
| 150 | 1.2.3.1 | **Enabling user-specific report views and filter preferences to be retained during the session, enhancing usability and efficiency** |  | 18.98d? | 2025-06-17 | 2025-07-11 |  | 28.06d |  |  | 161h |
| 151 | 1.2.3.1.1 | Design document |  | 1.67d? | 2025-06-17 | 2025-06-18 |  | 28.06d | 0d | Asim [60%] | 8h |
| 152 | 1.2.3.1.2 | Design document review and structural changes marking |  | 0.75d? | 2025-06-18 | 2025-06-19 | 151, 148 | 51.27d | 0d | Ali [80%]; Abid [50%] | 6h |
| 153 | 1.2.3.1.3 | **Development** |  | 13.67d? | 2025-06-17 | 2025-07-04 |  | 53.69d | 0d |  | 72h |
| 154 | 1.2.3.1.3.1 | DotNet |  | 9.38d? | 2025-06-19 | 2025-07-02 | 152 | 51.27d | 0d | Ali [80%] | 60h |
| 155 | 1.2.3.1.3.2 | DotNet Changes - Retain sorting orders |  | 15h | 2025-07-02 | 2025-07-04 | 154 | 51.27d | 0d | Ali [80%] | 12h |
| 156 | 1.2.3.1.3.3 | DB |  | 1d? | 2025-06-17 | 2025-06-17 |  | 70.73d |  |  |  |
| 157 | 1.2.3.1.4 | Deployment |  | 0.31d | 2025-07-04 | 2025-07-04 | 153 | 58.06d | 0d | Abid [40%] | 1h |

| ID | WBS | Task | Duration | Start | Finish | Predecessors | Total slack | Free slack | Constraint | Resources | Work |
| --- | --- | --- | --- | --- | --- | --- | --- | --- | --- | --- | --- |
| 158 | 1.2.3.1.5 | **QA** | 13.6d? | 2025-06-23 | 2025-07-10 |  | 61.5d |  |  |  | 42h |
| 159 | 1.2.3.1.5.1 | Test case writing | 1.88d? | 2025-06-23 | 2025-06-24 | 152 | 71.98d | 0d | start no earlier than 2025-06-23 | Ayesha [80%] | 12h |
| 160 | 1.2.3.1.5.2 | Testing | 3.75d? | 2025-07-04 | 2025-07-10 | 157 | 58.06d | 0d |  | Ayesha [80%] | 24h |
| 161 | 1.2.3.1.5.3 | QA Review and management | 1.88d | 2025-07-08 | 2025-07-10 | 163 | 61.62d |  |  | Bilal [40%] | 6h |
| 162 | 1.2.3.1.6 | **Bug fixing** | 5.12d? | 2025-07-04 | 2025-07-11 |  | 51.27d |  |  |  | 20h |
| 163 | 1.2.3.1.6.1 | Bug fixing | 1.88d? | 2025-07-04 | 2025-07-08 | 199 | 51.27d | 0d |  | Ali [80%] | 12h |
| 164 | 1.2.3.1.6.2 | Bug Verification | 1.25d? | 2025-07-10 | 2025-07-11 | 163, 160 | 58.06d | 3d |  | Ayesha [80%] | 8h |
| 165 | 1.2.3.1.7 | Review and Management | 7.5d? | 2025-06-19 | 2025-06-30 | 152 | 69.31d |  |  | Abid [20%] | 12h |
| 166 | 1.2.3.2 | **Net Amount Total: We need an additional calculated field in the header that sums the Invoice Net Amount. Currently, if they want to view the Invoice Net Amount total, they must add the line amounts outside of the system.** | 11.63d? | 2025-06-17 | 2025-07-02 |  | 29.73d |  |  |  | 53h |
| 167 | 1.2.3.2.1 | Design document | 1d? | 2025-06-18 | 2025-06-19 | 151 | 28.06d | 0d |  | Asim [50%] | 4h |
| 168 | 1.2.3.2.2 | Design document review and structural changes marking | 0.19d? | 2025-06-24 | 2025-06-24 | 167 | 56.01d | 0d | start no earlier than 2025-06-24 | Abid [50%]; Arslan [80%] | 2h |
| 169 | 1.2.3.2.3 | **Development** | 10.07d? | 2025-06-17 | 2025-07-01 |  | 61.33d |  |  |  | 30h |
| 170 | 1.2.3.2.3.1 | DotNet (invoice UI, Preview, manual entry screen) | 2.5d? | 2025-06-24 | 2025-06-27 | 168 | 55.01d | 0d |  | Arslan [80%] | 16h |
| 171 | 1.2.3.2.3.2 | Vendor Mapping UI / Manage Invoice list / Vendor Invoice Report | 1.25d? | 2025-06-27 | 2025-07-01 | 170 | 55.01d | 0d |  | Arslan [80%] | 8h |
| 172 | 1.2.3.2.3.3 | DB | 1d? | 2025-06-17 | 2025-06-17 |  | 78.23d |  |  |  | 6h |
| 173 | 1.2.3.2.4 | Deployment | 0.31d? | 2025-07-01 | 2025-07-01 | 171 | 67.6d | 0d |  | Abid [40%] | 1h |
| 174 | 1.2.3.2.5 | **QA** | 5.63d? | 2025-06-25 | 2025-07-02 |  | 67.6d |  |  |  | 11h |
| 175 | 1.2.3.2.5.1 | Test case writing | 0.62d? | 2025-06-25 | 2025-06-25 | 167, 159 | 71.98d | 0d |  | Kashif [80%] | 4h |
| 176 | 1.2.3.2.5.2 | Testing | 0.94d? | 2025-07-01 | 2025-07-02 | 173 | 67.6d | 0d |  | Kashif [80%] | 6h |
| 177 | 1.2.3.2.5.3 | QA Review and management | 0.31d? | 2025-07-02 | 2025-07-02 | 176 | 67.6d |  |  | Bilal [40%] | 1h |
| 178 | 1.2.3.2.6 | **Bug Fixing** | 0.47d? | 2025-07-01 | 2025-07-01 |  | 55.01d |  |  |  | 3h |
| 179 | 1.2.3.2.6.1 | Bug fixing | 0.31d? | 2025-07-01 | 2025-07-01 | 184 | 55.01d | 0d |  | Arslan [80%] | 2h |
| 180 | 1.2.3.2.6.2 | Bug Verification | 0.16d? | 2025-07-01 | 2025-07-01 | 179 | 68.31d |  |  | Kashif [80%] | 1h |
| 181 | 1.2.3.2.7 | Review and Management | 1.25d? | 2025-06-24 | 2025-06-25 | 168 | 72.66d |  |  | Abid [20%] | 2h |

| ID | WBS | Task | Duration | Start | Finish | Predecessors | Total slack | Free slack | Resources | Work |
| --- | --- | --- | --- | --- | --- | --- | --- | --- | --- | --- |
| 182 | 1.2.3.3 | **Invoice comment log: They would like a way to add comments to an invoice for record-keeping, in case auditors inquire about invoice actions. (Routing history button)** | 15.14d? | 2025-06-17 | 2025-07-08 |  | 30.73d |  |  | 62h |
| 183 | 1.2.3.3.1 | Design document | 1.5d? | 2025-06-19 | 2025-06-23 | 167 | 28.06d | 0d | Asim [50%] | 6h |
| 184 | 1.2.3.3.2 | Design document review and structural changes marking | 0.38d? | 2025-07-01 | 2025-07-01 | 183, 171 | 55.01d | 0d | Abid [50%]; Arslan [80%] | 4h |
| 185 | 1.2.3.3.3 | **Development** | 13.26d? | 2025-06-17 | 2025-07-04 |  | 64.09d | 0d |  | 24h |
| 186 | 1.2.3.3.3.1 | DotNet | 2.5d? | 2025-07-01 | 2025-07-04 | 179 | 55.01d | 0d | Arslan [80%] | 16h |
| 187 | 1.2.3.3.3.2 | DB | 1d? | 2025-06-17 | 2025-06-17 |  | 76.35d |  |  | 8h |
| 188 | 1.2.3.3.4 | Deployment | 0.62d? | 2025-07-04 | 2025-07-04 | 185 | 64.09d | 0d | Abid [20%] | 2h |
| 189 | 1.2.3.3.5 | **QA** | 8.51d? | 2025-06-25 | 2025-07-08 |  | 64.09d |  |  | 14h |
| 190 | 1.2.3.3.5.1 | Test case writing | 0.62d? | 2025-06-25 | 2025-06-26 | 183, 175 | 71.98d |  | Kashif [80%] | 4h |
| 191 | 1.2.3.3.5.2 | Testing | 1.25d? | 2025-07-04 | 2025-07-08 | 188 | 64.09d |  | Kashif [80%] | 8h |
| 192 | 1.2.3.3.5.3 | QA Review and management | 0.62d? | 2025-06-25 | 2025-06-26 | 183, 175 | 71.98d |  | Bilal [40%] | 2h |
| 193 | 1.2.3.3.6 | **Bug fixing** | 1.56d? | 2025-07-04 | 2025-07-07 |  | 55.01d |  |  | 10h |
| 194 | 1.2.3.3.6.1 | Bug fixing | 0.94d? | 2025-07-04 | 2025-07-07 | 186, 53 | 55.01d | 0d | Arslan [80%] | 6h |
| 195 | 1.2.3.3.6.2 | Bug Verification | 0.62d? | 2025-07-07 | 2025-07-07 | 194 | 64.4d |  | Kashif [80%] | 4h |
| 196 | 1.2.3.3.7 | Review and Management | 1.25d? | 2025-07-01 | 2025-07-02 | 184 | 67.52d |  | Abid [20%] | 2h |
| 197 | 1.2.3.4 | **In Discrepant bucket, A way for Users to flag an invocie so they can easy find it later** | 24.17d? | 2025-06-17 | 2025-07-21 |  | 32.23d |  |  | 98h |
| 198 | 1.2.3.4.1 | Design document | 2d? | 2025-06-23 | 2025-06-25 | 183 | 28.06d | 0d | Asim [50%] | 8h |
| 199 | 1.2.3.4.2 | Design document review and structural changes marking | 0.19d? | 2025-07-04 | 2025-07-04 | 155 | 51.27d | 0d | Ali [80%]; Abid [50%] | 2h |
| 200 | 1.2.3.4.3 | **Development** | 7.16d? | 2025-07-07 | 2025-07-16 |  | 52.81d | 0d |  | 44h |
| 201 | 1.2.3.4.3.1 | DotNet | 5.62d? | 2025-07-08 | 2025-07-16 | 163 | 51.27d | 0d | Ali [80%] | 36h |
| 202 | 1.2.3.4.3.2 | DB | 1.25d? | 2025-07-07 | 2025-07-08 | 194 | 60.96d |  | Yasir [80%] | 8h |
| 203 | 1.2.3.4.4 | Deployment | 0.62d? | 2025-07-16 | 2025-07-16 | 200 | 55.05d | 0d | Abid [20%] | 1h |
| 204 | 1.2.3.4.5 | DB Packaging | 0.62d? | 2025-07-16 | 2025-07-16 | 200 | 57.24d |  | Arif [40%] | 2h |
| 205 | 1.2.3.4.6 | **QA** | 17.38d? | 2025-06-25 | 2025-07-18 |  | 55.68d |  |  | 17h |
| 206 | 1.2.3.4.6.1 | Test case writing | 0.62d? | 2025-06-25 | 2025-06-25 | 198, 159 | 71.81d | 0d | Ayesha [80%] | 4h |
| 207 | 1.2.3.4.6.2 | Testing | 1.56d? | 2025-07-16 | 2025-07-18 | 203, 164 | 55.05d | 0d | Ayesha [80%] | 10h |
| 208 | 1.2.3.4.6.3 | QA Review and management | 0.94d? | 2025-07-16 | 2025-07-17 | 203 | 56.3d |  | Bilal [40%] | 3h |

| ID | WBS | Task | Type | Duration | Start | Finish | Predecessors | Total slack | Free slack | Resources | Work |
| --- | --- | --- | --- | --- | --- | --- | --- | --- | --- | --- | --- |
| 209 | 1.2.3.4.7 | **Bug fixing** |  | 2.5d? | 2025-07-16 | 2025-07-21 |  | 51.27d |  |  | 14h |
| 210 | 1.2.3.4.7.1 | Bug fixing |  | 1.56d? | 2025-07-16 | 2025-07-18 | 217 | 51.27d | 0d | Ali [80%] | 10h |
| 211 | 1.2.3.4.7.2 | Bug Verification |  | 0.62d? | 2025-07-18 | 2025-07-21 | 210, 207 | 55.05d |  | Ayesha [80%] | 4h |
| 212 | 1.2.3.4.8 | Review and Management |  | 6.25d? | 2025-06-17 | 2025-06-25 |  | 72.98d |  | Abid [20%] | 10h |
| 213 | 1.2.3.5 | **Favorite button does not work ( Fix or hide) - Hide** |  | 23.86d? | 2025-06-17 | 2025-07-18 |  | 34.23d |  |  | 6.5h |
| 214 | 1.2.3.5.1 | Design document | milestone | 0d? | 2025-06-25 | 2025-06-25 | 198 | 28.06d | 0d | Asim [50%] |  |
| 215 | 1.2.3.5.2 | Design document review and structural changes marking | milestone | 0d? | 2025-07-18 | 2025-07-18 | 210 | 55.37d | 0d | Ali [80%]; Abid [50%] |  |
| 216 | 1.2.3.5.3 | **Development** |  | 21.67d? | 2025-06-17 | 2025-07-16 |  | 52.05d | 0d |  | 2h |
| 217 | 1.2.3.5.3.1 | DotNet |  | 0.31d? | 2025-07-16 | 2025-07-16 | 201 | 51.27d | 0d | Ali [80%] | 2h |
| 218 | 1.2.3.5.3.2 | DB |  | 1d? | 2025-06-17 | 2025-06-17 |  | 72.73d |  |  |  |
| 219 | 1.2.3.5.4 | Deployment |  | 0.62d? | 2025-07-16 | 2025-07-17 | 216 | 52.05d | 0d | Abid [20%] | 1h |
| 220 | 1.2.3.5.5 | **QA** |  | 16.29d? | 2025-06-25 | 2025-07-17 |  | 56.77d |  |  | 1.5h |
| 221 | 1.2.3.5.5.1 | Test case writing | milestone | 0d? | 2025-06-25 | 2025-06-25 | 214 | 73.06d |  | Kashif [80%] |  |
| 222 | 1.2.3.5.5.2 | Testing |  | 0.16d? | 2025-07-17 | 2025-07-17 | 219 | 52.05d | 0.78d | Kashif [80%] | 1h |
| 223 | 1.2.3.5.5.3 | QA Review and management |  | 0.16d? | 2025-07-17 | 2025-07-17 | 219 | 56.77d |  | Bilal [40%] | 0.5h |
| 224 | 1.2.3.5.6 | Bug fixing |  | 0.16d? | 2025-07-18 | 2025-07-18 | 210, 222 | 51.27d | 0d | Ali [80%] | 1h |
| 225 | 1.2.3.5.7 | Review and Management |  | 0.62d? | 2025-07-18 | 2025-07-18 | 215 | 55.37d |  | Abid [20%] | 1h |
| 226 | 1.2.3.6 | **Format all amounts to be trwo decimals (Appearing in filters)** |  | 28.39d? | 2025-06-17 | 2025-07-25 |  | 34.23d |  |  | 42h |
| 227 | 1.2.3.6.1 | Design document |  | 0.5d? | 2025-06-25 | 2025-06-25 | 214 | 28.06d | 0d | Asim [50%] | 2h |
| 228 | 1.2.3.6.2 | Design document review and structural changes marking |  | 0.5d? | 2025-07-18 | 2025-07-18 | 224, 227 | 51.27d | 0d | Ali [80%]; Abid [50%] | 4h |
| 229 | 1.2.3.6.3 | **Development** |  | 26.39d? | 2025-06-17 | 2025-07-23 |  | 51.27d | 0d |  | 16h |
| 230 | 1.2.3.6.3.1 | DotNet |  | 2.5d? | 2025-07-18 | 2025-07-23 | 228 | 51.27d | 0d | Ali [80%] | 16h |
| 231 | 1.2.3.6.3.2 | DB |  | 1d? | 2025-06-17 | 2025-06-17 |  | 76.66d |  |  |  |
| 232 | 1.2.3.6.4 | Deployment |  | 0.62d? | 2025-07-23 | 2025-07-24 | 229 | 51.27d | 0d | Abid [20%] | 1h |

| ID | WBS | Task | Type | Duration | Start | Finish | Predecessors | Total slack | Free slack | Constraint | Resources | Work |
| --- | --- | --- | --- | --- | --- | --- | --- | --- | --- | --- | --- | --- |
| 233 | 1.2.3.6.5 | **QA** |  | 21.16d? | 2025-06-25 | 2025-07-24 |  | 51.27d |  |  |  | 12h |
| 234 | 1.2.3.6.5.1 | Test case writing |  | 0.62d? | 2025-06-25 | 2025-06-26 | 227, 206 | 71.81d | 0d |  | Ayesha [80%] | 4h |
| 235 | 1.2.3.6.5.2 | Testing |  | 0.94d? | 2025-07-24 | 2025-07-24 | 232 | 51.27d |  |  | Ayesha [80%] | 6h |
| 236 | 1.2.3.6.5.3 | QA Review and management |  | 0.62d? | 2025-07-24 | 2025-07-24 | 232 | 51.59d |  |  | Bilal [40%] | 2h |
| 237 | 1.2.3.6.6 | **Bug fixing** |  | 0.47d? | 2025-07-24 | 2025-07-24 |  | 51.74d |  |  |  | 3h |
| 238 | 1.2.3.6.6.1 | Bug fixing |  | 0.31d? | 2025-07-24 | 2025-07-24 | 245 | 51.74d | 0d |  | Ali [80%] | 2h |
| 239 | 1.2.3.6.6.2 | Bug Verification |  | 0.16d? | 2025-07-24 | 2025-07-24 | 238 | 51.74d |  |  | Ayesha [80%] | 1h |
| 240 | 1.2.3.6.7 | Review and Management |  | 2.5d? | 2025-07-18 | 2025-07-25 | 228 | 50.84d |  |  | Abid [20%] | 4h |
| 241 | 1.2.3.7 | **If we add a new user and start with the sequence on screen, we get an error. Starting with "User Group" and then filling in rest of details, i.e. resource id, name, email and login, we get "null resource ID error. If we fill in all details and assign user** |  | 27.95d? | 2025-06-17 | 2025-07-24 |  | 34.73d |  |  |  | 10h |
| 242 | 1.2.3.7.1 | Design document | milestone | 0d? | 2025-06-25 | 2025-06-25 | 227 | 28.06d | 0d |  | Asim [50%] |  |
| 243 | 1.2.3.7.2 | Design document review and structural changes marking | milestone | 0d? | 2025-07-23 | 2025-07-23 | 230 | 51.27d | 0d |  | Ali [80%]; Abid [50%] |  |
| 244 | 1.2.3.7.3 | **Development** |  | 27.02d? | 2025-06-17 | 2025-07-24 |  | 51.27d | 0d |  |  | 4h |
| 245 | 1.2.3.7.3.1 | DotNet |  | 0.62d? | 2025-07-23 | 2025-07-24 | 243 | 51.27d | 0d |  | Ali [80%] | 4h |
| 246 | 1.2.3.7.3.2 | DB |  | 1d? | 2025-06-17 | 2025-06-17 |  | 77.29d |  |  |  |  |
| 247 | 1.2.3.7.4 | Deployment |  | 0.62d? | 2025-07-24 | 2025-07-24 | 244 | 51.27d | 0d |  | Abid [20%] | 1h |
| 248 | 1.2.3.7.5 | **QA** |  | 20.54d? | 2025-06-26 | 2025-07-24 |  | 51.27d |  |  |  | 3h |
| 249 | 1.2.3.7.5.1 | Test case writing | milestone | 0d? | 2025-06-26 | 2025-06-26 | 242, 234 | 71.81d |  |  | Ayesha [80%] |  |
| 250 | 1.2.3.7.5.2 | Testing |  | 0.31d? | 2025-07-24 | 2025-07-24 | 247 | 51.27d | 0d |  | Ayesha [80%] | 2h |
| 251 | 1.2.3.7.5.3 | Bug fixing | milestone | 0d? | 2025-07-24 | 2025-07-24 | 250 | 51.27d |  |  | Ali [80%] |  |
| 252 | 1.2.3.7.5.4 | QA Review and management |  | 0.31d? | 2025-07-24 | 2025-07-24 | 247 | 51.27d |  |  | Bilal [40%] | 1h |
| 253 | 1.2.3.7.6 | Review and Management |  | 1.25d? | 2025-07-23 | 2025-07-24 | 243 | 51.59d |  |  | Abid [20%] | 2h |
| 254 | 1.2.3.8 | **Manually mark invoice Archieved** |  | 21.12d? | 2025-06-25 | 2025-07-24 |  | 28.06d |  |  |  | 181h |
| 255 | 1.2.3.8.1 | Design document |  | 2d? | 2025-06-25 | 2025-06-27 | 242 | 28.06d | 0d |  | Asim [50%] | 8h |
| 256 | 1.2.3.8.2 | Design document review and structural changes marking |  | 0.77d? | 2025-07-01 | 2025-07-01 | 255, 272 | 26.5d | 0d | finish no earlier than 2025-07-01 | Asad [80%]; Abid [50%] | 8h |

| ID | WBS | Task | Type | Duration | Start | Finish | Predecessors | Total slack | Free slack | Constraint | Resources | Work |
| --- | --- | --- | --- | --- | --- | --- | --- | --- | --- | --- | --- | --- |
| 257 | 1.2.3.8.3 | **Development** |  | 16.79d? | 2025-07-02 | 2025-07-24 |  | 26.5d |  |  |  | 92h |
| 258 | 1.2.3.8.3.1 | DotNet- Mark the screen archive/unarchive and View in disable mode |  | 3.75d? | 2025-07-02 | 2025-07-07 | 256 | 26.5d | 0d |  | Asad [80%] | 24h |
| 259 | 1.2.3.8.3.2 | New Screen Development |  | 3.75d? | 2025-07-07 | 2025-07-11 | 258 | 26.5d | 0d |  | Asad [80%] | 24h |
| 260 | 1.2.3.8.3.3 | DB |  | 3.57d? | 2025-07-02 | 2025-07-07 | 256 | 64.65d |  |  | Yasir [70%] | 20h |
| 261 | 1.2.3.8.3.4 | Export functionality |  | 3.75d? | 2025-07-21 | 2025-07-24 | 511 | 26.5d | 0d |  | Asad [80%] | 24h |
| 262 | 1.2.3.8.4 | Deployment |  | 1d? | 2025-07-07 | 2025-07-08 | 258 | 58.79d | 0d |  | Abid [20%] | 1h |
| 263 | 1.2.3.8.5 | **QA** |  | 11.77d? | 2025-06-27 | 2025-07-15 |  | 58.79d |  |  |  | 42h |
| 264 | 1.2.3.8.5.1 | Test case writing |  | 1.25d? | 2025-06-27 | 2025-06-30 | 255 | 69.31d |  |  | Kashif [80%] | 8h |
| 265 | 1.2.3.8.5.2 | Testing |  | 4.69d? | 2025-07-08 | 2025-07-15 | 262 | 58.79d |  |  | Kashif [80%] | 30h |
| 266 | 1.2.3.8.5.3 | QA Review and management |  | 1.62d? | 2025-07-08 | 2025-07-10 | 262 | 61.85d |  |  | Bilal [40%] | 4h |
| 267 | 1.2.3.8.6 | **Bug fixing** |  | 5.25d? | 2025-07-08 | 2025-07-15 |  | 29.25d |  |  |  | 22h |
| 268 | 1.2.3.8.6.1 | Bug fixing |  | 1.25d? | 2025-07-11 | 2025-07-14 | 259 | 26.5d | 0d |  | Asad [80%] | 8h |
| 269 | 1.2.3.8.6.2 | DB Bug fixing |  | 1.5d | 2025-07-08 | 2025-07-10 | 262 | 61.98d |  |  | Yasir [50%] | 6h |
| 270 | 1.2.3.8.6.3 | Bug Verification |  | 1.25d? | 2025-07-14 | 2025-07-15 | 268 | 58.23d |  |  | Kashif [80%] | 8h |
| 271 | 1.2.3.8.7 | Review and Management |  | 5d? | 2025-07-02 | 2025-07-08 | 256 | 63.23d |  |  | Abid [20%] | 8h |
| 272 | 1.2.3.9 | **Upgrade ApWorks application to dotnet Core 8.0 from 7.0** |  | 5d? | 2025-06-24 | 2025-07-01 |  | 26.6d | 0.11d | start no earlier than 2025-06-24 |  | 32h |
| 273 | 1.2.3.9.1 | Lambda Upgrade |  | 1.25d? | 2025-06-24 | 2025-06-25 |  | 26.6d | 0d |  | Asad [80%] | 8h |
| 274 | 1.2.3.9.2 | Application upgrade (need to resolve aws container issue with core 9.0) |  | 2.5d? | 2025-06-25 | 2025-06-27 | 273 | 26.6d | 0d |  | Asad [80%] | 16h |
| 275 | 1.2.3.9.3 | Azure service upgrade |  | 1.25d? | 2025-06-27 | 2025-07-01 | 274 | 26.6d |  |  | Asad [80%] | 8h |
| 276 | 1.2.3.10 | Sync optimzation | manual | 1d? | 2025-06-17 | 2025-06-17 |  |  |  |  |  |  |
| 277 | 1.2.3.11 | Separate Integration layer from main application(80 % work completed, only container setup things need to be verified) | manual | 1d? | 2025-06-17 | 2025-06-17 |  |  |  |  |  | 16h |
| 278 | 1.2.3.12 | Azure service need to upgrade to latest version | manual | 1d? | 2025-06-17 | 2025-06-17 |  |  |  |  |  |  |
| 280 | 1.2.4 | **2nd integration / Integration Test** |  | 5d? | 2025-07-25 | 2025-08-01 | 149 | 50.84d | 0d |  |  | 106h |
| 281 | 1.2.4.1 | Testing |  | 5d | 2025-07-25 | 2025-08-01 |  | 88.44d |  |  | Bilal [40%] | 16h |
| 282 | 1.2.4.2 | Testing |  | 4.69d | 2025-07-25 | 2025-08-01 |  | 88.76d |  |  | Kashif [80%] | 30h |
| 283 | 1.2.4.3 | Testing |  | 4.69d | 2025-07-25 | 2025-08-01 |  | 88.76d |  |  | Ayesha [80%] | 30h |
| 284 | 1.2.4.4 | Bug Fixing |  | 4.69d? | 2025-07-25 | 2025-08-01 |  | 50.84d | 0d |  | Ali [80%] | 30h |
| 285 | 1.2.4.5 | Bug Fixing | milestone | 0d? | 2025-07-25 | 2025-07-25 |  | 93.44d |  |  | Asad [80%] |  |
| 286 | 1.2.5 | Ready for UAT |  | 1d? | 2025-08-01 | 2025-08-04 | 280 | 98.82d |  |  |  |  |

| ID | WBS | Task | Duration | Start | Finish | Predecessors | Total slack | Free slack | Constraint | Resources | Work | Text1 |
| --- | --- | --- | --- | --- | --- | --- | --- | --- | --- | --- | --- | --- |
| 288 | 1.3 | **APWorks 2025.4** | 106.71d? | 2025-06-17 | 2025-11-13 |  | 26.5d |  |  |  | 1898h |  |
| 289 | 1.3.1 | **eInvoice pull** | 100.71d? | 2025-06-17 | 2025-11-05 |  | 32.5d |  |  |  | 1782h | Waiting for design document |
| 290 | 1.3.1.1 | **eInvoices (iPC)(BingAd, DV360,GCM,GoogleAd, Twitter)** | 50.75d? | 2025-06-17 | 2025-08-27 |  | 57.7d |  |  |  | 199h |  |
| 291 | 1.3.1.1.1 | KickOff meeting with Tao | 0.5d? | 2025-06-18 | 2025-06-18 |  | 56.57d | 0d | start no earlier than 2025-06-18 | Tao [25%]; Abid [25%]; Shoaib [25%] | 3h |  |
| 292 | 1.3.1.1.2 | API Review and Postman calls configurations | 7.5d | 2025-06-18 | 2025-06-30 | 291 | 56.57d | 0d |  | Tao [50%]; Shoaib [60%] | 60h |  |
| 293 | 1.3.1.1.3 | Design document review and structural changes marking | 1d? | 2025-06-30 | 2025-07-01 | 292 | 56.57d | 0d |  | Shoaib [50%]; Abid [50%] | 8h |  |
| 294 | 1.3.1.1.4 | **Development** | 25.75d? | 2025-06-17 | 2025-07-22 |  | 66.7d |  |  |  | 108h |  |
| 295 | 1.3.1.1.4.1 | **DotNet - iPC Changes(New Methods for 4 Platforms + Expected change for 1 Platform) + Packaging and Deployment** | 15.62d? | 2025-07-01 | 2025-07-22 | 293 | 56.57d | 0d |  |  | 100h |  |
| 296 | 1.3.1.1.4.1.1 | Meta | 3.12d? | 2025-07-01 | 2025-07-04 |  | 56.57d | 0d |  | Shoaib [80%] | 20h |  |
| 297 | 1.3.1.1.4.1.2 | DV360 | 3.75d? | 2025-07-04 | 2025-07-09 | 296 | 56.57d | 0d |  | Shoaib [80%] | 24h |  |
| 298 | 1.3.1.1.4.1.3 | GCM | 3.75d? | 2025-07-10 | 2025-07-15 | 297 | 56.57d | 0d |  | Shoaib [80%] | 24h |  |
| 299 | 1.3.1.1.4.1.4 | Bing Ad | 3.75d? | 2025-07-15 | 2025-07-21 | 298 | 56.57d | 0d |  | Shoaib [80%] | 24h |  |
| 300 | 1.3.1.1.4.1.5 | Google Ad(Need to verify only) | 1.25d? | 2025-07-21 | 2025-07-22 | 299 | 56.57d | 0d |  | Shoaib [80%] | 8h |  |
| 301 | 1.3.1.1.4.2 | DB | 1.43d? | 2025-06-17 | 2025-06-18 |  | 131.78d |  |  | Yasir [70%] | 8h |  |
| 302 | 1.3.1.1.5 | Bug fixing | 25d? | 2025-07-22 | 2025-08-27 | 300 | 82.46d |  |  | Shoaib [10%] | 20h |  |
| 303 | 1.3.1.1.6 | Review and Management | 1d? | 2025-06-17 | 2025-06-17 |  | 132.21d |  |  |  |  |  |
| 304 | 1.3.1.2 | **eInvoices (Apworks)** | 98.59d? | 2025-06-19 | 2025-11-05 |  | 32.5d |  |  |  | 1583h |  |
| 305 | 1.3.1.2.1 | Design document | 10d? | 2025-06-19 | 2025-07-03 |  | 40.91d | 0d | start no earlier than 2025-06-19 | Tao [30%] | 24h |  |
| 306 | 1.3.1.2.2 | Design document review and structural changes marking | 1.25d? | 2025-07-03 | 2025-07-04 | 305, 255 | 40.91d | 0d |  | Abid [40%]; Asim; Tao [40%] | 8h |  |
| 307 | 1.3.1.2.3 | **Development** | 87.34d? | 2025-07-04 | 2025-11-05 | 306 | 26.5d | 0d |  |  | 1495h |  |
| 308 | 1.3.1.2.3.1 | **Ad Tech Platforms Integration** | 21.31d? | 2025-07-24 | 2025-08-26 | 261 | 26.5d |  |  |  | 243h |  |
| 309 | 1.3.1.2.3.1.1 | **Development** | 14.06d? | 2025-07-24 | 2025-08-13 |  | 26.5d | 0d |  |  | 140h |  |
| 310 | 1.3.1.2.3.1.1.1 | DotNet | 14.06d? | 2025-07-24 | 2025-08-13 | 268 | 26.5d |  |  | Asad [80%] | 90h |  |
| 311 | 1.3.1.2.3.1.1.2 | DB | 7.81d? | 2025-07-24 | 2025-08-05 |  | 32.75d |  |  | Yasir [80%] | 50h |  |
| 312 | 1.3.1.2.3.1.2 | Deployment | 1d? | 2025-08-13 | 2025-08-15 | 309 | 26.5d | 0d |  |  | 1h |  |

| ID | WBS | Task | Duration | Start | Finish | Predecessors | Total slack | Free slack | Resources | Work |
| --- | --- | --- | --- | --- | --- | --- | --- | --- | --- | --- |
| 313 | 1.3.1.2.3.1.3 | **QA** | 20.06d? | 2025-07-24 | 2025-08-22 |  | 79.36d |  |  | 54h |
| 314 | 1.3.1.2.3.1.3.1 | Test case writing | 2.5d? | 2025-07-24 | 2025-07-29 |  | 94.42d | 0d | Ayesha [80%] | 16h |
| 315 | 1.3.1.2.3.1.3.2 | Testing | 4.69d? | 2025-08-15 | 2025-08-22 | 312 | 79.67d |  | Ayesha [80%] | 30h |
| 316 | 1.3.1.2.3.1.3.3 | QA Review and management | 5d? | 2025-08-15 | 2025-08-22 | 312 | 79.36d |  | Bilal [20%] | 8h |
| 317 | 1.3.1.2.3.1.4 | **Bug Fixing** | 6.25d? | 2025-08-15 | 2025-08-26 |  | 26.5d |  |  | 48h |
| 318 | 1.3.1.2.3.1.4.1 | Bug fixing | 5d? | 2025-08-15 | 2025-08-22 | 312 | 26.5d | 0d | Asad [60%] | 24h |
| 319 | 1.3.1.2.3.1.4.2 | DB bug fixing | 5d | 2025-08-15 | 2025-08-22 | 312 | 79.36d |  | Yasir [40%] | 16h |
| 320 | 1.3.1.2.3.1.4.3 | Bug verification | 1.25d? | 2025-08-22 | 2025-08-26 | 318 | 78.11d |  | Ayesha [80%] | 8h |
| 321 | 1.3.1.2.3.2 | **Excel Import (Invoices)** | 56.1d? | 2025-07-04 | 2025-09-23 |  | 57.74d |  |  | 261h |
| 322 | 1.3.1.2.3.2.1 | **Excel Import - mapping** | 53.12d? | 2025-07-04 | 2025-09-18 |  | 60.71d |  |  | 105h |
| 323 | 1.3.1.2.3.2.1.1 | **Development** | 22.27d? | 2025-08-01 | 2025-09-03 |  | 40.95d | 0d |  | 66h |
| 324 | 1.3.1.2.3.2.1.1.1 | DotNet | 7.81d? | 2025-08-22 | 2025-09-03 | 318 | 26.5d | 0d | Asad [80%] | 50h |
| 325 | 1.3.1.2.3.2.1.1.2 | DB | 2.5d? | 2025-08-01 | 2025-08-05 | 280 | 88.44d |  | Yasir [80%] | 16h |
| 326 | 1.3.1.2.3.2.1.2 | Deployment | 1d? | 2025-09-03 | 2025-09-04 | 323 | 68.67d | 0d |  | 1h |
| 327 | 1.3.1.2.3.2.1.3 | **QA** | 45.16d? | 2025-07-04 | 2025-09-08 |  | 68.67d |  |  | 18h |
| 328 | 1.3.1.2.3.2.1.3.1 | Test case writing | 0.62d? | 2025-07-08 | 2025-07-09 | 341 | 110.71d |  | Ayesha [80%] | 4h |
| 329 | 1.3.1.2.3.2.1.3.2 | Testing | 1.88d? | 2025-09-04 | 2025-09-08 | 326 | 68.67d |  | Ayesha [80%] | 12h |
| 330 | 1.3.1.2.3.2.1.3.3 | QA Review and management | 1.25d? | 2025-07-04 | 2025-07-07 |  | 112.58d |  | Bilal [20%] | 2h |
| 331 | 1.3.1.2.3.2.1.4 | **Bug fixing** | 3.02d? | 2025-09-15 | 2025-09-18 |  | 26.5d |  |  | 20h |
| 332 | 1.3.1.2.3.2.1.4.1 | Bug fixing | 2.08d? | 2025-09-15 | 2025-09-17 | 337 | 26.5d | 0d | Asad [60%] | 10h |
| 333 | 1.3.1.2.3.2.1.4.2 | DB bug fixing | 1.25d | 2025-09-15 | 2025-09-16 | 337 | 62.49d |  | Yasir [40%] | 4h |
| 334 | 1.3.1.2.3.2.1.4.3 | Bug verification | 0.94d? | 2025-09-17 | 2025-09-18 | 332 | 60.71d |  | Ayesha [80%] | 6h |
| 335 | 1.3.1.2.3.2.2 | **Excel Import** | 56.1d? | 2025-07-04 | 2025-09-23 |  | 57.74d |  |  | 156h |
| 336 | 1.3.1.2.3.2.2.1 | **Development** | 7.81d? | 2025-09-03 | 2025-09-15 |  | 26.5d | 0d |  | 80h |
| 337 | 1.3.1.2.3.2.2.1.1 | Dot Net - Asad | 7.81d? | 2025-09-03 | 2025-09-15 | 324 | 26.5d | 0d | Asad [80%] | 50h |
| 338 | 1.3.1.2.3.2.2.1.2 | DB | 7.5d? | 2025-09-03 | 2025-09-15 | 324 | 58.05d |  | Yasir [50%] | 30h |
| 339 | 1.3.1.2.3.2.2.2 | Deployment | 1d? | 2025-09-15 | 2025-09-16 | 336 | 57.74d | 0d |  | 1h |

| ID | WBS | Task | Duration | Start | Finish | Predecessors | Total slack | Free slack | Resources | Work |
| --- | --- | --- | --- | --- | --- | --- | --- | --- | --- | --- |
| 340 | 1.3.1.2.3.2.2.3 | **QA** | 56.1d? | 2025-07-04 | 2025-09-23 |  | 57.74d |  |  | 48h |
| 341 | 1.3.1.2.3.2.2.3.1 | Test case writing | 2.5d? | 2025-07-04 | 2025-07-08 |  | 110.71d | 0d | Ayesha [80%] | 16h |
| 342 | 1.3.1.2.3.2.2.3.2 | Testing | 3.75d? | 2025-09-16 | 2025-09-22 | 339 | 58.99d |  | Ayesha [80%] | 24h |
| 343 | 1.3.1.2.3.2.2.3.3 | QA Review and management | 5d? | 2025-09-16 | 2025-09-23 | 339 | 57.74d |  | Bilal [20%] | 8h |
| 344 | 1.3.1.2.3.2.2.4 | **Bug fixing** | 3.28d? | 2025-09-17 | 2025-09-22 |  | 26.5d |  |  | 27h |
| 345 | 1.3.1.2.3.2.2.4.1 | Bug fixing | 2.34d? | 2025-09-17 | 2025-09-19 | 332 | 26.5d | 0d | Asad [80%] | 15h |
| 346 | 1.3.1.2.3.2.2.4.2 | DB bug fixing | 0.94d | 2025-09-17 | 2025-09-18 | 332 | 60.71d |  | Yasir [80%] | 6h |
| 347 | 1.3.1.2.3.2.2.4.3 | Bugs Verification | 0.94d? | 2025-09-19 | 2025-09-22 | 345 | 58.37d |  | Ayesha [80%] | 6h |
| 348 | 1.3.1.2.3.3 | **Cloud Integration** | 70.43d? | 2025-07-29 | 2025-11-05 |  | 26.5d |  |  | 365h |
| 349 | 1.3.1.2.3.3.1 | **Development** | 26.56d? | 2025-09-19 | 2025-10-28 |  | 26.5d | 0d |  | 190h |
| 350 | 1.3.1.2.3.3.1.1 | Code optimization (Architecture changes) | 7.81d? | 2025-09-19 | 2025-10-01 | 345 | 26.5d | 0d | Asad [80%] | 50h |
| 351 | 1.3.1.2.3.3.1.2 | DotNet -Share Point | 5d? | 2025-10-01 | 2025-10-08 | 350 | 26.5d | 0d | Asad [80%] | 32h |
| 352 | 1.3.1.2.3.3.1.3 | SFTP | 5d? | 2025-10-08 | 2025-10-15 | 351 | 26.5d | 0d | Asad [80%] | 32h |
| 353 | 1.3.1.2.3.3.1.4 | S3 | 3.75d? | 2025-10-15 | 2025-10-21 | 352 | 26.5d | 0d | Asad [80%] | 24h |
| 354 | 1.3.1.2.3.3.1.5 | Azure Blob | 5d? | 2025-10-21 | 2025-10-28 | 353 | 26.5d | 0d | Asad [80%] | 32h |
| 355 | 1.3.1.2.3.3.1.6 | DB | 5d? | 2025-10-01 | 2025-10-08 | 350 | 45.5d |  | Yasir [50%] | 20h |
| 356 | 1.3.1.2.3.3.2 | Deployment | 1d? | 2025-10-28 | 2025-10-29 | 349 | 31.75d |  |  | 1h |
| 357 | 1.3.1.2.3.3.3 | **QA** | 67.3d? | 2025-07-29 | 2025-10-31 |  | 29.62d |  |  | 120h |
| 358 | 1.3.1.2.3.3.3.1 | Test case writing | 2.5d? | 2025-07-29 | 2025-07-31 | 314 | 94.42d |  | Ayesha [80%] | 16h |
| 359 | 1.3.1.2.3.3.3.2 | **Testing** | 16.88d? | 2025-10-08 | 2025-10-31 |  | 29.62d |  |  | 88h |
| 360 | 1.3.1.2.3.3.3.2.1 | One Drive | 3.75d? | 2025-10-08 | 2025-10-14 | 351 | 42.75d |  | Ayesha [80%] | 24h |
| 361 | 1.3.1.2.3.3.3.2.2 | SFPT | 3.75d? | 2025-10-15 | 2025-10-21 | 352 | 37.75d |  | Ayesha [80%] | 24h |
| 362 | 1.3.1.2.3.3.3.2.3 | S3 | 3.12d? | 2025-10-21 | 2025-10-24 | 353 | 34.62d |  | Ayesha [80%] | 20h |
| 363 | 1.3.1.2.3.3.3.2.4 | Azure Blob | 3.12d? | 2025-10-28 | 2025-10-31 | 354 | 29.62d |  | Ayesha [80%] | 20h |
| 364 | 1.3.1.2.3.3.3.3 | QA Review and management | 10d? | 2025-10-08 | 2025-10-22 | 351 | 36.5d |  | Bilal [20%] | 16h |

| ID | WBS | Task | Duration | Start | Finish | Predecessors | Total slack | Free slack | Resources | Work |
| --- | --- | --- | --- | --- | --- | --- | --- | --- | --- | --- |
| 365 | 1.3.1.2.3.3.4 | **Bug fixing** | 6.25d? | 2025-10-28 | 2025-11-05 |  | 26.5d |  |  | 54h |
| 366 | 1.3.1.2.3.3.4.1 | Bug fixing | 6.25d? | 2025-10-28 | 2025-11-05 | 354 | 26.5d |  | Asad [80%] | 40h |
| 367 | 1.3.1.2.3.3.4.2 | DB bug fixing | 2.5d | 2025-10-28 | 2025-10-30 | 354 | 29d | 0d | Yasir [30%] | 6h |
| 368 | 1.3.1.2.3.3.4.3 | Bugs verification | 1.25d? | 2025-10-30 | 2025-11-03 | 367 | 29d |  | Ayesha [80%] | 8h |
| 369 | 1.3.1.2.3.4 | **Self Service application (Ballpark)** | 57.2d? | 2025-07-04 | 2025-09-24 |  | 56.63d |  |  | 369h |
| 370 | 1.3.1.2.3.4.1 | **Development** | 43.14d? | 2025-07-04 | 2025-09-04 |  | 50.84d | 0d |  | 220h |
| 371 | 1.3.1.2.3.4.1.1 | Application Architechture | 1d? | 2025-07-04 | 2025-07-07 |  | 92.98d |  |  | 40h |
| 372 | 1.3.1.2.3.4.1.2 | DotNet - Ali | 23.44d? | 2025-08-01 | 2025-09-04 | 284 | 50.84d |  | Ali [80%] | 150h |
| 373 | 1.3.1.2.3.4.1.3 | DB | 4.69d? | 2025-08-01 | 2025-08-07 | 284 | 69.59d |  | Yasir [80%] | 30h |
| 374 | 1.3.1.2.3.4.2 | Deployment | 1d? | 2025-09-04 | 2025-09-05 | 370 | 50.84d | 0d |  | 1h |
| 375 | 1.3.1.2.3.4.3 | **QA** | 30.69d? | 2025-08-01 | 2025-09-15 |  | 63.44d |  |  | 70h |
| 376 | 1.3.1.2.3.4.3.1 | Test case writing | 3.75d? | 2025-08-01 | 2025-08-06 | 284 | 90.38d |  | Kashif [80%] | 24h |
| 377 | 1.3.1.2.3.4.3.2 | Testing | 6.25d? | 2025-09-05 | 2025-09-15 | 374 | 63.44d |  | Kashif [80%] | 40h |
| 378 | 1.3.1.2.3.4.3.3 | QA Review and management | 3.75d? | 2025-09-05 | 2025-09-11 | 374 | 65.94d |  | Bilal [20%] | 6h |
| 379 | 1.3.1.2.3.4.4 | **Bug Verification** | 6.25d? | 2025-09-05 | 2025-09-15 |  | 50.84d |  |  | 40h |
| 380 | 1.3.1.2.3.4.4.1 | Bug fixing | 6.25d? | 2025-09-05 | 2025-09-15 | 374 | 50.84d | 0d | Ali [60%] | 30h |
| 381 | 1.3.1.2.3.4.4.2 | DB bug fixing | 3.12d | 2025-09-05 | 2025-09-10 | 374 | 66.57d |  | Yasir [40%] | 10h |
| 382 | 1.3.1.2.3.4.5 | DB Packaging | 10d? | 2025-08-13 | 2025-08-28 | 309 | 75.36d |  | Yasir [10%] | 8h |
| 383 | 1.3.1.2.3.4.6 | Review and Management | 37.5d? | 2025-08-01 | 2025-09-24 | 284 | 56.63d |  | Abid [10%] | 30h |
| 384 | 1.3.1.2.3.5 | **Setup Screen** | 64.42d? | 2025-07-04 | 2025-10-03 |  | 49.41d |  |  | 257h |
| 385 | 1.3.1.2.3.5.1 | **Development** | 14.06d? | 2025-09-05 | 2025-09-25 |  | 49.41d | 0d |  | 150h |
| 386 | 1.3.1.2.3.5.1.1 | Dot Net - Arslan | 14.06d? | 2025-09-05 | 2025-09-25 | 137 | 49.41d |  | Arslan [80%] | 90h |
| 387 | 1.3.1.2.3.5.1.2 | DotNet - Ali | 6.25d? | 2025-09-15 | 2025-09-24 | 380 | 50.84d |  | Ali [80%] | 40h |
| 388 | 1.3.1.2.3.5.1.3 | DB | 3.12d? | 2025-09-15 | 2025-09-18 | 380 | 53.96d |  | Yasir [80%] | 20h |
| 389 | 1.3.1.2.3.5.2 | Deployment | 1d? | 2025-09-25 | 2025-09-26 | 385 | 49.41d | 0d |  | 1h |

| ID | WBS | Task | Type | Duration | Start | Finish | Predecessors | Total slack | Free slack | Resources | Work | Text1 |
| --- | --- | --- | --- | --- | --- | --- | --- | --- | --- | --- | --- | --- |
| 390 | 1.3.1.2.3.5.3 | **QA** |  | 62.81d? | 2025-07-04 | 2025-10-02 |  | 51.02d |  |  | 46h |  |
| 391 | 1.3.1.2.3.5.3.1 | Test case writing |  | 2.5d? | 2025-07-04 | 2025-07-08 |  | 111.33d |  | Ayesha [80%] | 16h |  |
| 392 | 1.3.1.2.3.5.3.2 | Testing |  | 3.75d? | 2025-09-26 | 2025-10-02 | 389 | 51.02d |  | Ayesha [80%] | 24h |  |
| 393 | 1.3.1.2.3.5.3.3 | QA Review and management |  | 3.75d? | 2025-09-26 | 2025-10-02 | 389 | 51.02d |  | Bilal [20%] | 6h |  |
| 394 | 1.3.1.2.3.5.4 | **Bug Verification** |  | 5.36d? | 2025-09-26 | 2025-10-03 |  | 49.41d |  |  | 60h |  |
| 395 | 1.3.1.2.3.5.4.1 | Bug fixing - Arslan |  | 5.36d? | 2025-09-26 | 2025-10-03 | 389 | 49.41d |  | Arslan [70%] | 30h |  |
| 396 | 1.3.1.2.3.5.4.2 | Bug fixing |  | 3.12d? | 2025-09-26 | 2025-10-01 | 389 | 51.65d |  | Ali [60%] | 15h |  |
| 397 | 1.3.1.2.3.5.4.3 | DB bug fixing |  | 4.69d | 2025-09-26 | 2025-10-03 | 389 | 50.08d |  | Yasir [40%] | 15h |  |
| 398 | 1.3.1.2.4 | DB Packaging |  | 30d? | 2025-08-13 | 2025-09-25 | 309 | 61.36d |  | Yasir [5%] | 12h |  |
| 399 | 1.3.1.2.5 | Review and Management |  | 68.75d? | 2025-07-03 | 2025-10-10 | 305 | 50.33d |  | Abid [8%] | 44h |  |
| 400 | 1.3.2 | **2nd integration / Integration Test** |  | 5d? | 2025-11-05 | 2025-11-12 | 307 | 26.5d | 0d |  | 116h |  |
| 401 | 1.3.2.1 | Testing |  | 5d? | 2025-11-05 | 2025-11-12 |  | 26.5d |  | Bilal [40%] | 16h |  |
| 402 | 1.3.2.2 | Testing |  | 4.69d? | 2025-11-05 | 2025-11-12 |  | 26.81d |  | Kashif [80%] | 30h |  |
| 403 | 1.3.2.3 | Bug Fixing |  | 4.69d? | 2025-11-05 | 2025-11-12 |  | 26.81d | 7.25d | Asad [80%] | 30h |  |
| 404 | 1.3.2.4 | Bug Fixing |  | 3.12d | 2025-11-05 | 2025-11-10 |  | 28.37d | 0d | Ali [80%] | 20h |  |
| 405 | 1.3.2.5 | Bug Fixing |  | 3.12d | 2025-11-05 | 2025-11-10 |  | 28.37d |  | Yasir [80%] | 20h |  |
| 406 | 1.3.3 | Ready for UAT |  | 1d? | 2025-11-12 | 2025-11-13 | 400 | 26.5d | 0d |  |  |  |
| 408 | 1.4 | **APWorks Service Pack 2** | inactive | 129.59d? | 2025-06-17 | 2025-12-16 |  | 0d |  |  | 687h |  |
| 409 | 1.4.1 | **eInvoice pull** | inactive | 123.59d? | 2025-06-17 | 2025-12-08 |  | 0d |  |  | 581h | Waiting for design document |
| 410 | 1.4.1.1 | **eInvoices (Apworks)** | inactive | 123.59d? | 2025-06-17 | 2025-12-08 |  | 0d |  |  | 581h |  |
| 411 | 1.4.1.1.1 | **Development** | inactive | 123.59d? | 2025-06-17 | 2025-12-08 |  | 3.62d | 0d |  | 565h |  |
| 412 | 1.4.1.1.1.1 | **Cloud Integration (OneDrive)** | inactive | 16.88d? | 2025-11-13 | 2025-12-08 |  | 3.62d |  |  | 294h |  |
| 413 | 1.4.1.1.1.1.1 | **Development** | inactive | 13.69d? | 2025-11-13 | 2025-12-03 | 406 | 3.62d |  |  | 176h |  |
| 414 | 1.4.1.1.1.1.1.1 | Code optimization (Architecture changes) | inactive | 4.69d? | 2025-11-13 | 2025-11-20 | 345 | 3.62d | 0d | Asad [80%] | 30h |  |
| 415 | 1.4.1.1.1.1.1.2 | DotNet - One Drive | inactive | 7.81d? | 2025-11-20 | 2025-12-02 | 414 | 3.62d | 0d | Asad [80%] | 50h |  |
| 416 | 1.4.1.1.1.1.1.3 | SFTP | inactive | 9.38d? | 2025-11-13 | 2025-11-27 | 434 | 6.37d | 0d | Arslan [80%] | 60h |  |
| 417 | 1.4.1.1.1.1.1.4 | DB | inactive | 9d? | 2025-11-20 | 2025-12-03 | 414 | 6.81d |  | Yasir [50%] | 36h |  |
| 418 | 1.4.1.1.1.1.2 | Deployment | inactive | 1d? | 2025-11-27 | 2025-11-28 | 416 | 6.37d | 0d |  | 1h |  |

| ID | WBS | Task | Type | Duration | Start | Finish | Predecessors | Total slack | Free slack | Resources | Work |
| --- | --- | --- | --- | --- | --- | --- | --- | --- | --- | --- | --- |
| 419 | 1.4.1.1.1.1.3 | **QA** | inactive | 16.88d? | 2025-11-13 | 2025-12-08 |  | 3.62d |  |  | 71h |
| 420 | 1.4.1.1.1.1.3.1 | Test case writing | inactive | 2.5d? | 2025-11-13 | 2025-11-18 | 406 | 18d |  | Ayesha [80%] | 16h |
| 421 | 1.4.1.1.1.1.3.2 | **Testing** | inactive | 6.88d? | 2025-11-27 | 2025-12-05 |  | 4.25d |  |  | 48h |
| 422 | 1.4.1.1.1.1.3.2.1 | DotNet - One Drive | inactive | 3.75d? | 2025-12-02 | 2025-12-05 | 415 | 4.25d |  | Ayesha [80%] | 24h |
| 423 | 1.4.1.1.1.1.3.2.2 | SFTP | inactive | 3.75d? | 2025-11-27 | 2025-12-02 | 416 | 7.37d |  | Kashif [80%] | 24h |
| 424 | 1.4.1.1.1.1.3.3 | QA Review and management | inactive | 4.38d? | 2025-12-02 | 2025-12-08 | 415 | 3.62d |  | Bilal [20%] | 7h |
| 425 | 1.4.1.1.1.1.4 | **Bug fixing** | inactive | 4.75d? | 2025-11-27 | 2025-12-03 |  | 6.37d |  |  | 46h |
| 426 | 1.4.1.1.1.1.4.1 | Bug fixing | inactive | 3.33d? | 2025-11-28 | 2025-12-03 | 418 | 6.79d |  | Asad [60%] | 16h |
| 427 | 1.4.1.1.1.1.4.2 | Bug fixing - arslan | inactive | 3.33d? | 2025-11-27 | 2025-12-02 | 416 | 7.79d |  | Arslan [60%] | 16h |
| 428 | 1.4.1.1.1.1.4.3 | DB bug fixing | inactive | 2.5d | 2025-11-28 | 2025-12-02 | 418 | 6.37d | 0d | Yasir [30%] | 6h |
| 429 | 1.4.1.1.1.1.4.4 | Bugs verification | inactive | 1.25d? | 2025-12-02 | 2025-12-03 | 428 | 6.37d |  | Ayesha [80%] | 8h |
| 430 | 1.4.1.1.1.2 | **Setup Screen** | inactive | 120.98d? | 2025-06-17 | 2025-12-03 |  | 6.22d |  |  | 271h |
| 431 | 1.4.1.1.1.2.1 | **Development** | inactive | 111.65d? | 2025-06-17 | 2025-11-20 |  | 6.22d | 0d |  | 166h |
| 432 | 1.4.1.1.1.2.1.1 | DotNet - Ali | inactive | 6.25d? | 2025-09-17 | 2025-09-25 | 332 | 46.07d |  | Ali [80%] | 40h |
| 433 | 1.4.1.1.1.2.1.2 | DotNet - Ali | inactive | 7.81d? | 2025-11-10 | 2025-11-20 | 404 | 6.22d |  | Ali [80%] | 50h |
| 434 | 1.4.1.1.1.2.1.3 | DotNet - Arslan | inactive | 6.25d? | 2025-09-05 | 2025-09-15 | 137 | 49.46d | 43.09d | Arslan [80%] | 40h |
| 435 | 1.4.1.1.1.2.1.4 | DB | inactive | 7.5d? | 2025-06-17 | 2025-06-26 |  | 110.38d |  | Yasir [60%] | 36h |
| 436 | 1.4.1.1.1.2.2 | Deployment | inactive | 1d? | 2025-11-20 | 2025-11-21 | 431 | 6.22d | 0d |  | 1h |
| 437 | 1.4.1.1.1.2.3 | **QA** | inactive | 116.4d? | 2025-06-17 | 2025-11-27 |  | 10.81d |  |  | 46h |
| 438 | 1.4.1.1.1.2.3.1 | Test case writing | inactive | 2.5d? | 2025-06-17 | 2025-06-19 |  | 124.71d |  | Ayesha [80%] | 16h |
| 439 | 1.4.1.1.1.2.3.2 | Testing | inactive | 3.75d? | 2025-11-21 | 2025-11-27 | 436 | 10.81d |  | Ayesha [80%] | 24h |
| 440 | 1.4.1.1.1.2.3.3 | QA Review and management | inactive | 3.75d? | 2025-11-21 | 2025-11-27 | 436 | 10.81d |  | Bilal [20%] | 6h |
| 441 | 1.4.1.1.1.2.4 | **Bug Verification** | inactive | 8.33d? | 2025-11-21 | 2025-12-03 |  | 6.22d |  |  | 58h |
| 442 | 1.4.1.1.1.2.4.1 | Bug fixing | inactive | 8.33d? | 2025-11-21 | 2025-12-03 | 436, 403 | 6.22d |  | Ali [60%] | 40h |
| 443 | 1.4.1.1.1.2.4.2 | DB bug fixing | inactive | 1.25d | 2025-11-21 | 2025-11-24 | 436, 404 | 11.75d | 0d | Yasir [80%] | 8h |
| 444 | 1.4.1.1.1.2.4.3 | Bugs Verification | inactive | 1.56d? | 2025-11-24 | 2025-11-26 | 443 | 11.75d |  | Ayesha [80%] | 10h |
| 445 | 1.4.1.1.2 | Self Service Application | inactive, manual | 1d? | 2025-06-17 | 2025-06-17 |  |  |  |  |  |
| 446 | 1.4.1.1.3 | DB Packaging | inactive | 2.5d? | 2025-11-20 | 2025-11-25 | 431 | 19.06d |  | Yasir [20%] | 4h |
| 447 | 1.4.1.1.4 | Review and Management | inactive | 15d? | 2025-11-13 | 2025-12-04 | 406 | 11.5d |  | Abid [10%] | 12h |

| ID | WBS | Task | Type | Duration | Start | Finish | Predecessors | Total slack | Free slack | Resources | Work |
| --- | --- | --- | --- | --- | --- | --- | --- | --- | --- | --- | --- |
| 448 | 1.4.2 | **2nd integration / Integration Test** | inactive | 5d? | 2025-12-08 | 2025-12-15 | 411 | 3.62d | 0d |  | 106h |
| 449 | 1.4.2.1 | Testing | inactive | 5d? | 2025-12-08 | 2025-12-15 |  | 3.62d |  | Bilal [40%] | 16h |
| 450 | 1.4.2.2 | Testing | inactive | 4.69d? | 2025-12-08 | 2025-12-15 |  | 3.93d |  | Kashif [80%] | 30h |
| 451 | 1.4.2.3 | Bug Fixing | inactive | 4.69d? | 2025-12-08 | 2025-12-15 |  | 3.93d |  | Asad [80%] | 30h |
| 452 | 1.4.2.4 | Bug Fixing | inactive | 4.69d | 2025-12-08 | 2025-12-15 |  | 3.93d |  | Ali [80%] | 30h |
| 453 | 1.4.3 | Ready for UAT | inactive | 1d? | 2025-12-15 | 2025-12-16 | 448 | 3.62d |  |  |  |
| 455 | 2 | **Mobile App** |  | 133.21d? | 2025-06-17 | 2025-12-22 |  | 0d |  |  | 1572h |
| 456 | 2.1 | Estimation and Planning |  | 1d? | 2025-06-17 | 2025-06-17 |  | 132.21d |  |  |  |
| 457 | 2.2 | Technical R&D and KickOff |  | 4.17d | 2025-06-17 | 2025-06-23 |  | 5.71d | 0d | Muzamal [60%] | 20h |
| 458 | 2.3 | **Development** |  | 95d? | 2025-06-23 | 2025-11-04 |  | 5.71d |  |  | 742h |
| 459 | 2.3.1 | **Auth Pages** |  | 4.69d? | 2025-06-23 | 2025-06-27 | 457 | 5.71d | 0d |  | 37h |
| 460 | 2.3.1.1 | Dot Net |  | 4.69d? | 2025-06-23 | 2025-06-27 |  | 5.71d |  | Aimen [80%] | 30h |
| 461 | 2.3.1.2 | R&D Review / Management |  | 4.38d? | 2025-06-23 | 2025-06-27 |  | 6.02d |  | Muzamal [20%] | 7h |
| 462 | 2.3.2 | **TimeSheet** |  | 10d? | 2025-06-27 | 2025-07-11 | 459 | 5.71d | 0d |  | 76h |
| 463 | 2.3.2.1 | Dot Net |  | 9.38d? | 2025-06-27 | 2025-07-11 |  | 6.33d |  | Aimen [80%] | 60h |
| 464 | 2.3.2.2 | R&D Review / Management |  | 10d? | 2025-06-27 | 2025-07-11 |  | 5.71d |  | Muzamal [20%] | 16h |
| 465 | 2.3.3 | **Expense** |  | 12.5d? | 2025-07-11 | 2025-07-30 | 462 | 5.71d | 0d |  | 100h |
| 466 | 2.3.3.1 | Dot Net |  | 12.5d? | 2025-07-11 | 2025-07-30 |  | 5.71d |  | Aimen [80%] | 80h |
| 467 | 2.3.3.2 | R&D Review / Management |  | 12.5d? | 2025-07-11 | 2025-07-30 |  | 5.71d |  | Muzamal [20%] | 20h |
| 468 | 2.3.4 | **Time Approval** |  | 10d? | 2025-07-30 | 2025-08-13 | 465 | 5.71d |  |  | 76h |
| 469 | 2.3.4.1 | Dot Net |  | 9.38d? | 2025-07-30 | 2025-08-12 |  | 5.71d | 0d | Aimen [80%] | 60h |
| 470 | 2.3.4.2 | R&D Review / Management |  | 10d? | 2025-07-30 | 2025-08-13 |  | 36.96d |  | Muzamal [20%] | 16h |
| 471 | 2.3.5 | **Expense Approval** |  | 12.5d? | 2025-08-12 | 2025-09-01 | 469 | 5.71d | 0d |  | 100h |
| 472 | 2.3.5.1 | Dot Net |  | 12.5d? | 2025-08-12 | 2025-09-01 |  | 5.71d |  | Aimen [80%] | 80h |
| 473 | 2.3.5.2 | R&D Review / Management |  | 12.5d? | 2025-08-12 | 2025-09-01 |  | 5.71d |  | Muzamal [20%] | 20h |

| ID | WBS | Task | Duration | Start | Finish | Predecessors | Total slack | Free slack | Constraint | Resources | Work |
| --- | --- | --- | --- | --- | --- | --- | --- | --- | --- | --- | --- |
| 474 | 2.3.6 | **Common Pages** | 10d? | 2025-09-01 | 2025-09-15 | 471 | 5.71d | 0d |  |  | 76h |
| 475 | 2.3.6.1 | Dot Net | 9.38d? | 2025-09-01 | 2025-09-12 |  | 6.33d |  |  | Aimen [80%] | 60h |
| 476 | 2.3.6.2 | R&D Review / Management | 10d? | 2025-09-01 | 2025-09-15 |  | 5.71d |  |  | Muzamal [20%] | 16h |
| 477 | 2.3.7 | **Others** | 12.5d? | 2025-09-15 | 2025-10-01 | 474 | 5.71d | 0d |  |  | 100h |
| 478 | 2.3.7.1 | Dot Net | 12.5d? | 2025-09-15 | 2025-10-01 |  | 5.71d |  |  | Aimen [80%] | 80h |
| 479 | 2.3.7.2 | R&D Review / Management | 12.5d? | 2025-09-15 | 2025-10-01 |  | 5.71d |  |  | Muzamal [20%] | 20h |
| 480 | 2.3.8 | **Blockers/Outstanding Issues** | 18.75d? | 2025-10-01 | 2025-10-28 | 477 | 5.71d | 0d |  |  | 140h |
| 481 | 2.3.8.1 | Dot Net | 18.75d? | 2025-10-01 | 2025-10-28 |  | 5.71d |  |  | Aimen [80%] | 120h |
| 482 | 2.3.8.2 | R&D Review / Management | 12.5d? | 2025-10-01 | 2025-10-20 |  | 11.96d |  |  | Muzamal [20%] | 20h |
| 483 | 2.3.9 | **QA + Bug Fixing** | 4.69d? | 2025-10-28 | 2025-11-04 | 480 | 34.04d |  |  |  | 37h |
| 484 | 2.3.9.1 | Dot Net | 4.69d? | 2025-10-28 | 2025-11-04 |  | 34.04d |  |  | Aimen [80%] | 30h |
| 485 | 2.3.9.2 | R&D Review / Management | 4.38d? | 2025-10-28 | 2025-11-03 |  | 34.35d |  |  | Muzamal [20%] | 7h |
| 486 | 2.4 | **QA** | 105.75d? | 2025-07-14 | 2025-12-09 |  | 0d |  | start no earlier than 2025-07-14 |  | 770h |
| 487 | 2.4.1 | Test case writing | 12.5d? | 2025-07-14 | 2025-07-30 |  | 93.25d |  |  | Hamza [80%] | 80h |
| 488 | 2.4.2 | **Testing** | 73.52d? | 2025-07-30 | 2025-11-11 | 465 | 0d |  |  |  | 330h |
| 489 | 2.4.2.1 | Auth Pages | 4.69d | 2025-09-11 | 2025-09-17 |  | 0d |  | start no earlier than 2025-09-11 | Hamza [80%] | 30h |
| 490 | 2.4.2.2 | TimeSheet | 6.25d? | 2025-09-17 | 2025-09-26 | 489 | 0d |  |  | Hamza [80%] | 40h |
| 491 | 2.4.2.3 | Expense | 6.25d? | 2025-09-26 | 2025-10-06 | 490 | 0d |  |  | Hamza [80%] | 40h |
| 492 | 2.4.2.4 | Time Approval | 6.25d? | 2025-10-06 | 2025-10-14 | 468, 491 | 0d |  |  | Hamza [80%] | 40h |
| 493 | 2.4.2.5 | Expense Approval | 6.25d? | 2025-10-14 | 2025-10-22 | 471, 492 | 0d |  |  | Hamza [80%] | 40h |
| 494 | 2.4.2.6 | Common Pages | 4.69d? | 2025-10-22 | 2025-10-29 | 474, 493 | 0d |  |  | Hamza [80%] | 30h |
| 495 | 2.4.2.7 | Others | 4.69d? | 2025-10-29 | 2025-11-05 | 477, 494 | 0d |  |  | Hamza [80%] | 30h |
| 496 | 2.4.2.8 | Outstanding Issues | 4.69d? | 2025-11-05 | 2025-11-11 | 480, 495 | 0d |  |  | Hamza [80%] | 30h |
| 497 | 2.4.2.9 | QA Review and Management | 62.5d? | 2025-07-30 | 2025-10-27 | 465 | 11.02d |  |  | Bilal [10%] | 50h |

| ID | WBS | Task | Type | Duration | Start | Finish | Predecessors | Total slack | Free slack | Constraint | Resources | Work |
| --- | --- | --- | --- | --- | --- | --- | --- | --- | --- | --- | --- | --- |
| 498 | 2.4.3 | **Final Iteration** |  | 20d? | 2025-11-11 | 2025-12-09 | 488 | 0d |  |  |  | 360h |
| 499 | 2.4.3.1 | Testing |  | 12.5d? | 2025-11-11 | 2025-11-28 |  | 7.5d |  |  | Bilal [40%] | 40h |
| 500 | 2.4.3.2 | Testing |  | 16.67d? | 2025-11-11 | 2025-12-04 |  | 3.33d |  |  | Hamza [60%] | 80h |
| 501 | 2.4.3.3 | Testing |  | 16.67d? | 2025-11-11 | 2025-12-04 |  | 3.33d |  |  | Ayesha [60%] | 80h |
| 502 | 2.4.3.4 | Bug Fixing |  | 20d? | 2025-11-11 | 2025-12-09 |  | 0d |  |  | Aimen [50%] | 80h |
| 503 | 2.4.3.5 | Bug Fixing |  | 20d? | 2025-11-11 | 2025-12-09 |  | 0d |  |  | Muzamal [50%] | 80h |
| 504 | 2.5 | Upload on Store and Verification |  | 8.33d | 2025-12-09 | 2025-12-22 | 486 | 0d |  |  | Muzamal [60%] | 40h |
| 506 | 3 | Database - Integrity | manual | 1d? | 2025-06-17 | 2025-06-17 |  |  |  |  |  |  |
| 508 | 4 | Automation | manual | 1d? | 2025-06-17 | 2025-06-17 |  |  |  |  |  |  |
| 510 | 5 | **Adhoc Items** |  | 4.29d? | 2025-07-14 | 2025-07-21 |  | 26.5d |  |  |  | 24h |
| 511 | 5.1 | AI Plateform version upgrade (R&D) |  | 4.29d? | 2025-07-14 | 2025-07-21 | 268 | 26.5d | 0d | start no earlier than 2025-07-14 | Asad [70%] | 24h |
