# nexelus 14_R22

Schedule from MS Project, 2022-04-25 to 2022-10-19.

## Calendars

- Standard: Mon-Fri 09:30-13:00, 14:00-18:30; Sat-Sun off. Exceptions (off unless hours are given): 2022-05-02 to 2022-05-04 (Eid ul Fitr), 2022-07-11 to 2022-07-13 (Eid-al-Adha), 2022-08-08 (Ashura), 2022-10-07 (Eid Milad Nabi).

## Resources

| Resource |
| --- |
| Bilal |
| Arif K |
| Imran Q |
| Asif |
| Zeeshan |
| Adnan |
| Farooq |
| Resource 1 |
| Resource 2 |
| DB Resource 1 |
| Naeem |
| Ayesha |
| AsimJ |
| Tauseef |
| Rabia |
| Arshad |

## Schedule

| ID | WBS | Task | Duration | Start | Finish | Predecessors | Total slack | Free slack | Constraint | Resources | Work | Text2 |
| --- | --- | --- | --- | --- | --- | --- | --- | --- | --- | --- | --- | --- |
| 1 | 1 | **Nexelus 14** | 119.58d? | 2022-04-25 | 2022-10-19 |  | 0d |  |  |  | 4790h |  |
| 2 | 1.1 | **Migration to Core** | 104.25d? | 2022-04-25 | 2022-09-27 |  | 2.88d |  |  |  | 2407h |  |
| 3 | 1.1.1 | **Development** | 100d? | 2022-04-25 | 2022-09-20 |  | 4.75d |  |  |  | 1631h |  |
| 4 | 1.1.1.1 | **Build 1** | 10d | 2022-04-25 | 2022-05-11 |  | 8.12d |  |  |  | 195h | Shoaib,Jawad |
| 5 | 1.1.1.1.1 | **Vendor Profile** | 7.03d | 2022-04-25 | 2022-05-09 |  | 12.69d | 0d |  |  | 60h |  |
| 6 | 1.1.1.1.1.1 | Dev | 7.03d | 2022-04-25 | 2022-05-09 |  | 68.84d |  |  | Zeeshan [80%] | 45h |  |
| 7 | 1.1.1.1.1.2 | DB | 4.69d | 2022-04-25 | 2022-04-29 |  | 12.69d | 0d |  | Arif K [40%] | 15h |  |
| 8 | 1.1.1.1.2 | **Expense Groups** | 10d | 2022-04-25 | 2022-05-11 |  | 12.06d | 0.75d |  |  | 95h |  |
| 9 | 1.1.1.1.2.1 | Dev | 10d | 2022-04-25 | 2022-05-11 |  | 12.06d |  |  | Adnan | 80h |  |
| 10 | 1.1.1.1.2.2 | DB | 4.69d | 2022-04-29 | 2022-05-11 | 7 | 12.69d |  |  | Arif K [40%] | 15h |  |
| 11 | 1.1.1.1.3 | **Schedule Billing and Estimation Billing for Level 1** | 3.12d | 2022-04-25 | 2022-04-28 |  | 8.12d | 0d |  |  | 25h |  |
| 12 | 1.1.1.1.3.1 | Dev | 1.88d | 2022-04-25 | 2022-04-26 |  | 8.12d | 0d |  | Farooq | 15h |  |
| 13 | 1.1.1.1.3.2 | DB | 3.12d | 2022-04-25 | 2022-04-28 |  | 100.25d |  |  | Arif K [40%] | 10h |  |
| 14 | 1.1.1.1.4 | **Delete file from Temp folders on new voucher etc** | 1.88d | 2022-04-26 | 2022-04-28 |  | 8.12d | 1.38d |  |  | 15h |  |
| 15 | 1.1.1.1.4.1 | Dev | 1.88d | 2022-04-26 | 2022-04-28 | 12 | 8.12d | 5.25d |  | Farooq | 15h |  |
| 16 | 1.1.1.2 | **Build 2** | 47.19d? | 2022-05-11 | 2022-07-20 |  | 33.69d |  |  |  | 137h |  |
| 17 | 1.1.1.2.1 | Display UI’s only if there is license for module | 2d | 2022-05-11 | 2022-05-12 |  | 63.75d | 1.75d | start no earlier than 2022-05-11 | Rabia | 16h |  |
| 18 | 1.1.1.2.2 | **Upload Transaction** | 10d? | 2022-07-01 | 2022-07-20 | 255 | 33.69d | 0d |  |  | 121h |  |
| 19 | 1.1.1.2.2.1 | UI | 2d | 2022-07-01 | 2022-07-05 |  | 41.69d |  |  | AsimJ [50%] | 7h |  |
| 20 | 1.1.1.2.2.2 | User Documentation | 3.75d | 2022-07-01 | 2022-07-06 | 108 | 33.69d | 0d |  | Zeeshan [80%] | 24h |  |
| 21 | 1.1.1.2.2.3 | Dev | 6.25d? | 2022-07-06 | 2022-07-20 | 20 | 33.69d |  |  | Zeeshan [80%] | 40h |  |
| 22 | 1.1.1.2.2.4 | DB | 6.25d? | 2022-07-01 | 2022-07-14 |  | 37.44d |  |  | Rabia | 50h |  |
| 23 | 1.1.1.3 | **Build 3** | 31.62d? | 2022-06-01 | 2022-07-19 |  | 18.88d |  |  |  | 418h |  |
| 24 | 1.1.1.3.1 | **Journal Entry** | 14.62d? | 2022-06-01 | 2022-06-21 |  | 18.88d | 0d |  |  | 132h |  |
| 25 | 1.1.1.3.1.1 | UI | 2.62d | 2022-06-01 | 2022-06-03 |  | 18.88d | 0d | start no earlier than 2022-06-01 | AsimJ | 16h |  |
| 26 | 1.1.1.3.1.2 | User Documentation | 2d | 2022-06-03 | 2022-06-07 | 25 | 18.88d | 0d |  | Resource 2 | 16h |  |
| 27 | 1.1.1.3.1.3 | Dev | 10d? | 2022-06-07 | 2022-06-21 | 26 | 18.88d |  |  | Resource 2 | 80h |  |
| 28 | 1.1.1.3.1.4 | DB | 2.5d? | 2022-06-07 | 2022-06-10 | 26 | 26.38d |  |  | Rabia | 20h |  |

| ID | WBS | Task | Duration | Start | Finish | Predecessors | Total slack | Free slack | Resources | Work |
| --- | --- | --- | --- | --- | --- | --- | --- | --- | --- | --- |
| 29 | 1.1.1.3.2 | **Setup Screens - UI** | 17d | 2022-06-21 | 2022-07-19 | 24 | 18.88d | 0d |  | 153h |
| 30 | 1.1.1.3.2.1 | UI | 2d | 2022-06-21 | 2022-06-23 |  | 33.88d |  | AsimJ [50%] | 7h |
| 31 | 1.1.1.3.2.2 | User Documentation | 2d | 2022-06-21 | 2022-06-23 |  | 18.88d | 0d | Resource 1 | 16h |
| 32 | 1.1.1.3.2.3 | Dev | 15d | 2022-06-23 | 2022-07-19 | 31 | 18.88d |  | Resource 1 | 120h |
| 33 | 1.1.1.3.2.4 | DB | 1.25d | 2022-06-21 | 2022-06-22 |  | 34.62d |  | Rabia | 10h |
| 34 | 1.1.1.3.3 | **Expense Type** | 14.5d? | 2022-06-21 | 2022-07-15 | 24 | 24.75d | 0d |  | 133h |
| 35 | 1.1.1.3.3.1 | UI | 2d | 2022-06-21 | 2022-06-23 |  | 37.25d |  | AsimJ [50%] | 7h |
| 36 | 1.1.1.3.3.2 | User Documentation | 2d | 2022-06-21 | 2022-06-23 |  | 24.75d | 0d | Resource 2 | 16h |
| 37 | 1.1.1.3.3.3 | Dev | 12.5d? | 2022-06-23 | 2022-07-15 | 36 | 24.75d |  | Resource 2 | 100h |
| 38 | 1.1.1.3.3.4 | DB | 3.12d? | 2022-06-21 | 2022-06-24 | 17 | 36.12d |  | Arif K [40%] | 10h |
| 39 | 1.1.1.4 | **Build 4** | 33.88d? | 2022-07-14 | 2022-08-31 |  | 9.5d |  |  | 388h |
| 40 | 1.1.1.4.1 | **Purchase Order** | 33.88d? | 2022-07-14 | 2022-08-31 | 250 | 9.5d | 0d |  | 308h |
| 41 | 1.1.1.4.1.1 | UI | 2d | 2022-07-14 | 2022-07-15 |  | 41.38d |  | AsimJ [50%] | 7h |
| 42 | 1.1.1.4.1.2 | User Documentation | 2.62d | 2022-07-14 | 2022-07-18 |  | 9.5d | 0d | Adnan | 16h |
| 43 | 1.1.1.4.1.3 | Dev | 31.25d? | 2022-07-18 | 2022-08-31 | 42 | 9.5d |  | Adnan | 250h |
| 44 | 1.1.1.4.1.4 | DB | 10.94d? | 2022-07-14 | 2022-07-28 |  | 32.44d |  | Arif K [40%] | 35h |
| 45 | 1.1.1.4.2 | **Restrict multiple login with single user.** | 6.25d? | 2022-07-27 | 2022-08-04 | 114 | 33.69d | 0d |  | 80h |
| 46 | 1.1.1.4.2.1 | Dev | 6.25d? | 2022-07-27 | 2022-08-04 |  | 33.69d |  | Zeeshan [80%] | 40h |
| 47 | 1.1.1.4.2.2 | DB | 6.25d? | 2022-07-27 | 2022-08-04 | 132 | 33.69d |  | Arif K [80%] | 40h |
| 48 | 1.1.1.5 | **Build 5** | 46.88d? | 2022-07-15 | 2022-09-20 |  | 4.75d |  |  | 493h |
| 49 | 1.1.1.5.1 | **Update Transaction** | 9.5d? | 2022-09-07 | 2022-09-20 | 257 | 2.88d | 0d |  | 134h |
| 50 | 1.1.1.5.1.1 | UI | 2d | 2022-09-07 | 2022-09-09 |  | 10.38d |  | AsimJ [50%] | 8h |
| 51 | 1.1.1.5.1.2 | User Documentation | 2d | 2022-09-07 | 2022-09-09 |  | 2.88d | 0d | Farooq | 16h |
| 52 | 1.1.1.5.1.3 | Dev | 7.5d? | 2022-09-09 | 2022-09-20 | 51 | 2.88d |  | Farooq | 60h |
| 53 | 1.1.1.5.1.4 | DB | 6.25d? | 2022-09-07 | 2022-09-15 |  | 6.12d |  | Rabia | 50h |

| ID | WBS | Task | Duration | Start | Finish | Predecessors | Total slack | Free slack | Resources | Work |
| --- | --- | --- | --- | --- | --- | --- | --- | --- | --- | --- |
| 54 | 1.1.1.5.2 | **Resource Transaction Entry** | 17d? | 2022-07-29 | 2022-08-24 | 29, 117 | 18.88d | 0d |  | 162h |
| 55 | 1.1.1.5.2.1 | UI | 2.62d | 2022-07-29 | 2022-08-03 |  | 33.25d |  | AsimJ | 16h |
| 56 | 1.1.1.5.2.2 | User Documentation | 2d | 2022-07-29 | 2022-08-02 |  | 18.88d | 0d | Resource 1 | 16h |
| 57 | 1.1.1.5.2.3 | Dev | 15d? | 2022-08-02 | 2022-08-24 | 56 | 18.88d | 5d | Resource 1 | 120h |
| 58 | 1.1.1.5.2.4 | DB | 1.25d? | 2022-07-29 | 2022-08-01 |  | 34.62d |  | DB Resource 1 | 10h |
| 59 | 1.1.1.5.3 | **Expense Transaction Entry** | 21d? | 2022-07-15 | 2022-08-16 | 34 | 24.75d | 0d |  | 157h |
| 60 | 1.1.1.5.3.1 | UI | 3d | 2022-07-15 | 2022-07-21 |  | 24.75d | 0d | AsimJ [50%] | 11h |
| 61 | 1.1.1.5.3.2 | User Documentation | 2d | 2022-07-21 | 2022-07-25 | 60 | 24.75d | 0d | Resource 2 | 16h |
| 62 | 1.1.1.5.3.3 | Dev | 15d? | 2022-07-25 | 2022-08-16 | 61 | 24.75d | 0d | Resource 2 | 120h |
| 63 | 1.1.1.5.3.4 | DB | 3.12d? | 2022-07-15 | 2022-07-20 |  | 43.38d |  | DB Resource 1 [40%] | 10h |
| 64 | 1.1.1.5.4 | **Report Server Migration to 2016 version.** | 5d | 2022-08-31 | 2022-09-07 | 40 | 13.88d | 0d |  | 40h |
| 65 | 1.1.1.5.4.1 | Dev | 5d | 2022-08-31 | 2022-09-07 |  | 13.88d | 12.12d | Adnan | 40h |
| 66 | 1.1.2 | **QA** | 103d | 2022-04-25 | 2022-09-23 |  | 4.12d |  |  | 523h |
| 67 | 1.1.2.1 | **Test Case writing from Build 1-5** | 10.75d | 2022-04-25 | 2022-05-12 |  | 11.31d |  |  | 165h |
| 68 | 1.1.2.1.1 | Expense Groups | 1d | 2022-04-25 | 2022-04-25 |  | 11.31d | 0d | Ayesha | 8h |
| 69 | 1.1.2.1.2 | Restrict multiple login with single user. | 1d | 2022-04-26 | 2022-04-26 | 68 | 11.31d | 0d | Ayesha | 8h |
| 70 | 1.1.2.1.3 | Post Voucher | 1.5d | 2022-04-27 | 2022-04-28 | 69 | 11.31d | 0d | Ayesha | 12h |
| 71 | 1.1.2.1.4 | Journal Entry | 1.25d | 2022-04-28 | 2022-04-29 | 70 | 11.31d | 0d | Ayesha | 10h |
| 72 | 1.1.2.1.5 | Expense Type | 1d | 2022-04-29 | 2022-05-05 | 71 | 11.31d | 0d | Ayesha | 8h |
| 73 | 1.1.2.1.6 | Resource Transaction Entry | 2d | 2022-05-05 | 2022-05-09 | 72 | 11.31d | 0d | Ayesha | 16h |
| 74 | 1.1.2.1.7 | Upload Transaction | 2d | 2022-05-09 | 2022-05-11 | 73 | 11.31d | 0d | Ayesha | 16h |
| 75 | 1.1.2.1.8 | Display UI’s only if there is license for module | 1d | 2022-05-11 | 2022-05-12 | 74 | 11.31d | 0d | Ayesha | 8h |
| 76 | 1.1.2.1.9 | Purchase Order | 1.5d | 2022-04-25 | 2022-04-26 |  | 97.25d | 0d | Naeem | 12h |
| 77 | 1.1.2.1.10 | GL Ditribution | 1d | 2022-04-26 | 2022-04-27 | 76 | 97.25d | 0d | Naeem | 8h |
| 78 | 1.1.2.1.11 | Setup Screens - UI | 1d | 2022-04-27 | 2022-04-28 | 77 | 97.25d | 0d | Naeem | 8h |
| 79 | 1.1.2.1.12 | Vendor Profile | 1d | 2022-04-28 | 2022-04-29 | 78 | 97.25d | 0d | Naeem | 8h |
| 80 | 1.1.2.1.13 | Schedule Billing and Estimation Billing for Level 1 | 1d | 2022-04-29 | 2022-05-05 | 79 | 97.25d | 0d | Naeem | 8h |
| 81 | 1.1.2.1.14 | Report Server Migration to 2016 version. | 1d | 2022-05-05 | 2022-05-06 | 80 | 97.25d | 0d | Naeem | 8h |
| 82 | 1.1.2.1.15 | Delete file from Temp folders on new voucher etc | 0.12d | 2022-05-06 | 2022-05-06 | 81 | 97.25d | 0d | Naeem | 1h |
| 83 | 1.1.2.1.16 | Expense Transaction Entry | 1.25d | 2022-05-06 | 2022-05-09 | 82 | 97.25d | 0d | Naeem | 10h |
| 84 | 1.1.2.1.17 | Post Transaction | 1d | 2022-05-09 | 2022-05-10 | 83 | 97.25d | 0d | Naeem | 8h |
| 85 | 1.1.2.1.18 | Update Transaction | 1d | 2022-05-10 | 2022-05-11 | 84 | 97.25d |  | Naeem | 8h |

| ID | WBS | Task | Duration | Start | Finish | Predecessors | Total slack | Free slack | Resources | Work | Text2 |
| --- | --- | --- | --- | --- | --- | --- | --- | --- | --- | --- | --- |
| 86 | 1.1.2.2 | **Build 1** | 9.62d | 2022-04-28 | 2022-05-16 |  | 18.94d |  |  | 48h | Shoaib,Jawad |
| 87 | 1.1.2.2.1 | Vendor Profile | 1.5d | 2022-05-09 | 2022-05-10 | 5 | 68.84d | 0d | Naeem | 12h |  |
| 88 | 1.1.2.2.2 | Expense Groups | 2d | 2022-05-12 | 2022-05-16 | 8, 75 | 11.31d | 0d | Ayesha | 16h |  |
| 89 | 1.1.2.2.3 | Schedule Billing and Estimation Billing for Level 1 | 2d | 2022-04-28 | 2022-05-05 | 11 | 100.25d | 0d | Asif | 16h |  |
| 90 | 1.1.2.2.4 | Delete file from Temp folders on new voucher etc | 0.5d | 2022-05-05 | 2022-05-05 | 14, 89 | 101.25d | 1d | Asif | 4h |  |
| 91 | 1.1.2.3 | **Build 2** | 46.44d | 2022-05-16 | 2022-07-25 |  | 47.31d |  |  | 32h |  |
| 92 | 1.1.2.3.1 | Display UI’s only if there is license for module | 1d | 2022-05-16 | 2022-05-17 | 17, 88 | 92.75d | 0d | Ayesha | 8h |  |
| 93 | 1.1.2.3.2 | Upload Transaction | 3d | 2022-07-20 | 2022-07-25 | 18 | 33.69d | 0d | Ayesha | 24h |  |
| 94 | 1.1.2.4 | **Build 3** | 22.62d | 2022-06-21 | 2022-07-27 |  | 35.88d |  |  | 85h |  |
| 95 | 1.1.2.4.1 | Journal Entry | 5d | 2022-06-21 | 2022-06-28 | 24 | 55.25d | 30.5d | Ayesha | 40h |  |
| 96 | 1.1.2.4.2 | Setup Screens - UI | 4.38d | 2022-07-19 | 2022-07-25 | 29 | 18.88d | 0d | Ayesha | 35h |  |
| 97 | 1.1.2.4.3 | Expense Type | 1.25d | 2022-07-26 | 2022-07-27 | 34, 96 | 41.38d | 16.62d | Ayesha | 10h |  |
| 98 | 1.1.2.5 | **Build 4** | 24.19d | 2022-08-04 | 2022-09-09 |  | 12.5d |  |  | 74h |  |
| 99 | 1.1.2.5.1 | Purchase Order | 6.25d | 2022-08-31 | 2022-09-09 | 40 | 9.5d | 0d | Asif | 50h |  |
| 100 | 1.1.2.5.2 | Restrict multiple login with single user. | 3d | 2022-08-04 | 2022-08-10 | 45 | 33.69d | 0d | Naeem | 24h |  |
| 101 | 1.1.2.6 | **Build 5** | 28.88d | 2022-08-16 | 2022-09-23 |  | 3.62d |  |  | 119h |  |
| 102 | 1.1.2.6.1 | Update Transaction | 3d | 2022-09-21 | 2022-09-23 | 49 | 2.88d | 0d | Naeem | 24h |  |
| 103 | 1.1.2.6.2 | Resource Transaction Entry | 5d | 2022-08-24 | 2022-08-31 | 54 | 18.88d | 0d | Ayesha | 40h |  |
| 104 | 1.1.2.6.3 | Expense Transaction Entry | 5d | 2022-08-16 | 2022-08-23 | 59, 95 | 25.5d | 0.75d | Naeem | 40h |  |
| 105 | 1.1.2.6.4 | Report Server Migration to 2016 version. | 1.88d | 2022-09-07 | 2022-09-09 | 64 | 13.88d | 4.38d | Naeem | 15h |  |
| 106 | 1.1.3 | **Bug Fixing** | 99.12d | 2022-05-05 | 2022-09-27 |  | 2.88d |  |  | 253h |  |
| 107 | 1.1.3.1 | **Build 1** | 9.62d | 2022-05-05 | 2022-05-18 |  | 18.94d |  |  | 46h | Shoaib,Jawad |
| 108 | 1.1.3.1.1 | Vendor Profile | 2.5d | 2022-05-10 | 2022-05-13 | 87 | 68.84d | 35.16d | Zeeshan [80%] | 16h |  |
| 109 | 1.1.3.1.2 | Expense Groups | 2d | 2022-05-16 | 2022-05-18 | 88 | 11.31d | 0d | Adnan | 16h |  |
| 110 | 1.1.3.1.3 | Schedule Billing and Estimation Billing for Level 1 | 1.5d | 2022-05-05 | 2022-05-06 | 89 | 100.25d | 0d | Farooq | 12h |  |
| 111 | 1.1.3.1.4 | Delete file from Temp folders on new voucher etc | 0.25d | 2022-05-06 | 2022-05-06 | 90, 110 | 100.25d |  | Farooq | 2h |  |

| ID | WBS | Task | Type | Duration | Start | Finish | Predecessors | Total slack | Free slack | Constraint | Resources | Work |
| --- | --- | --- | --- | --- | --- | --- | --- | --- | --- | --- | --- | --- |
| 112 | 1.1.3.2 | **Build 2** |  | 47.94d | 2022-05-17 | 2022-07-27 |  | 45.44d |  |  |  | 21h |
| 113 | 1.1.3.2.1 | Display UI’s only if there is license for module |  | 0.62d | 2022-05-17 | 2022-05-18 | 92 | 92.75d |  |  | Rabia | 5h |
| 114 | 1.1.3.2.2 | Upload Transaction |  | 2.5d | 2022-07-25 | 2022-07-27 | 93 | 33.69d | 0d |  | Zeeshan [80%] | 16h |
| 115 | 1.1.3.3 | **Build 3** |  | 19.88d | 2022-07-26 | 2022-08-23 |  | 18.88d |  |  |  | 76h |
| 116 | 1.1.3.3.1 | Journal Entry |  | 3.75d | 2022-08-16 | 2022-08-19 | 95, 62 | 24.75d | 0d |  | Resource 2 | 30h |
| 117 | 1.1.3.3.2 | Setup Screens - UI |  | 3.75d | 2022-07-26 | 2022-07-29 | 96 | 18.88d | 0d |  | Resource 1 | 30h |
| 118 | 1.1.3.3.3 | Expense Type |  | 2d | 2022-08-19 | 2022-08-23 | 97, 116 | 24.75d | 0d |  | Resource 2 | 16h |
| 119 | 1.1.3.4 | **Build 4** |  | 26.19d | 2022-08-10 | 2022-09-16 |  | 10d |  |  |  | 56h |
| 120 | 1.1.3.4.1 | Purchase Order |  | 5d | 2022-09-09 | 2022-09-16 | 99 | 9.5d | 0d |  | Adnan | 40h |
| 121 | 1.1.3.4.2 | Restrict multiple login with single user. |  | 2.5d | 2022-08-10 | 2022-08-15 | 100, 184 | 33.69d |  |  | Zeeshan [80%] | 16h |
| 122 | 1.1.3.5 | **Build 5** |  | 24.38d | 2022-08-23 | 2022-09-27 |  | 2.88d |  |  |  | 54h |
| 123 | 1.1.3.5.1 | Update Transaction |  | 1.25d | 2022-09-26 | 2022-09-27 | 102, 65 | 2.88d |  |  | Farooq | 10h |
| 124 | 1.1.3.5.2 | Resource Transaction Entry |  | 2.5d | 2022-08-31 | 2022-09-05 | 103, 57 | 18.88d |  |  | Resource 1 | 20h |
| 125 | 1.1.3.5.3 | Expense Transaction Entry |  | 2.5d | 2022-08-23 | 2022-08-26 | 104, 118 | 24.75d |  |  | Resource 2 | 20h |
| 126 | 1.1.3.5.4 | Report Server Migration to 2016 version. |  | 0.5d | 2022-09-16 | 2022-09-16 | 105, 120 | 9.5d |  |  | Adnan | 4h |
| 127 | 1.2 | **Optimization UI** |  | 107.12d? | 2022-04-25 | 2022-09-30 |  | 0d |  |  |  | 2051h |
| 128 | 1.2.1 | **Development** |  | 90.88d? | 2022-04-25 | 2022-09-07 |  | 11.88d |  |  |  | 1260h |
| 129 | 1.2.1.1 | Prototype and Requiement Finalizatiion | milestone | 0d? | 2022-04-25 | 2022-04-25 |  | 107.12d |  |  | Imran Q |  |
| 130 | 1.2.1.2 | Media Training for Adnan and Zeeshan |  | 1d | 2022-05-13 | 2022-05-13 |  | 14.06d | 2.75d | start no earlier than 2022-05-13 | Tauseef | 6h |
| 131 | 1.2.1.3 | Media Review |  | 1d | 2022-05-18 | 2022-05-19 | 130, 109 | 11.31d | 0d | start no earlier than 2022-05-16 | Adnan; Zeeshan | 16h |
| 132 | 1.2.1.4 | **Build 1 - UI Chnages, Site Editing** |  | 24d? | 2022-05-11 | 2022-06-13 | 15 | 2.88d | 0d |  |  | 136h |
| 133 | 1.2.1.4.1 | **Build 1-A** |  | 19d? | 2022-05-11 | 2022-06-06 |  | 2.88d |  |  |  | 96h |
| 134 | 1.2.1.4.1.1 | Resolve UI and CSS issues |  | 2.5d | 2022-05-11 | 2022-05-13 |  | 2.88d | 0d | start no earlier than 2022-05-11 | Farooq | 20h |
| 135 | 1.2.1.4.1.2 | Buttons and label addition |  | 0.31d | 2022-05-13 | 2022-05-13 | 134 | 9.88d | 0d |  | Farooq | 2.5h |
| 136 | 1.2.1.4.1.3 | Media Plan Changes |  | 0.62d | 2022-05-13 | 2022-05-25 | 135 | 2.88d | 0d |  | Farooq | 5h |
| 137 | 1.2.1.4.1.4 | Back implementation Optimization |  | 0.31d | 2022-05-25 | 2022-05-25 | 136 | 2.88d | 0d |  | Farooq | 2.5h |
| 138 | 1.2.1.4.1.5 | Vendor Lookup (edit and delete) |  | 3.75d | 2022-05-25 | 2022-05-31 | 137 | 2.88d | 0d |  | Farooq | 30h |
| 139 | 1.2.1.4.1.6 | Add mapping lookup |  | 1.25d | 2022-05-31 | 2022-06-01 | 138 | 2.88d | 0d |  | Farooq | 10h |
| 140 | 1.2.1.4.1.7 | DB save call for vendor edit, add |  | 2.5d | 2022-06-01 | 2022-06-06 | 139 | 2.88d | 0d |  | Farooq | 20h |
| 141 | 1.2.1.4.1.8 | Add Media Plan Name, Revision and Rule descrrption on top of UI |  | 0.75d? | 2022-06-06 | 2022-06-06 | 140 | 2.88d | 0d |  | Farooq | 6h |

| ID | WBS | Task | Duration | Start | Finish | Predecessors | Total slack | Free slack | Constraint | Resources | Work |
| --- | --- | --- | --- | --- | --- | --- | --- | --- | --- | --- | --- |
| 142 | 1.2.1.4.2 | **Build 1-B** | 5d | 2022-06-07 | 2022-06-13 |  | 2.88d |  |  |  | 40h |
| 143 | 1.2.1.4.2.1 | Refresh Sites from IPC call | 5d | 2022-06-07 | 2022-06-13 | 141 | 2.88d | 1.25d |  | Farooq | 40h |
| 144 | 1.2.1.5 | **Build 2 - Placement Editing** | 65.62d? | 2022-05-25 | 2022-08-30 |  | 0d |  |  |  | 420h |
| 145 | 1.2.1.5.1 | **Build 2A - Placement Grid, Package/Placement** | 18.12d? | 2022-05-25 | 2022-06-20 |  | 0d |  |  |  | 116h |
| 146 | 1.2.1.5.1.1 | **Placement grid** | 9.38d? | 2022-05-25 | 2022-06-07 |  | 0d |  |  |  | 60h |
| 147 | 1.2.1.5.1.1.1 | Data Loading | 2.5d? | 2022-05-25 | 2022-05-27 |  | 0d |  | start no earlier than 2022-05-25 | Imran Q [80%] | 16h |
| 148 | 1.2.1.5.1.1.2 | Selection of Rows and validation | 3.12d? | 2022-05-27 | 2022-06-01 | 147 | 0d |  |  | Imran Q [80%] | 20h |
| 149 | 1.2.1.5.1.1.3 | Indenting data | 3.75d? | 2022-06-01 | 2022-06-07 | 148 | 0d |  |  | Imran Q [80%] | 24h |
| 150 | 1.2.1.5.1.2 | **Build 2B** | 8.75d? | 2022-06-07 | 2022-06-20 |  | 0d |  |  |  | 56h |
| 151 | 1.2.1.5.1.2.1 | AdTech Lookup - Readonly | 2.5d? | 2022-06-07 | 2022-06-09 | 149 | 0d |  |  | Imran Q [80%] | 16h |
| 152 | 1.2.1.5.1.2.2 | Copy / Paste Placement / Package. Copy as Link Placement | 3.75d | 2022-06-09 | 2022-06-15 | 151 | 0d |  |  | Imran Q [80%] | 24h |
| 153 | 1.2.1.5.1.2.3 | Delete Lines | 2.5d? | 2022-06-15 | 2022-06-20 | 152 | 0d |  |  | Imran Q [80%] | 16h |
| 154 | 1.2.1.5.2 | **Build 2C - Packgae/Placement** | 47.5d? | 2022-06-20 | 2022-08-30 |  | 0d |  |  |  | 304h |
| 155 | 1.2.1.5.2.1 | **Package/placement** | 38.75d? | 2022-06-20 | 2022-08-17 |  | 0d |  |  |  | 248h |
| 156 | 1.2.1.5.2.1.1 | Core Attributes | 6.25d? | 2022-06-20 | 2022-06-28 | 153 | 0d |  |  | Imran Q [80%] | 40h |
| 157 | 1.2.1.5.2.1.2 | Ad Tech and Dimension Drop Downs | 6.25d? | 2022-06-28 | 2022-07-06 | 156 | 0d |  |  | Imran Q [80%] | 40h |
| 158 | 1.2.1.5.2.1.3 | Placement Linkage with Export to DCM | 6.25d? | 2022-07-06 | 2022-07-19 | 157 | 0d |  |  | Imran Q [80%] | 40h |
| 159 | 1.2.1.5.2.1.4 | Sizmek and DCM Attributes | 6.25d? | 2022-07-19 | 2022-07-28 | 158 | 0d |  |  | Imran Q [80%] | 40h |
| 160 | 1.2.1.5.2.1.5 | Custom Fields | 6.25d? | 2022-07-28 | 2022-08-05 | 159 | 0d |  |  | Imran Q [80%] | 40h |
| 161 | 1.2.1.5.2.1.6 | Add/Edit Placement / Package. | 6.25d | 2022-08-05 | 2022-08-16 | 160 | 0d |  |  | Imran Q [80%] | 40h |
| 162 | 1.2.1.5.2.1.7 | Delete Placement /Package | 1.25d | 2022-08-16 | 2022-08-17 | 161 | 0d |  |  | Imran Q [80%] | 8h |
| 163 | 1.2.1.5.2.2 | Save, cancel | 2.5d | 2022-08-17 | 2022-08-22 | 162 | 0d |  |  | Imran Q [80%] | 16h |
| 164 | 1.2.1.5.2.3 | Reset changes placement | 1.25d | 2022-08-22 | 2022-08-23 | 163 | 0d |  |  | Imran Q [80%] | 8h |
| 165 | 1.2.1.5.2.4 | Calculate and split placement data based on Period | 5d | 2022-08-23 | 2022-08-30 | 164 | 0d |  | start no earlier than 2022-05-11 | Imran Q [80%] | 32h |

| ID | WBS | Task | Duration | Start | Finish | Predecessors | Total slack | Free slack | Constraint | Resources | Work |
| --- | --- | --- | --- | --- | --- | --- | --- | --- | --- | --- | --- |
| 166 | 1.2.1.6 | **Build 3 - Media Plan Revision, Client Schedule** | 24.62d | 2022-08-03 | 2022-09-07 |  | 0d |  |  |  | 90h |
| 167 | 1.2.1.6.1 | Generate Media Plan revision with Optimized Vendor Placements | 2.5d | 2022-08-30 | 2022-09-02 | 165 | 0d |  |  | Imran Q [80%] | 16h |
| 168 | 1.2.1.6.2 | Generate Client Schedule | 3.75d | 2022-09-02 | 2022-09-07 | 167 | 0d |  |  | Imran Q [80%] | 24h |
| 169 | 1.2.1.6.3 | Summary Page Model for all Revisions | 6.25d | 2022-08-03 | 2022-08-12 | 185 | 2.88d | 0d |  | Farooq | 50h |
| 170 | 1.2.1.7 | **Build 4 - Import, Export, eSignature** | 37.31d | 2022-05-19 | 2022-07-15 |  | 2.88d |  |  |  | 264h |
| 171 | 1.2.1.7.1 | Import lookup, Import export buttons, with import file selection | 2d | 2022-05-19 | 2022-05-23 | 131, 109 | 11.31d | 0d | start no earlier than 2022-05-18 | Adnan | 16h |
| 172 | 1.2.1.7.2 | Import / Export Placements. | 15d | 2022-05-23 | 2022-06-13 | 171 | 11.31d | 0d |  | Adnan | 120h |
| 173 | 1.2.1.7.3 | Approval Process Changes | 5d | 2022-06-20 | 2022-06-27 | 143, 227 | 2.88d | 0d |  | Farooq | 40h |
| 174 | 1.2.1.7.4 | Grouping and print selection | 4d | 2022-06-27 | 2022-07-01 | 173 | 2.88d | 0d |  | Farooq | 32h |
| 175 | 1.2.1.7.5 | IO Approval Changes | 5d | 2022-07-01 | 2022-07-08 | 174 | 2.88d | 0d |  | Farooq | 40h |
| 176 | 1.2.1.7.6 | Checks for approval by vendor | 2d | 2022-07-08 | 2022-07-15 | 175 | 2.88d | 0d |  | Farooq | 16h |
| 177 | 1.2.1.8 | **Build 5 - BO, Trade Desk** | 28.31d | 2022-06-13 | 2022-07-27 |  | 2.88d |  |  |  | 128h |
| 178 | 1.2.1.8.1 | Bo Revision | 8d | 2022-07-15 | 2022-07-27 | 176 | 2.88d | 0d |  | Farooq | 64h |
| 179 | 1.2.1.8.2 | Trade Desk | 8d | 2022-06-13 | 2022-06-23 | 172 | 11.31d | 0d |  | Adnan | 64h |
| 180 | 1.2.1.9 | **Build 6 - Ad Server Revisions** | 50.31d | 2022-05-19 | 2022-08-03 |  | 8.38d |  |  |  | 200h |
| 181 | 1.2.1.9.1 | Facebook | 6.25d | 2022-05-19 | 2022-05-30 | 131 | 33.69d | 0d |  | Zeeshan [80%] | 40h |
| 182 | 1.2.1.9.2 | MicroSoft Ads | 6.25d | 2022-05-30 | 2022-06-07 | 181 | 33.69d | 0d |  | Zeeshan [80%] | 40h |
| 183 | 1.2.1.9.3 | Yahoo | 6.25d | 2022-06-07 | 2022-06-15 | 182 | 33.69d | 0d |  | Zeeshan [80%] | 40h |
| 184 | 1.2.1.9.4 | Twitter | 6.25d | 2022-06-15 | 2022-06-23 | 183 | 33.69d | 0d |  | Zeeshan [80%] | 40h |
| 185 | 1.2.1.9.5 | DV 360 | 5d | 2022-07-27 | 2022-08-03 | 178 | 2.88d | 0d |  | Farooq | 40h |
| 186 | 1.2.2 | **QA** | 71.69d | 2022-05-30 | 2022-09-12 |  | 13.25d |  |  |  | 411h |
| 187 | 1.2.2.1 | **Build 1** | 2.25d | 2022-06-14 | 2022-06-16 | 132 | 2.88d | 0d |  |  | 18h |
| 188 | 1.2.2.1.1 | Buttons and label addition | 0.06d | 2022-06-14 | 2022-06-14 | 135 | 2.88d | 0d |  | Asif | 0.5h |
| 189 | 1.2.2.1.2 | Media Plan Changes | 0.06d | 2022-06-14 | 2022-06-14 | 136, 188 | 2.88d | 0d |  | Asif | 0.5h |
| 190 | 1.2.2.1.3 | Back implementation Optimization | 0.12d | 2022-06-14 | 2022-06-14 | 137, 189 | 2.88d | 0d |  | Asif | 1h |
| 191 | 1.2.2.1.4 | Vendor Lookup (edit and delete) | 0.5d | 2022-06-14 | 2022-06-14 | 138, 190 | 2.88d | 0d |  | Asif | 4h |
| 192 | 1.2.2.1.5 | Add mapping lookup | 0.5d | 2022-06-14 | 2022-06-15 | 139, 191 | 2.88d | 0d |  | Asif | 4h |
| 193 | 1.2.2.1.6 | Refresh Sites from IPC call | 1d | 2022-06-15 | 2022-06-16 | 143, 192 | 2.88d |  |  | Asif | 8h |

| ID | WBS | Task | Duration | Start | Finish | Predecessors | Total slack | Free slack | Constraint | Resources | Work |
| --- | --- | --- | --- | --- | --- | --- | --- | --- | --- | --- | --- |
| 194 | 1.2.2.2 | **Build 2** | 61d | 2022-06-07 | 2022-09-06 |  | 13.06d |  |  |  | 104h |
| 195 | 1.2.2.2.1 | Placement grid | 2d | 2022-06-07 | 2022-06-09 | 146 | 59.81d | 48d |  | Bilal | 16h |
| 196 | 1.2.2.2.2 | Save, cancel | 1d | 2022-08-22 | 2022-08-23 | 163, 195 | 11.81d | 0d |  | Asif | 8h |
| 197 | 1.2.2.2.3 | Package/placement PopUp | 3.75d | 2022-08-23 | 2022-08-29 | 155, 196 | 11.81d | 0d |  | Asif | 30h |
| 198 | 1.2.2.2.4 | Ad tech look up under placement | 1d | 2022-08-29 | 2022-08-30 | 197 | 13.06d | 0d |  | Bilal | 8h |
| 199 | 1.2.2.2.5 | Add Placement / Package. | 3d | 2022-08-30 | 2022-09-02 | 161, 198 | 13.06d | 0d |  | Bilal | 24h |
| 200 | 1.2.2.2.6 | Delete Placement /Package | 0.25d | 2022-09-02 | 2022-09-02 | 162, 199 | 13.06d | 0d |  | Bilal | 2h |
| 201 | 1.2.2.2.7 | Copy / Paste Placement / Package. Copy as Link Placement | 2d | 2022-09-02 | 2022-09-06 | 152, 200 | 13.06d |  |  | Bilal | 16h |
| 202 | 1.2.2.3 | **Build 3** | 58.62d | 2022-06-16 | 2022-09-12 | 187 | 9.5d |  |  |  | 118h |
| 203 | 1.2.2.3.1 | Generate Media Plan revision with Optimized Vendor Placements | 3d | 2022-09-02 | 2022-09-07 | 167 | 13.25d |  |  | Asif | 24h |
| 204 | 1.2.2.3.2 | Generate Client Schedule | 3d | 2022-09-07 | 2022-09-12 | 168 | 10.75d |  |  | Asif | 24h |
| 205 | 1.2.2.3.3 | Import / Export Placements. | 7.5d | 2022-06-16 | 2022-06-27 | 172 | 9.5d | 0d |  | Asif | 60h |
| 206 | 1.2.2.3.4 | Summary Page Model for all Revisions - New page at end of complete process | 1.25d | 2022-08-12 | 2022-08-15 | 169 | 33.38d |  |  | Bilal | 10h |
| 207 | 1.2.2.4 | **Build 4** | 11.75d | 2022-06-27 | 2022-07-15 |  | 26.62d |  |  |  | 32h |
| 208 | 1.2.2.4.1 | Approval Process Changes | 1d | 2022-06-27 | 2022-06-28 | 173 | 32.12d | 29.25d |  | Naeem | 8h |
| 209 | 1.2.2.4.2 | Grouping and print selection | 0.25d | 2022-07-01 | 2022-07-01 | 174 | 31.38d | 28.5d |  | Naeem | 2h |
| 210 | 1.2.2.4.3 | IO Approval Changes | 2.5d | 2022-07-08 | 2022-07-15 | 175 | 24.38d | 0d |  | Naeem | 20h |
| 211 | 1.2.2.4.4 | Checks for approval by vendor | 0.25d | 2022-07-15 | 2022-07-15 | 176, 210 | 26.62d | 23.75d |  | Naeem | 2h |
| 212 | 1.2.2.5 | **Build 5** | 22.81d | 2022-06-23 | 2022-07-29 |  | 14.81d |  |  |  | 110h |
| 213 | 1.2.2.5.1 | Bo Revision | 2.5d | 2022-07-27 | 2022-07-29 | 178 | 43.38d |  |  | Bilal | 20h |
| 214 | 1.2.2.5.2 | Trade Desk | 1.75d | 2022-06-23 | 2022-06-27 | 179 | 14.81d | 5.31d |  | Bilal | 14h |
| 215 | 1.2.2.5.3 | **Optimizaion Verification wih Rules (Verification of Previous Build)** | 9.5d | 2022-07-06 | 2022-07-22 |  | 48.62d |  |  |  | 76h |
| 216 | 1.2.2.5.3.1 | Rule 1 | 1.25d | 2022-07-06 | 2022-07-07 |  | 48.62d | 0d | start no earlier than 2022-07-06 | Bilal | 10h |
| 217 | 1.2.2.5.3.2 | Rule 2 | 2.5d | 2022-07-07 | 2022-07-14 | 216 | 48.62d | 0d |  | Bilal | 20h |
| 218 | 1.2.2.5.3.3 | Rule 3 | 3.75d | 2022-07-14 | 2022-07-20 | 217 | 48.62d | 0d |  | Bilal | 30h |
| 219 | 1.2.2.5.3.4 | Mannual Optimize | 2d | 2022-07-20 | 2022-07-22 | 218 | 48.62d |  |  | Bilal | 16h |

| ID | WBS | Task | Duration | Start | Finish | Predecessors | Total slack | Free slack | Resources | Work |
| --- | --- | --- | --- | --- | --- | --- | --- | --- | --- | --- |
| 220 | 1.2.2.6 | **Build 6** | 44.69d | 2022-05-30 | 2022-08-03 |  | 18d |  |  | 29h |
| 221 | 1.2.2.6.1 | Facebook | 0.75d | 2022-05-30 | 2022-05-30 | 181 | 51.69d | 18d | Bilal | 6h |
| 222 | 1.2.2.6.2 | MicroSoft Ads | 1d | 2022-06-07 | 2022-06-08 | 182 | 46.19d | 12.5d | Bilal | 8h |
| 223 | 1.2.2.6.3 | Yahoo | 0.62d | 2022-06-15 | 2022-06-16 | 183 | 41.31d | 7.62d | Bilal | 5h |
| 224 | 1.2.2.6.4 | Twitter | 0.62d | 2022-06-23 | 2022-06-24 | 184 | 37.06d | 3.38d | Bilal | 5h |
| 225 | 1.2.2.6.5 | DV 360 | 0.62d | 2022-08-03 | 2022-08-03 | 185 | 18d | 15.12d | Bilal | 5h |
| 226 | 1.2.3 | **Bug Fixing** | 71.88d | 2022-06-16 | 2022-09-30 |  | 0d |  |  | 380h |
| 227 | 1.2.3.1 | Build 1 | 2d | 2022-06-16 | 2022-06-20 | 187 | 2.88d | 0d | Farooq | 16h |
| 228 | 1.2.3.2 | **Build 2** | 12.5d | 2022-09-07 | 2022-09-26 |  | 0d |  |  | 80h |
| 229 | 1.2.3.2.1 | Placement grid | 3.75d | 2022-09-07 | 2022-09-13 | 168 | 0d |  | Imran Q [80%] | 24h |
| 230 | 1.2.3.2.2 | Save, cancel | 0.31d | 2022-09-13 | 2022-09-13 | 196, 229 | 0d |  | Imran Q [80%] | 2h |
| 231 | 1.2.3.2.3 | Package/placement PopUp | 5d | 2022-09-13 | 2022-09-20 | 197, 230 | 0d |  | Imran Q [80%] | 32h |
| 232 | 1.2.3.2.4 | View Change Log | 0.31d | 2022-09-20 | 2022-09-21 | 231 | 0d |  | Imran Q [80%] | 2h |
| 233 | 1.2.3.2.5 | Ad tech look up under placement | 0.62d | 2022-09-21 | 2022-09-21 | 198, 232 | 0d |  | Imran Q [80%] | 4h |
| 234 | 1.2.3.2.6 | Add Placement / Package. | 1.25d | 2022-09-21 | 2022-09-23 | 199, 233 | 0d |  | Imran Q [80%] | 8h |
| 235 | 1.2.3.2.7 | Delete Placement /Package | 0.31d | 2022-09-23 | 2022-09-23 | 200, 234 | 0d |  | Imran Q [80%] | 2h |
| 236 | 1.2.3.2.8 | Copy / Paste Placement / Package. Copy as Link Placement | 0.94d | 2022-09-23 | 2022-09-26 | 201, 235 | 0d |  | Imran Q [80%] | 6h |
| 237 | 1.2.3.3 | **Build 3** | 23.88d | 2022-08-29 | 2022-09-30 |  | 0d |  |  | 32h |
| 238 | 1.2.3.3.1 | Generate Media Plan revision with Optimized Vendor Placements | 1.25d | 2022-09-26 | 2022-09-27 | 203, 236 | 0d |  | Imran Q [80%] | 8h |
| 239 | 1.2.3.3.2 | Generate Client Schedule | 2.5d | 2022-09-27 | 2022-09-30 | 204, 238 | 0d |  | Imran Q [80%] | 16h |
| 240 | 1.2.3.3.3 | Summary Page Model for all Revisions | 1d | 2022-08-29 | 2022-08-30 | 247, 256 | 2.88d | 0d | Farooq | 8h |
| 241 | 1.2.3.4 | **Build 4** | 35.25d | 2022-06-27 | 2022-08-19 |  | 2.88d |  |  | 86h |
| 242 | 1.2.3.4.1 | Import lookup, Import export buttons, with import file selection | 1.25d | 2022-06-27 | 2022-06-28 | 205, 179 | 9.5d | 0d | Adnan | 10h |
| 243 | 1.2.3.4.2 | Import / Export Placements. | 4d | 2022-06-29 | 2022-07-04 | 242 | 9.5d | 0d | Adnan | 32h |
| 244 | 1.2.3.4.3 | Approval Process Changes | 2.5d | 2022-08-12 | 2022-08-16 | 208, 169 | 2.88d | 0d | Farooq | 20h |
| 245 | 1.2.3.4.4 | Grouping and print selection | 0.25d | 2022-08-17 | 2022-08-17 | 209, 244 | 2.88d | 0d | Farooq | 2h |
| 246 | 1.2.3.4.5 | IO Approval Changes | 2.5d | 2022-08-17 | 2022-08-19 | 210, 245 | 2.88d | 0d | Farooq | 20h |
| 247 | 1.2.3.4.6 | Checks for approval by vendor | 0.25d | 2022-08-19 | 2022-08-19 | 211, 246 | 2.88d | 0d | Farooq | 2h |

| ID | WBS | Task | Duration | Start | Finish | Predecessors | Total slack | Free slack | Resources | Work |
| --- | --- | --- | --- | --- | --- | --- | --- | --- | --- | --- |
| 248 | 1.2.3.5 | **Build 5** | 34d | 2022-07-05 | 2022-08-25 |  | 2.88d |  |  | 64h |
| 249 | 1.2.3.5.1 | Bo Revision | 4d | 2022-08-22 | 2022-08-25 | 179, 247 | 2.88d | 0d | Farooq | 32h |
| 250 | 1.2.3.5.2 | Trade Desk | 4d | 2022-07-05 | 2022-07-08 | 214, 243 | 9.5d | 0d | Adnan | 32h |
| 251 | 1.2.3.6 | **Build 6** | 49.56d | 2022-06-23 | 2022-09-07 |  | 2.88d |  |  | 102h |
| 252 | 1.2.3.6.1 | Facebook | 1d | 2022-06-23 | 2022-06-24 | 221, 184 | 33.69d | 0d | Zeeshan | 8h |
| 253 | 1.2.3.6.2 | MicroSoft Ads | 1d | 2022-06-24 | 2022-06-27 | 222, 252 | 33.69d | 0d | Zeeshan | 8h |
| 254 | 1.2.3.6.3 | Yahoo | 2d | 2022-06-27 | 2022-06-29 | 223, 253 | 33.69d | 0d | Zeeshan | 16h |
| 255 | 1.2.3.6.4 | Twitter | 1.25d | 2022-06-29 | 2022-07-01 | 224, 254 | 33.69d | 0d | Zeeshan | 10h |
| 256 | 1.2.3.6.5 | DV 360 | 1.25d | 2022-08-26 | 2022-08-29 | 225, 249 | 2.88d | 0d | Farooq | 10h |
| 257 | 1.2.3.6.6 | Fix Rules Implementation | 6.25d | 2022-08-30 | 2022-09-07 | 240 | 2.88d | 0d | Farooq | 50h |
| 258 | 1.3 | Cross verification (Second QA Cycle) | 8.33d | 2022-09-30 | 2022-10-13 | 2, 127 | 0d |  | Bilal; Asif; Naeem | 200h |
| 259 | 1.4 | **Integration Testing and Release Verification** | 4.12d? | 2022-10-13 | 2022-10-19 | 258 | 0d |  |  | 132h |
| 260 | 1.4.1 | Integration Testing | 1.88d? | 2022-10-13 | 2022-10-17 |  | 0d |  | Bilal; Asif; Ayesha; Naeem | 60h |
| 261 | 1.4.2 | Release Deplyment and Verification | 2.25d | 2022-10-17 | 2022-10-19 | 260 | 0d |  | Asif; Bilal; Ayesha; Naeem | 72h |
| 262 | 2 | **Other Tasks** | 62.5d? | 2022-04-25 | 2022-07-28 |  | 57.08d |  |  | 274h |
| 263 | 2.1 | Revisit missing constraints | 62.5d | 2022-04-25 | 2022-07-28 |  | 57.08d |  | Arif K [20%] | 100h |
| 264 | 2.2 | SOC 1 Compliance | 33.48d | 2022-04-25 | 2022-06-14 |  | 86.1d |  | AsimJ [20%]; Tauseef [20%]; Arshad [40%] | 150h |
| 265 | 2.3 | Variable Names for Custom Menus | 1d? | 2022-04-25 | 2022-04-25 |  | 118.58d |  |  |  |
| 266 | 2.4 | Date Conversion in dotNet Core Impact | 1d? | 2022-04-25 | 2022-04-25 |  | 118.58d |  |  | 24h |
