# Nexelus 12.8 R1_1

Schedule from MS Project, 2021-01-05 to 2021-04-15, 7 hours a day, A marks actual dates.

## Calendars

- Standard: Mon-Fri 08:00-12:00, 13:00-17:00; Sat-Sun off.

## Resources

| Resource |
| --- |
| Shoaib |
| Tauseef |
| Imran Q |
| Arshad S |
| Arif K |
| Bilal R |
| Farhan |
| Asif A |
| Farooq |
| 70 |

## Schedule

| ID | WBS | Task | Type | Duration | Start | Finish | Predecessors | Complete | Remaining | Total slack | Free slack | Resources | Work |
| --- | --- | --- | --- | --- | --- | --- | --- | --- | --- | --- | --- | --- | --- |
| 1 | 1 | **Nexelus 12.8** |  | 83.43d? | 2021-01-05 A | 2021-04-15 |  |  | 83.43d? | 0d |  |  | 2480h |
| 2 | 1.1 | **Build 1** |  | 50d? | 2021-01-05 A | 2021-03-05 |  |  | 50d? | 33.43d |  |  | 846h |
| 3 | 1.1.1 | **Import / Export without MS Excel** |  | 16.29d | 2021-01-05 A | 2021-01-25 |  |  | 16.29d | 0d |  |  | 114h |
| 4 | 1.1.1.1 | **Development** |  | 12.86d | 2021-01-05 A | 2021-01-20 |  |  | 12.86d | 3.43d |  |  | 90h |
| 5 | 1.1.1.1.1 | **RM/PM.** |  | 4.29d | 2021-01-05 A | 2021-01-08 |  |  | 4.29d | 12d |  |  | 30h |
| 6 | 1.1.1.1.1.1 | Employee Schedule > Import | milestone | 0d | 2021-01-05 A | 2021-01-05 A |  | 100% |  |  |  | Shoaib |  |
| 7 | 1.1.1.1.1.2 | Employee Schedule > Export. | milestone | 0d | 2021-01-05 A | 2021-01-05 A | 6 | 100% |  |  |  | Shoaib |  |
| 8 | 1.1.1.1.1.3 | Task Management > Export |  | 1.71d | 2021-01-05 | 2021-01-06 | 7 |  |  | 13.71d | 0d | Shoaib | 12h |
| 9 | 1.1.1.1.1.4 | Calendar > Task List > Export |  | 0.86d | 2021-01-06 | 2021-01-07 | 8 |  |  | 13.71d |  | Shoaib | 6h |
| 10 | 1.1.1.1.1.5 | Custom Upload. | milestone | 0d | 2021-01-07 A | 2021-01-07 A | 9 | 100% |  |  |  | Shoaib |  |
| 11 | 1.1.1.1.1.6 | Custom Export | milestone | 0d | 2021-01-07 A | 2021-01-07 A | 10 | 100% |  |  |  | Shoaib |  |
| 12 | 1.1.1.1.1.7 | Reports > Template based reports. |  | 0.86d | 2021-01-07 | 2021-01-07 | 11 |  |  | 12d | 0d | Shoaib | 6h |
| 13 | 1.1.1.1.1.8 | Client Profile > Import Clients. |  | 0.86d | 2021-01-08 | 2021-01-08 | 12 |  |  | 12d |  | Shoaib | 6h |
| 14 | 1.1.1.1.2 | **Level2 Inquiry** |  | 0d | 2021-01-08 A | 2021-01-08 A | 5 | 100% |  |  |  |  |  |
| 15 | 1.1.1.1.2.1 | Status report. | milestone | 0d | 2021-01-08 A | 2021-01-08 A |  | 100% |  |  |  | Shoaib |  |
| 16 | 1.1.1.1.2.2 | Transaction export. | milestone | 0d | 2021-01-08 A | 2021-01-08 A | 15 | 100% |  |  |  | Shoaib |  |
| 17 | 1.1.1.1.3 | **Setup** |  | 0d | 2021-01-08 A | 2021-01-08 A | 14 | 100% |  |  |  |  |  |
| 18 | 1.1.1.1.3.1 | Creative Export | milestone | 0d | 2021-01-08 A | 2021-01-08 A |  | 100% |  |  |  | Shoaib |  |
| 19 | 1.1.1.1.3.2 | Account Maps Import/Export. | milestone | 0d | 2021-01-08 A | 2021-01-08 A | 18 | 100% |  |  |  | Shoaib |  |
| 20 | 1.1.1.1.4 | **Media RFP** |  | 4d | 2021-01-08 | 2021-01-14 |  |  |  | 0d |  |  | 28h |
| 21 | 1.1.1.1.4.1 | Placement Import |  | 1.71d | 2021-01-08 | 2021-01-12 | 19 |  |  | 0d |  | Shoaib | 12h |
| 22 | 1.1.1.1.4.2 | Placement Export |  | 2.29d | 2021-01-12 | 2021-01-14 | 21 |  |  | 0d |  | Shoaib | 16h |
| 23 | 1.1.1.1.5 | **Delivery Override** |  | 4.57d | 2021-01-14 | 2021-01-20 |  |  |  | 0d |  |  | 32h |
| 24 | 1.1.1.1.5.1 | Delivery override Import |  | 1.14d | 2021-01-14 | 2021-01-15 | 22 |  |  | 0d |  | Shoaib | 8h |
| 25 | 1.1.1.1.5.2 | Delivery override Export |  | 1.14d | 2021-01-15 | 2021-01-18 | 24 |  |  | 0d |  | Shoaib | 8h |
| 26 | 1.1.1.1.5.3 | Delivery override Import by Placement |  | 1.14d | 2021-01-18 | 2021-01-19 | 25 |  |  | 0d |  | Shoaib | 8h |
| 27 | 1.1.1.1.5.4 | Delivery override Export by Placement |  | 1.14d | 2021-01-19 | 2021-01-20 | 26 |  |  | 0d |  | Shoaib | 8h |

| ID | WBS | Task | Type | Duration | Start | Finish | Predecessors | Total slack | Free slack | Resources | Work |
| --- | --- | --- | --- | --- | --- | --- | --- | --- | --- | --- | --- |
| 28 | 1.1.1.2 | **Task Review** |  | 3.43d | 2021-01-20 | 2021-01-25 | 27 | 0d |  |  | 24h |
| 29 | 1.1.1.2.1 | Testing and Code Review |  | 1.14d | 2021-01-20 | 2021-01-21 |  | 0d |  | Tauseef | 8h |
| 30 | 1.1.1.2.2 | Suggested changes and bug fixes |  | 2.29d | 2021-01-21 | 2021-01-25 | 29 | 0d |  | Shoaib | 16h |
| 31 | 1.1.2 | **Support Multi Tabbing** |  | 33.71d | 2021-01-25 | 2021-03-05 | 3 | 0d |  |  | 296h |
| 32 | 1.1.2.1 | **Development** |  | 29.14d | 2021-01-25 | 2021-03-01 |  | 0d |  |  | 264h |
| 33 | 1.1.2.1.1 | Timesheet-[Maintain, update and clear on page unload] |  | 2.57d | 2021-01-25 | 2021-01-27 |  | 0d |  | Shoaib | 18h |
| 34 | 1.1.2.1.2 | Expense report |  | 2.57d | 2021-01-27 | 2021-01-29 | 33 | 0d |  | Shoaib | 18h |
| 35 | 1.1.2.1.3 | Approval |  | 2.57d | 2021-01-29 | 2021-02-02 | 34 | 0d |  | Shoaib | 18h |
| 36 | 1.1.2.1.4 | PM/RM |  | 1.43d | 2021-02-03 | 2021-02-04 | 35 | 0d |  | Shoaib | 10h |
| 37 | 1.1.2.1.5 | **Media** |  | 10.29d | 2021-02-04 | 2021-02-17 |  | 0d |  |  | 72h |
| 38 | 1.1.2.1.5.1 | Campaign |  | 2.57d | 2021-02-04 | 2021-02-08 | 36 | 0d |  | Shoaib | 18h |
| 39 | 1.1.2.1.5.2 | Buying |  | 2.57d | 2021-02-08 | 2021-02-10 | 38 | 0d |  | Shoaib | 18h |
| 40 | 1.1.2.1.5.3 | MPM |  | 2.57d | 2021-02-10 | 2021-02-12 | 39 | 0d |  | Shoaib | 18h |
| 41 | 1.1.2.1.5.4 | Delivery Override |  | 2.57d | 2021-02-15 | 2021-02-17 | 40 | 0d |  | Shoaib | 18h |
| 42 | 1.1.2.1.6 | Billing [6+ Screens] |  | 7.14d | 2021-02-17 | 2021-02-25 | 37 | 0d |  | Shoaib | 50h |
| 43 | 1.1.2.1.7 | Media Reconciliation | manual | 2.57d | 2021-02-25 | 2021-03-01 | 42 |  |  | Shoaib | 18h |
| 44 | 1.1.2.1.8 | Data Entry |  | 8.57d | 2021-01-27 | 2021-02-05 | 33 | 18d |  | Farooq | 60h |
| 45 | 1.1.2.2 | **Code Review and Bug Fixing** |  | 4.57d | 2021-03-01 | 2021-03-05 |  | 0d |  |  | 32h |
| 46 | 1.1.2.2.1 | Code Review |  | 2.29d | 2021-03-01 | 2021-03-03 | 32 | 0d |  | Tauseef | 16h |
| 47 | 1.1.2.2.2 | Bug Fixing |  | 2.29d | 2021-03-03 | 2021-03-05 | 46 | 0d |  | Shoaib | 16h |
| 48 | 1.1.3 | **Enhancement in DCM errors and style coming from DCM** |  | 6.29d | 2021-01-05 | 2021-01-12 |  | 5.14d |  |  | 44h |
| 49 | 1.1.3.1 | dotNet |  | 5.71d | 2021-01-05 | 2021-01-11 |  | 5.14d | 0d | Imran Q | 40h |
| 50 | 1.1.3.2 | DB |  | 0.57d | 2021-01-12 | 2021-01-12 | 49 | 5.14d | 0d | Arif K | 4h |
| 51 | 1.1.4 | Optimize Individual Placement Save |  | 4.29d | 2021-01-12 | 2021-01-18 | 50 | 5.14d | 0d | Imran Q | 30h |
| 52 | 1.1.5 | Display prompt if user enters delivery at package level when Rule is set to override at placement level |  | 0.57d | 2021-01-18 | 2021-01-18 | 51 | 5.14d | 0d | Imran Q | 4h |

| ID | WBS | Task | Type | Duration | Start | Finish | Predecessors | Complete | Remaining | Total slack | Free slack | Resources | Work | Comments |
| --- | --- | --- | --- | --- | --- | --- | --- | --- | --- | --- | --- | --- | --- | --- |
| 53 | 1.1.6 | **Google Ads for budget order and delivery** |  | 31.43d | 2021-01-18 | 2021-02-25 | 52 |  |  | 5.14d |  |  | 220h |  |
| 54 | 1.1.6.1 | R&D |  | 3.43d | 2021-01-18 | 2021-01-21 |  |  |  | 5.14d | 0d | Imran Q | 24h |  |
| 55 | 1.1.6.2 | **IPC Changes** |  | 21.71d | 2021-01-21 | 2021-02-17 | 54 |  |  | 5.14d | 0d |  | 152h |  |
| 56 | 1.1.6.2.1 | Adwards Accounts |  | 2.29d | 2021-01-21 | 2021-01-25 |  |  |  | 5.14d | 0d | Imran Q | 16h |  |
| 57 | 1.1.6.2.2 | Billing Accounts |  | 2.29d | 2021-01-25 | 2021-01-27 | 56 |  |  | 5.14d | 0d | Imran Q | 16h |  |
| 58 | 1.1.6.2.3 | Secondary Billing ID |  | 2.29d | 2021-01-27 | 2021-01-29 | 57 |  |  | 5.14d | 0d | Imran Q | 16h |  |
| 59 | 1.1.6.2.4 | Campaings information |  | 2.29d | 2021-01-29 | 2021-02-02 | 58 |  |  | 5.14d | 0d | Imran Q | 16h |  |
| 60 | 1.1.6.2.5 | Delivery Reports |  | 4.57d | 2021-02-02 | 2021-02-08 | 59 |  |  | 5.14d | 0d | Imran Q | 32h |  |
| 61 | 1.1.6.2.6 | Budget Order Pull |  | 2.29d | 2021-02-08 | 2021-02-10 | 60 |  |  | 5.14d | 0d | Imran Q | 16h |  |
| 62 | 1.1.6.2.7 | Budget Order Creation |  | 5.71d | 2021-02-10 | 2021-02-17 | 61 |  |  | 5.14d |  | Imran Q | 40h |  |
| 63 | 1.1.6.3 | Unit Testing |  | 3.43d | 2021-02-17 | 2021-02-22 | 55 |  |  | 5.14d | 0d | Imran Q | 24h |  |
| 64 | 1.1.6.4 | DB Changes |  | 2.86d | 2021-02-22 | 2021-02-25 | 63 |  |  | 5.14d | 0d | Farhan | 20h |  |
| 65 | 1.1.7 | External File storage (AWS and MS One Drive (Testing only)) |  | 5.14d | 2021-02-25 | 2021-03-03 | 64 |  |  | 5.14d | 0d | Imran Q | 36h |  |
| 66 | 1.1.8 | **Conversion of eConnect application to .Net** |  | 8.57d | 2021-01-05 A | 2021-01-14 |  |  | 8.57d | 74.86d |  |  | 60h |  |
| 67 | 1.1.8.1 | Initial Conversion | milestone | 0d | 2021-01-05 A | 2021-01-05 A |  | 100% |  |  |  | Arshad S |  |  |
| 68 | 1.1.8.2 | Integrate with Nexelus |  | 8.57d | 2021-01-05 | 2021-01-14 |  |  |  | 74.86d |  | Farooq | 60h |  |
| 69 | 1.1.9 | Invoice Printing: save each PDF individually locally through the browser after they are generated |  | 1.14d | 2021-01-05 | 2021-01-05 |  |  |  | 82.29d |  | Shoaib | 8h |  |
| 70 | 1.1.10 | Translation on chrome for nexelus, system should not show this option |  | 0.57d | 2021-01-05 | 2021-01-05 |  |  |  | 82.86d |  | Shoaib | 4h |  |
| 71 | 1.1.11 | **Wild card search for Media Plan on Prebill** |  | 1.14d? | 2021-01-05 | 2021-01-05 |  |  |  | 82.29d |  |  | 12h | Need Discussion |
| 72 | 1.1.11.1 | Web |  | 0.57d? | 2021-01-05 | 2021-01-05 |  |  |  | 82.86d |  | Shoaib | 4h |  |
| 73 | 1.1.11.2 | DB |  | 1.14d? | 2021-01-05 | 2021-01-05 |  |  |  | 82.29d |  | Farhan | 8h |  |
| 74 | 1.1.12 | **Wild card search for Media Plan on Delivery Override** |  | 1.14d? | 2021-01-05 | 2021-01-05 |  |  |  | 82.29d |  |  | 12h | Need Discussion |
| 75 | 1.1.12.1 | Web |  | 0.57d? | 2021-01-05 | 2021-01-05 |  |  |  | 82.86d |  | Shoaib | 4h |  |
| 76 | 1.1.12.2 | DB |  | 1.14d? | 2021-01-05 | 2021-01-05 |  |  |  | 82.29d |  | Farhan | 8h |  |
| 77 | 1.1.13 | Integration with DOCU SIGN |  | 1.14d | 2021-01-05 | 2021-01-05 |  |  |  | 82.29d |  |  |  | Further details required |
| 78 | 1.1.14 | Transfer functionality for inter-company on owner side. |  | 1.14d | 2021-01-05 | 2021-01-05 |  |  |  | 82.29d |  |  |  | Further details required |
| 79 | 1.1.15 | Possibility of filtering IO's based on month of serviceOrdisplay IO dates at IO header level. |  | 1.14d | 2021-01-05 | 2021-01-05 |  |  |  | 82.29d |  |  |  | Further details required |

| ID | WBS | Task | Type | Duration | Start | Finish | Total slack | Constraint | Resources | Work | Comments |
| --- | --- | --- | --- | --- | --- | --- | --- | --- | --- | --- | --- |
| 80 | 1.1.16 | **'Media Paid By Client' at Campaign Level - Implement Following** |  | 1.14d? | 2021-01-05 | 2021-01-05 | 82.29d |  |  |  | Further details required |
| 81 | 1.1.16.1 | Undo ‘Media paid by vendor’ if a vendor is set at client profile level |  | 1.14d? | 2021-01-05 | 2021-01-05 | 82.29d |  |  |  |  |
| 82 | 1.1.16.2 | Mark a vendor as Paid by client on Media plan level. It always defaults from client profile |  | 1.14d | 2021-01-05 | 2021-01-05 | 82.29d |  |  |  |  |
| 83 | 1.1.17 | Delivery Override Search - Date From and To Check is not working properly |  | 0.29d? | 2021-01-05 | 2021-01-05 | 83.14d |  | Shoaib | 2h |  |
| 84 | 1.1.18 | Display full client name on Campaign and Media plan search screens. We do have space so we should expand the name. Also show tooltip if it exceeds the new increased length. |  | 0.57d? | 2021-01-05 | 2021-01-05 | 82.86d |  | Shoaib | 4h |  |
| 85 | 1.2 | **Build 2** |  | 21.14d? | 2021-01-05 | 2021-01-29 | 0d |  |  | 920h |  |
| 86 | 1.2.1 | Prototype |  | 14.29d | 2021-01-13 | 2021-01-29 | 62.29d | start no earlier than 2021-01-13 | Shoaib; Imran Q | 200h |  |
| 87 | 1.2.2 | **Development** |  | 11.43d? | 2021-01-05 | 2021-01-18 | 0d |  | 70 | 720h |  |
| 88 | 1.2.2.1 | **Dashoard** |  | 11.43d | 2021-01-05 | 2021-01-18 | 0d |  |  | 120h |  |
| 89 | 1.2.2.1.1 | Web | manual | 11.43d | 2021-01-05 | 2021-01-18 |  |  | Imran Q | 80h |  |
| 90 | 1.2.2.1.2 | DB | manual | 5.71d | 2021-01-05 | 2021-01-11 |  |  | Farhan | 40h |  |
| 91 | 1.2.2.2 | Filter UI |  | 5.71d? | 2021-01-05 | 2021-01-11 | 77.71d |  | Shoaib | 40h |  |
| 92 | 1.2.2.3 | **Rules Implement on Main UI** |  | 11.43d | 2021-01-05 | 2021-01-18 | 0d |  |  | 164h |  |
| 93 | 1.2.2.3.1 | Rule 1 | manual | 3.43d | 2021-01-05 | 2021-01-07 |  |  | Imran Q | 24h |  |
| 94 | 1.2.2.3.2 | Rule 2 | manual | 8.57d | 2021-01-05 | 2021-01-14 |  |  | Imran Q | 60h |  |
| 95 | 1.2.2.3.3 | Rule 3 | manual | 11.43d | 2021-01-05 | 2021-01-18 |  |  | Imran Q | 80h |  |
| 96 | 1.2.2.4 | **Optimization Wizard** |  | 5.71d? | 2021-01-05 | 2021-01-11 | 0d |  |  | 316h |  |
| 97 | 1.2.2.4.1 | **Media Plan Revision Summary with Ad-tech** |  | 5.71d | 2021-01-05 | 2021-01-11 | 0d |  |  | 56h |  |
| 98 | 1.2.2.4.1.1 | Web | manual | 5.71d | 2021-01-05 | 2021-01-11 |  |  | Imran Q | 40h |  |
| 99 | 1.2.2.4.1.2 | DB | manual | 2.29d | 2021-01-05 | 2021-01-06 |  |  | Farhan | 16h |  |
| 100 | 1.2.2.4.2 | **Generate Schedule** |  | 1.14d? | 2021-01-05 | 2021-01-05 | 0d |  |  | 140h |  |
| 101 | 1.2.2.4.2.1 | Web | manual | 1.14d? | 2021-01-05 | 2021-01-05 |  |  |  | 100h |  |
| 102 | 1.2.2.4.2.2 | DB | manual | 1.14d? | 2021-01-05 | 2021-01-05 |  |  |  | 40h |  |
| 103 | 1.2.2.4.3 | **Approve Media Plans** |  | 1.14d? | 2021-01-05 | 2021-01-05 | 0d |  |  | 60h |  |
| 104 | 1.2.2.4.3.1 | Web | manual | 1.14d? | 2021-01-05 | 2021-01-05 |  |  |  | 40h |  |
| 105 | 1.2.2.4.3.2 | DB | manual | 1.14d? | 2021-01-05 | 2021-01-05 |  |  |  | 20h |  |

| ID | WBS | Task | Type | Duration | Start | Finish | Predecessors | Total slack | Free slack | Resources | Work |
| --- | --- | --- | --- | --- | --- | --- | --- | --- | --- | --- | --- |
| 106 | 1.2.2.4.4 | **Revise Insertion Orders (IO)** |  | 1.14d? | 2021-01-05 | 2021-01-05 |  | 0d |  |  | 60h |
| 107 | 1.2.2.4.4.1 | Web | manual | 1.14d? | 2021-01-05 | 2021-01-05 |  |  |  |  | 40h |
| 108 | 1.2.2.4.4.2 | DB | manual | 1.14d? | 2021-01-05 | 2021-01-05 |  |  |  |  | 20h |
| 109 | 1.2.2.4.5 | Revise Budget Orders | manual | 1.14d? | 2021-01-05 | 2021-01-05 |  |  |  |  |  |
| 110 | 1.3 | **QA - Iteration 1** |  | 52.29d | 2021-01-05 | 2021-03-09 |  | 31.14d |  |  | 246h |
| 111 | 1.3.1 | **Build 1** |  | 52.29d | 2021-01-05 | 2021-03-09 |  | 31.14d |  |  | 246h |
| 112 | 1.3.1.1 | **Import / Export without MS Excel** |  | 3.29d | 2021-01-25 | 2021-01-28 | 3 | 21d | 0d |  | 40h |
| 113 | 1.3.1.1.1 | **RM/PM.** |  | 2.43d | 2021-01-25 | 2021-01-27 |  | 21.86d |  | Bilal R | 16h |
| 114 | 1.3.1.1.1.1 | Employee Schedule > Import |  | 0.29d | 2021-01-25 | 2021-01-25 |  | 21.86d | 0d |  |  |
| 115 | 1.3.1.1.1.2 | Employee Schedule > Export. |  | 0.29d | 2021-01-25 | 2021-01-25 | 114 | 21.86d | 0d |  | 2h |
| 116 | 1.3.1.1.1.3 | Task Management > Export |  | 0.29d | 2021-01-25 | 2021-01-25 | 115 | 21.86d | 0d |  | 2h |
| 117 | 1.3.1.1.1.4 | Calendar > Task List > Export |  | 0.43d | 2021-01-26 | 2021-01-26 | 116 | 21.86d | 0d |  | 3h |
| 118 | 1.3.1.1.1.5 | Custom Upload. |  | 0.29d | 2021-01-26 | 2021-01-26 | 117 | 21.86d | 0d |  | 2h |
| 119 | 1.3.1.1.1.6 | Custom Export |  | 0.29d | 2021-01-26 | 2021-01-26 | 118 | 21.86d | 0d |  | 2h |
| 120 | 1.3.1.1.1.7 | Reports > Template based reports. |  | 0.29d | 2021-01-26 | 2021-01-27 | 119 | 21.86d | 0d |  | 2h |
| 121 | 1.3.1.1.1.8 | Client Profile > Import Clients. |  | 0.29d | 2021-01-27 | 2021-01-27 | 120 | 21.86d |  |  | 3h |
| 122 | 1.3.1.1.2 | **Level2 Inquiry** |  | 1d | 2021-01-25 | 2021-01-26 |  | 21d | 0d | Bilal R | 7h |
| 123 | 1.3.1.1.2.1 | Status report. |  | 0.43d | 2021-01-25 | 2021-01-25 |  | 21d | 0d |  | 3h |
| 124 | 1.3.1.1.2.2 | Transaction export. |  | 0.57d | 2021-01-25 | 2021-01-26 | 123 | 21d |  |  | 4h |
| 125 | 1.3.1.1.3 | **Setup** |  | 0.57d | 2021-01-26 | 2021-01-26 | 122 | 21d | 0d | Bilal R | 4h |
| 126 | 1.3.1.1.3.1 | Creative Export |  | 0.14d | 2021-01-26 | 2021-01-26 |  | 21d | 0d |  | 1h |
| 127 | 1.3.1.1.3.2 | Account Maps Import/Export. |  | 0.43d | 2021-01-26 | 2021-01-26 | 126 | 21d |  |  | 3h |
| 128 | 1.3.1.1.4 | **Media RFP** |  | 0d | 2021-01-26 | 2021-01-26 | 125 | 21d | 0d | Bilal R |  |
| 129 | 1.3.1.1.4.1 | Placement Import | milestone | 0d | 2021-01-26 | 2021-01-26 |  | 21d | 0d |  |  |
| 130 | 1.3.1.1.4.2 | Placement Export | milestone | 0d | 2021-01-26 | 2021-01-26 | 129 | 21d |  |  |  |

| ID | WBS | Task | Type | Duration | Start | Finish | Predecessors | Total slack | Free slack | Resources | Work |
| --- | --- | --- | --- | --- | --- | --- | --- | --- | --- | --- | --- |
| 131 | 1.3.1.1.5 | **Delivery Override** |  | 1.71d | 2021-01-26 | 2021-01-28 |  | 21d |  | Bilal R | 13h |
| 132 | 1.3.1.1.5.1 | Delivery override Import |  | 0.57d | 2021-01-26 | 2021-01-27 | 128 | 21d | 0d |  | 4h |
| 133 | 1.3.1.1.5.2 | Delivery override Export |  | 0.29d | 2021-01-27 | 2021-01-27 | 132 | 21d | 0d |  | 2h |
| 134 | 1.3.1.1.5.3 | Delivery override Import by Placement |  | 0.57d | 2021-01-27 | 2021-01-27 | 133 | 21d | 0d |  | 4h |
| 135 | 1.3.1.1.5.4 | Delivery override Export by Placement |  | 0.29d | 2021-01-27 | 2021-01-28 | 134 | 21d |  |  | 2h |
| 136 | 1.3.1.2 | **Support Multi Tabbing** |  | 8.43d | 2021-01-28 | 2021-02-08 | 112 | 21d | 0d | Bilal R | 122h |
| 137 | 1.3.1.2.1 | Timesheet-[Maintain, update and clear on page unload] |  | 0.86d | 2021-01-28 | 2021-01-28 |  | 21d | 0d |  | 6h |
| 138 | 1.3.1.2.2 | Expense report |  | 0.57d | 2021-01-28 | 2021-01-29 | 137 | 21d | 0d |  | 6h |
| 139 | 1.3.1.2.3 | Approval |  | 1.43d | 2021-01-29 | 2021-02-01 | 138 | 21d | 0d |  | 10h |
| 140 | 1.3.1.2.4 | PM/RM |  | 0.71d | 2021-02-01 | 2021-02-02 | 139 | 21d | 0d |  | 5h |
| 141 | 1.3.1.2.5 | **Media** |  | 3.14d | 2021-02-02 | 2021-02-04 | 140 | 21d | 0d |  | 24h |
| 142 | 1.3.1.2.5.1 | Campaign |  | 0.86d | 2021-02-02 | 2021-02-02 |  | 21d | 0d |  | 6h |
| 143 | 1.3.1.2.5.2 | Buying |  | 0.86d | 2021-02-03 | 2021-02-03 | 142 | 21d | 0d |  | 10h |
| 144 | 1.3.1.2.5.3 | MPM |  | 0.57d | 2021-02-03 | 2021-02-04 | 143 | 21d | 0d |  | 4h |
| 145 | 1.3.1.2.5.4 | Delivery Override |  | 0.86d | 2021-02-04 | 2021-02-04 | 144 | 21d |  |  | 4h |
| 146 | 1.3.1.2.6 | Billing [6+ Screens] |  | 1.71d | 2021-02-05 | 2021-02-08 | 141 | 21d |  | Bilal R | 12h |
| 147 | 1.3.1.2.7 | Media Reconciliation | milestone | 0d | 2021-01-28 | 2021-01-28 |  | 29.43d |  | Bilal R |  |
| 148 | 1.3.1.3 | Enhancement in DCM errors and style coming from DCM |  | 3.86d | 2021-02-08 | 2021-02-11 | 136 | 21d | 0d | Bilal R | 20h |
| 149 | 1.3.1.4 | Optimize Individual Placement Save |  | 1.43d | 2021-01-18 | 2021-01-19 | 51 | 42d | 36.86d | Asif A | 10h |
| 150 | 1.3.1.5 | Display prompt if user enters delivery at package level when Rule is set to override at placement level |  | 0.29d | 2021-01-18 | 2021-01-18 | 52 | 43.29d | 38.14d | Asif A | 2h |
| 151 | 1.3.1.6 | Google Ads for budget order and delivery |  | 0.57d | 2021-02-11 | 2021-02-12 | 148 | 22.43d | 0d | Bilal R | 4h |
| 152 | 1.3.1.7 | External File storage (AWS and MS One Drive (Testing only)) |  | 4.57d | 2021-03-03 | 2021-03-09 | 65 | 6.86d |  | Asif A | 32h |
| 153 | 1.3.1.8 | Conversion of eConnect application to .Net |  | 2.29d | 2021-02-12 | 2021-02-16 | 151 | 23d | 0d | Bilal R | 16h |
| 154 | 1.3.1.9 | Integration with DOCU SIGN |  | 1.14d | 2021-01-05 | 2021-01-05 |  | 82.29d |  |  |  |
| 155 | 1.3.1.10 | Transfer functionality for inter-company on owner side. |  | 1.14d | 2021-01-05 | 2021-01-05 |  | 82.29d |  |  |  |
| 156 | 1.3.1.11 | Possibility of filtering IO's based on month of serviceOrdisplay IO dates at IO header level. |  | 1.14d | 2021-01-05 | 2021-01-05 |  | 82.29d |  |  |  |
| 157 | 1.3.1.12 | 'Media Paid By Client' at Campaign Level - Implement Following |  | 1.14d | 2021-01-05 | 2021-01-05 |  | 82.29d |  |  |  |
| 158 | 1.3.1.13 | Delivery Override Search - Date From and To Check is not working properly |  | 1.14d | 2021-01-05 | 2021-01-05 |  | 82.29d |  |  |  |
| 159 | 1.3.1.14 | Display full client name on Campaign and Media plan search screens. We do have space so we should expand the name. Also show tooltip if it exceeds the new increased length. |  | 1.14d | 2021-01-05 | 2021-01-05 |  | 82.29d |  |  |  |
| 160 | 1.3.1.15 | Wild card search for Media Plan on Prebill |  | 1.14d | 2021-01-05 | 2021-01-05 |  | 82.29d |  |  |  |
| 161 | 1.3.1.16 | Wild card search for Media Plan on Delivery Override |  | 1.14d | 2021-01-05 | 2021-01-05 |  | 82.29d |  |  |  |

| ID | WBS | Task | Duration | Start | Finish | Predecessors | Total slack | Free slack | Resources | Work |
| --- | --- | --- | --- | --- | --- | --- | --- | --- | --- | --- |
| 162 | 1.4 | **Build 2** | 1.14d | 2021-01-05 | 2021-01-05 |  | 0d |  |  |  |
| 163 | 1.4.1 | Dashoard | 1d | 2021-01-05 | 2021-01-05 |  | 82.43d |  |  |  |
| 164 | 1.4.2 | Rules Implement on Main UI | 1.14d | 2021-01-05 | 2021-01-05 |  | 82.29d |  |  |  |
| 165 | 1.4.3 | **Optimization Wizard** | 1.14d | 2021-01-05 | 2021-01-05 |  | 0d |  |  |  |
| 166 | 1.4.3.1 | Media Plan Revision Summary with Ad-tech | 1d | 2021-01-05 | 2021-01-05 |  | 82.43d |  |  |  |
| 167 | 1.4.3.2 | Generate Schedule | 1.14d | 2021-01-05 | 2021-01-05 |  | 82.29d |  |  |  |
| 168 | 1.4.3.3 | Approve Media Plans | 1.14d | 2021-01-05 | 2021-01-05 |  | 82.29d |  |  |  |
| 169 | 1.4.3.4 | Revise Insertion Orders (IO) | 1.14d | 2021-01-05 | 2021-01-05 |  | 82.29d |  |  |  |
| 170 | 1.4.3.5 | Revise Budget Orders | 1.14d | 2021-01-05 | 2021-01-05 |  | 0d |  |  |  |
| 172 | 1.5 | **Bug Fixing - Iteration 1** | 25.86d | 2021-02-16 | 2021-03-18 |  | 0d |  |  | 148h |
| 173 | 1.5.1 | Import / Export without MS Excel | 3.43d | 2021-03-05 | 2021-03-10 | 112, 31 | 0d |  | Shoaib | 24h |
| 174 | 1.5.2 | Support Multi Tabbing | 5.71d | 2021-03-10 | 2021-03-17 | 136, 173 | 0d |  | Shoaib | 40h |
| 175 | 1.5.3 | Enhancement in DCM errors and style coming from DCM | 1.14d | 2021-03-03 | 2021-03-04 | 148, 65 | 5.14d | 0d | Imran Q | 8h |
| 176 | 1.5.4 | Optimize Individual Placement Save | 0.71d | 2021-03-04 | 2021-03-05 | 149, 175 | 5.14d | 0d | Imran Q | 5h |
| 177 | 1.5.5 | Display prompt if user enters delivery at package level when Rule is set to override at placement level | 0.14d | 2021-03-05 | 2021-03-05 | 150, 176 | 5.14d | 0d | Imran Q | 1h |
| 178 | 1.5.6 | Google Ads for budget order and delivery | 5.71d | 2021-03-05 | 2021-03-12 | 151, 177 | 5.14d |  | Imran Q | 40h |
| 179 | 1.5.7 | External File storage (AWS and MS One Drive (Testing only)) | 1.43d | 2021-03-17 | 2021-03-18 | 152, 174 | 0d |  | Shoaib | 10h |
| 180 | 1.5.8 | Conversion of eConnect application to .Net | 2.86d | 2021-02-16 | 2021-02-18 | 153 | 23d |  | Farooq | 20h |
| 181 | 1.6 | Bug Verification and Second QA Iteration | 11.43d | 2021-03-19 | 2021-04-01 | 172 | 0d |  | Bilal R | 80h |
| 182 | 1.7 | Bug Fixing - Iteration 2 | 5.71d | 2021-04-02 | 2021-04-08 | 181 | 0d |  | Shoaib; Arif K; Farhan; Imran Q | 160h |
| 183 | 1.8 | Deployment and Verification on Release Environment | 5.71d | 2021-04-09 | 2021-04-15 | 182 | 0d |  | Asif A; Bilal R | 80h |
