# Nexelus 12.8 R1_2

Schedule from MS Project, 2021-01-05 to 2021-04-15, 7 hours a day, A marks actual dates.

## Calendars

- Standard: Mon-Fri 08:00-12:00, 13:00-17:00; Sat-Sun off.

## Resources

| Resource |
| --- |
| Shoaib |
| Tauseef |
| Imran Q |
| Arshad S |
| Arif K |
| Bilal R |
| Farhan |
| Asif A |
| Farooq |
| 70 |

## Schedule

| ID | WBS | Task | Type | Duration | Start | Finish | Predecessors | Complete | Remaining | Total slack | Free slack | Resources | Work | Actual work |
| --- | --- | --- | --- | --- | --- | --- | --- | --- | --- | --- | --- | --- | --- | --- |
| 1 | 1 | **Nexelus 12.8** |  | 83.43d? | 2021-01-05 A | 2021-04-15 |  | 14% | 71.6d? | 0d |  |  | 2952h | 447h |
| 2 | 1.1 | **Build 1** |  | 50d? | 2021-01-05 A | 2021-03-05 |  | 25% | 37.75d? | 33.43d |  |  | 888h | 222h |
| 3 | 1.1.1 | **Import / Export without MS Excel** |  | 15.71d | 2021-01-05 A | 2021-01-22 |  | 82% | 2.86d | 0.57d | 0d |  | 114h | 90h |
| 4 | 1.1.1.1 | **Development** |  | 12.86d | 2021-01-05 A | 2021-01-20 A |  | 100% |  |  |  |  | 90h | 90h |
| 5 | 1.1.1.1.1 | **RM/PM.** |  | 4.29d | 2021-01-05 A | 2021-01-08 A |  | 100% |  |  |  |  | 30h | 30h |
| 6 | 1.1.1.1.1.1 | Employee Schedule > Import | milestone | 0d | 2021-01-05 A | 2021-01-05 A |  | 100% |  |  |  | Shoaib |  |  |
| 7 | 1.1.1.1.1.2 | Employee Schedule > Export. | milestone | 0d | 2021-01-05 A | 2021-01-05 A | 6 | 100% |  |  |  | Shoaib |  |  |
| 8 | 1.1.1.1.1.3 | Task Management > Export |  | 1.71d | 2021-01-05 A | 2021-01-06 A | 7 | 100% |  |  |  | Shoaib | 12h | 12h |
| 9 | 1.1.1.1.1.4 | Calendar > Task List > Export |  | 0.86d | 2021-01-06 A | 2021-01-07 A | 8 | 100% |  |  |  | Shoaib | 6h | 6h |
| 10 | 1.1.1.1.1.5 | Custom Upload. | milestone | 0d | 2021-01-07 A | 2021-01-07 A | 9 | 100% |  |  |  | Shoaib |  |  |
| 11 | 1.1.1.1.1.6 | Custom Export | milestone | 0d | 2021-01-07 A | 2021-01-07 A | 10 | 100% |  |  |  | Shoaib |  |  |
| 12 | 1.1.1.1.1.7 | Reports > Template based reports. |  | 0.86d | 2021-01-07 A | 2021-01-07 A | 11 | 100% |  |  |  | Shoaib | 6h | 6h |
| 13 | 1.1.1.1.1.8 | Client Profile > Import Clients. |  | 0.86d | 2021-01-08 A | 2021-01-08 A | 12 | 100% |  |  |  | Shoaib | 6h | 6h |
| 14 | 1.1.1.1.2 | **Level2 Inquiry** |  | 0d | 2021-01-08 A | 2021-01-08 A | 5 | 100% |  |  |  |  |  |  |
| 15 | 1.1.1.1.2.1 | Status report. | milestone | 0d | 2021-01-08 A | 2021-01-08 A |  | 100% |  |  |  | Shoaib |  |  |
| 16 | 1.1.1.1.2.2 | Transaction export. | milestone | 0d | 2021-01-08 A | 2021-01-08 A | 15 | 100% |  |  |  | Shoaib |  |  |
| 17 | 1.1.1.1.3 | **Setup** |  | 0d | 2021-01-08 A | 2021-01-08 A | 14 | 100% |  |  |  |  |  |  |
| 18 | 1.1.1.1.3.1 | Creative Export | milestone | 0d | 2021-01-08 A | 2021-01-08 A |  | 100% |  |  |  | Shoaib |  |  |
| 19 | 1.1.1.1.3.2 | Account Maps Import/Export. | milestone | 0d | 2021-01-08 A | 2021-01-08 A | 18 | 100% |  |  |  | Shoaib |  |  |
| 20 | 1.1.1.1.4 | **Media RFP** |  | 4d | 2021-01-08 A | 2021-01-14 A |  | 100% |  |  |  |  | 28h | 28h |
| 21 | 1.1.1.1.4.1 | Placement Import |  | 1.71d | 2021-01-08 A | 2021-01-12 A | 19 | 100% |  |  |  | Shoaib | 12h | 12h |
| 22 | 1.1.1.1.4.2 | Placement Export |  | 2.29d | 2021-01-12 A | 2021-01-14 A | 21 | 100% |  |  |  | Shoaib | 16h | 16h |
| 23 | 1.1.1.1.5 | **Delivery Override** |  | 4.57d | 2021-01-14 A | 2021-01-20 A |  | 100% |  |  |  |  | 32h | 32h |
| 24 | 1.1.1.1.5.1 | Delivery override Import |  | 1.14d | 2021-01-14 A | 2021-01-15 A | 22 | 100% |  |  |  | Shoaib | 8h | 8h |
| 25 | 1.1.1.1.5.2 | Delivery override Export |  | 1.14d | 2021-01-15 A | 2021-01-18 A | 24 | 100% |  |  |  | Shoaib | 8h | 8h |
| 26 | 1.1.1.1.5.3 | Delivery override Import by Placement |  | 1.14d | 2021-01-18 A | 2021-01-19 A | 25 | 100% |  |  |  | Shoaib | 8h | 8h |
| 27 | 1.1.1.1.5.4 | Delivery override Export by Placement |  | 1.14d | 2021-01-19 A | 2021-01-20 A | 26 | 100% |  |  |  | Shoaib | 8h | 8h |

| ID | WBS | Task | Type | Duration | Start | Finish | Predecessors | Total slack | Free slack | Resources | Work | Comments |
| --- | --- | --- | --- | --- | --- | --- | --- | --- | --- | --- | --- | --- |
| 28 | 1.1.1.2 | **Task Review** |  | 2.86d | 2021-01-20 | 2021-01-22 | 27 | 0.57d |  |  | 24h |  |
| 29 | 1.1.1.2.1 | Testing and Code Review |  | 0.57d | 2021-01-20 | 2021-01-20 |  | 0.57d | 0d | Tauseef; Imran Q | 8h |  |
| 30 | 1.1.1.2.2 | Suggested changes and bug fixes |  | 2.29d | 2021-01-20 | 2021-01-22 | 29 | 0.57d |  | Shoaib | 16h |  |
| 31 | 1.1.2 | **Support Multi Tabbing** |  | 34.29d | 2021-01-22 | 2021-03-05 | 3 | 0d |  |  | 296h |  |
| 32 | 1.1.2.1 | **Development** |  | 29.71d | 2021-01-22 | 2021-03-01 |  | 0d |  |  | 264h |  |
| 33 | 1.1.2.1.1 | **Media** |  | 10.29d | 2021-02-03 | 2021-02-16 |  | 0.57d | 0d |  | 72h |  |
| 34 | 1.1.2.1.1.1 | Campaign |  | 2.57d | 2021-02-03 | 2021-02-05 | 42 | 0.57d | 0d | Farooq | 18h |  |
| 35 | 1.1.2.1.1.2 | Buying |  | 2.57d | 2021-02-08 | 2021-02-10 | 34 | 0.57d | 0d | Farooq | 18h |  |
| 36 | 1.1.2.1.1.3 | MPM |  | 2.57d | 2021-02-10 | 2021-02-12 | 35 | 0.57d | 0d | Farooq | 18h |  |
| 37 | 1.1.2.1.1.4 | Delivery Override |  | 2.57d | 2021-02-12 | 2021-02-16 | 36 | 0.57d |  | Farooq | 18h |  |
| 38 | 1.1.2.1.2 | **Time and Expense** |  | 7.71d | 2021-01-22 | 2021-02-02 |  | 0.57d |  |  | 54h |  |
| 39 | 1.1.2.1.2.1 | Timesheet-[Maintain, update and clear on page unload] |  | 2.57d | 2021-01-22 | 2021-01-26 |  | 0.57d | 0d | Farooq | 18h |  |
| 40 | 1.1.2.1.2.2 | Expense report |  | 2.57d | 2021-01-27 | 2021-01-29 | 39 | 0.57d | 0d | Farooq | 18h |  |
| 41 | 1.1.2.1.2.3 | Approval |  | 2.57d | 2021-01-29 | 2021-02-02 | 40 | 0.57d | 0d | Farooq | 18h |  |
| 42 | 1.1.2.1.3 | PM/RM |  | 1.43d | 2021-02-02 | 2021-02-03 | 41 | 0.57d | 0d | Farooq | 10h |  |
| 43 | 1.1.2.1.4 | Billing [6+ Screens] |  | 7.14d | 2021-02-16 | 2021-02-24 | 33 | 0.57d |  | Farooq | 50h |  |
| 44 | 1.1.2.1.5 | Media Reconciliation | manual | 2.57d | 2021-02-25 | 2021-03-01 | 43 |  |  | Farooq | 18h |  |
| 45 | 1.1.2.1.6 | Data Entry |  | 8.57d | 2021-01-27 | 2021-02-05 | 39 | 18.57d |  | Farooq | 60h |  |
| 46 | 1.1.2.2 | **Code Review and Bug Fixing** |  | 4.57d | 2021-03-01 | 2021-03-05 |  | 0d |  |  | 32h |  |
| 47 | 1.1.2.2.1 | Code Review |  | 2.29d | 2021-03-01 | 2021-03-03 | 32 | 0d |  | Tauseef | 16h |  |
| 48 | 1.1.2.2.2 | Bug Fixing |  | 2.29d | 2021-03-03 | 2021-03-05 | 47 | 0d |  | Shoaib | 16h |  |
| 49 | 1.1.3 | Display prompt if user enters delivery at package level when Rule is set to override at placement level |  | 0.57d | 2021-01-14 | 2021-01-15 | 57 | 42.57d | 0d | Shoaib | 4h | 2/4 |
| 50 | 1.1.4 | Delivery Override Search - Date From and To Check is not working properly |  | 0.29d? | 2021-01-05 | 2021-01-05 |  | 83.14d |  | Shoaib | 2h | 2/4 |
| 51 | 1.1.5 | Display full client name on Campaign and Media plan search screens. We do have space so we should expand the name. Also show tooltip if it exceeds the new increased length. |  | 0.57d? | 2021-01-05 | 2021-01-05 |  | 82.86d |  | Shoaib | 4h | 2/4 |
| 52 | 1.1.6 | Invoice Printing: save each PDF individually locally through the browser after they are generated |  | 1.14d | 2021-01-05 | 2021-01-05 |  | 82.29d |  | Shoaib | 8h |  |

| ID | WBS | Task | Duration | Start | Finish | Predecessors | Complete | Total slack | Free slack | Resources | Work | Actual work | Comments | Task ID |
| --- | --- | --- | --- | --- | --- | --- | --- | --- | --- | --- | --- | --- | --- | --- |
| 53 | 1.1.7 | **Enhancement in DCM errors and style coming from DCM** | 6.29d | 2021-01-05 | 2021-01-12 |  |  | 42.57d |  |  | 44h |  |  |  |
| 54 | 1.1.7.1 | dotNet | 5.71d | 2021-01-05 | 2021-01-11 |  |  | 42.57d | 0d | Shoaib | 40h |  |  |  |
| 55 | 1.1.7.2 | DB | 0.57d | 2021-01-12 | 2021-01-12 | 54 |  | 42.57d | 0d | Arif K | 4h |  |  |  |
| 56 | 1.1.8 | Translation on chrome for nexelus, system should not show this option | 0.57d | 2021-01-05 | 2021-01-05 |  |  | 82.86d |  | Imran Q | 4h |  | 2/4 |  |
| 57 | 1.1.9 | Optimize Individual Placement Save | 2.57d | 2021-01-12 | 2021-01-14 | 55 |  | 42.57d | 0d | Imran Q; Shoaib | 36h |  |  |  |
| 58 | 1.1.10 | **Google Ads for budget order and delivery** | 31.43d | 2021-01-15 | 2021-02-23 | 49 |  | 42.57d |  |  | 220h |  |  | 10 |
| 59 | 1.1.10.1 | R&D | 3.43d | 2021-01-15 | 2021-01-20 |  |  | 42.57d | 0d | Imran Q | 24h |  |  |  |
| 60 | 1.1.10.2 | **IPC Changes** | 21.71d | 2021-01-20 | 2021-02-16 | 59 |  | 42.57d | 0d |  | 152h |  |  |  |
| 61 | 1.1.10.2.1 | Adwards Accounts | 2.29d | 2021-01-20 | 2021-01-22 |  |  | 42.57d | 0d | Imran Q | 16h |  |  |  |
| 62 | 1.1.10.2.2 | Billing Accounts | 2.29d | 2021-01-22 | 2021-01-26 | 61 |  | 42.57d | 0d | Imran Q | 16h |  |  |  |
| 63 | 1.1.10.2.3 | Secondary Billing ID | 2.29d | 2021-01-26 | 2021-01-28 | 62 |  | 42.57d | 0d | Imran Q | 16h |  |  |  |
| 64 | 1.1.10.2.4 | Campaings information | 2.29d | 2021-01-28 | 2021-02-01 | 63 |  | 42.57d | 0d | Imran Q | 16h |  |  |  |
| 65 | 1.1.10.2.5 | Delivery Reports | 4.57d | 2021-02-01 | 2021-02-05 | 64 |  | 42.57d | 0d | Imran Q | 32h |  |  |  |
| 66 | 1.1.10.2.6 | Budget Order Pull | 2.29d | 2021-02-05 | 2021-02-09 | 65 |  | 42.57d | 0d | Imran Q | 16h |  |  |  |
| 67 | 1.1.10.2.7 | Budget Order Creation | 5.71d | 2021-02-09 | 2021-02-16 | 66 |  | 42.57d |  | Imran Q | 40h |  |  |  |
| 68 | 1.1.10.3 | Unit Testing | 3.43d | 2021-02-16 | 2021-02-19 | 60 |  | 42.57d | 0d | Imran Q | 24h |  |  |  |
| 69 | 1.1.10.4 | DB Changes | 2.86d | 2021-02-19 | 2021-02-23 | 68 |  | 42.57d |  | Farhan | 20h |  |  |  |
| 70 | 1.1.11 | External File storage (AWS and MS One Drive (Testing only)) | 5.14d | 2021-02-23 A | 2021-03-02 A | 69 | 100% |  |  | Imran Q | 36h | 36h |  | 11 |
| 71 | 1.1.12 | Integration with DOCU SIGN | 1.14d | 2021-01-05 | 2021-01-05 |  |  | 82.29d |  |  |  |  | Further details required | 12 |
| 72 | 1.1.13 | Transfer functionality for inter-company on owner side. | 1.14d | 2021-01-05 | 2021-01-05 |  |  | 82.29d |  |  |  |  | Further details required | 13 |
| 73 | 1.1.14 | Possibility of filtering IO's based on month of serviceOrdisplay IO dates at IO header level. | 1.14d | 2021-01-05 | 2021-01-05 |  |  | 82.29d |  |  |  |  | Further details required | 14 |
| 74 | 1.1.15 | **'Media Paid By Client' at Campaign Level - Implement Following** | 1.14d? | 2021-01-05 | 2021-01-05 |  |  | 82.29d |  |  |  |  | Further details required | 15 |
| 75 | 1.1.15.1 | Undo ‘Media paid by vendor’ if a vendor is set at client profile level | 1.14d? | 2021-01-05 | 2021-01-05 |  |  | 82.29d |  |  |  |  |  |  |
| 76 | 1.1.15.2 | Mark a vendor as Paid by client on Media plan level. It always defaults from client profile | 1.14d | 2021-01-05 | 2021-01-05 |  |  | 82.29d |  |  |  |  |  |  |

| ID | WBS | Task | Type | Duration | Start | Finish | Complete | Remaining | Total slack | Constraint | Resources | Work | Actual work | Task ID |
| --- | --- | --- | --- | --- | --- | --- | --- | --- | --- | --- | --- | --- | --- | --- |
| 77 | 1.1.16 | **Conversion of eConnect application to .Net** |  | 17.14d | 2021-01-05 A | 2021-01-25 | 80% | 3.43d | 66.29d |  |  | 120h | 96h | 16 |
| 78 | 1.1.16.1 | Initial Conversion | milestone | 0d | 2021-01-05 A | 2021-01-05 A | 100% |  |  |  | Arshad S |  |  |  |
| 79 | 1.1.16.2 | Integrate with Nexelus |  | 17.14d | 2021-01-05 A | 2021-01-25 | 80% | 3.43d | 66.29d |  | Farooq | 120h | 96h |  |
| 80 | 1.2 | **Build 2** |  | 27d? | 2021-01-05 A | 2021-02-05 | 15% | 22.86d? | 56.43d |  |  | 1298h | 225h |  |
| 81 | 1.2.1 | Prototype |  | 17.86d | 2021-01-15 A | 2021-02-05 | 90% | 1.79d | 56.43d | start no earlier than 2021-01-15 | Shoaib; Imran Q | 250h | 225h |  |
| 82 | 1.2.2 | **Development** |  | 11.43d? | 2021-01-05 | 2021-01-18 |  |  | 0d |  | 70 | 1048h |  |  |
| 83 | 1.2.2.1 | **Dashoard** |  | 7.14d | 2021-01-05 | 2021-01-13 |  |  | 76.29d |  |  | 74h |  |  |
| 84 | 1.2.2.1.1 | Web |  | 7.14d | 2021-01-05 | 2021-01-13 |  |  | 76.29d |  | Imran Q | 50h |  |  |
| 85 | 1.2.2.1.2 | DB |  | 3.43d | 2021-01-05 | 2021-01-07 |  |  | 80d |  | Farhan | 24h |  |  |
| 86 | 1.2.2.2 | Rule UI |  | 5.14d? | 2021-01-05 | 2021-01-11 |  |  | 78.29d |  | Shoaib | 36h |  |  |
| 87 | 1.2.2.3 | **Rules Implement on Main UI** |  | 7.14d | 2021-01-05 | 2021-01-13 |  |  | 76.29d |  |  | 106h |  |  |
| 88 | 1.2.2.3.1 | Rule 1 - Distribute in same site |  | 3.43d | 2021-01-05 | 2021-01-07 |  |  | 80d |  | Imran Q | 24h |  |  |
| 89 | 1.2.2.3.2 | Rule 2 - Distribute in same Plan |  | 4.57d | 2021-01-05 | 2021-01-08 |  |  | 78.86d |  | Imran Q | 32h |  |  |
| 90 | 1.2.2.3.3 | Rule 3 - Distribute to other plans |  | 7.14d | 2021-01-05 | 2021-01-13 |  |  | 76.29d |  | Imran Q | 50h |  |  |
| 91 | 1.2.2.4 | **Optimization Wizard** |  | 11.43d? | 2021-01-05 | 2021-01-18 |  |  | 0d |  |  | 752h |  |  |
| 92 | 1.2.2.4.1 | **Media Plan Revision Summary with Ad-tech** |  | 5.71d | 2021-01-05 | 2021-01-11 |  |  | 77.71d |  |  | 104h |  |  |
| 93 | 1.2.2.4.1.1 | Calculate and Display Summary |  | 5.71d | 2021-01-05 | 2021-01-11 |  |  | 77.71d |  | Imran Q | 40h |  |  |
| 94 | 1.2.2.4.1.2 | Create new Media Plan Revision |  | 3.43d | 2021-01-05 | 2021-01-07 |  |  | 80d |  | Farhan | 24h |  |  |
| 95 | 1.2.2.4.1.3 | Create/Update revised placements |  | 5.71d | 2021-01-05 | 2021-01-11 |  |  | 77.71d |  | Farhan | 40h |  |  |
| 96 | 1.2.2.4.2 | **Generate Schedule** |  | 11.43d? | 2021-01-05 | 2021-01-18 |  |  | 72d |  |  | 112h |  |  |
| 97 | 1.2.2.4.2.1 | Web |  | 4.57d? | 2021-01-05 | 2021-01-08 |  |  | 78.86d |  | Imran Q | 32h |  |  |
| 98 | 1.2.2.4.2.2 | DB |  | 11.43d? | 2021-01-05 | 2021-01-18 |  |  | 72d |  | Arif K | 80h |  |  |
| 99 | 1.2.2.4.3 | **Approve Media Plans** |  | 1.14d? | 2021-01-05 | 2021-01-05 |  |  | 82.29d |  |  | 56h |  |  |
| 100 | 1.2.2.4.3.1 | Web |  | 1.14d? | 2021-01-05 | 2021-01-05 |  |  | 82.29d |  |  | 24h |  |  |
| 101 | 1.2.2.4.3.2 | DB |  | 1.14d? | 2021-01-05 | 2021-01-05 |  |  | 82.29d |  |  | 32h |  |  |

| ID | WBS | Task | Type | Duration | Start | Finish | Total slack | Resources | Work |
| --- | --- | --- | --- | --- | --- | --- | --- | --- | --- |
| 102 | 1.2.2.4.4 | **Revise Insertion Orders (IO)** |  | 1.14d? | 2021-01-05 | 2021-01-05 | 82.29d |  | 40h |
| 103 | 1.2.2.4.4.1 | Web |  | 1.14d? | 2021-01-05 | 2021-01-05 | 82.29d |  | 16h |
| 104 | 1.2.2.4.4.2 | DB |  | 1.14d? | 2021-01-05 | 2021-01-05 | 82.29d |  | 24h |
| 105 | 1.2.2.4.5 | **Budget Orders** |  | 2.29d? | 2021-01-05 | 2021-01-06 | 81.14d |  | 80h |
| 106 | 1.2.2.4.5.1 | **Display BO Listing** |  | 2.29d | 2021-01-05 | 2021-01-06 | 81.14d |  | 24h |
| 107 | 1.2.2.4.5.1.1 | DB |  | 2.29d | 2021-01-05 | 2021-01-06 | 81.14d | Farhan | 16h |
| 108 | 1.2.2.4.5.1.2 | Web |  | 1.14d | 2021-01-05 | 2021-01-05 | 82.29d | Imran Q | 8h |
| 109 | 1.2.2.4.5.2 | **Revise Budget Orders** |  | 1.14d? | 2021-01-05 | 2021-01-05 | 82.29d |  | 56h |
| 110 | 1.2.2.4.5.2.1 | Web |  | 1.14d? | 2021-01-05 | 2021-01-05 | 82.29d |  | 24h |
| 111 | 1.2.2.4.5.2.2 | DB |  | 1.14d? | 2021-01-05 | 2021-01-05 | 82.29d |  | 32h |
| 112 | 1.2.2.4.6 | **Facebook Campaign** |  | 1.14d? | 2021-01-05 | 2021-01-05 | 0d |  | 56h |
| 113 | 1.2.2.4.6.1 | Web | manual | 1.14d? | 2021-01-05 | 2021-01-05 |  |  | 24h |
| 114 | 1.2.2.4.6.2 | DB | manual | 1.14d? | 2021-01-05 | 2021-01-05 |  |  | 32h |
| 115 | 1.2.2.4.7 | **Yahoo Campaign** |  | 1.14d? | 2021-01-05 | 2021-01-05 | 0d |  | 56h |
| 116 | 1.2.2.4.7.1 | Web | manual | 1.14d? | 2021-01-05 | 2021-01-05 |  |  | 24h |
| 117 | 1.2.2.4.7.2 | DB | manual | 1.14d? | 2021-01-05 | 2021-01-05 |  |  | 32h |
| 118 | 1.2.2.4.8 | **Microsoft Ads** |  | 1.14d? | 2021-01-05 | 2021-01-05 | 0d |  | 56h |
| 119 | 1.2.2.4.8.1 | Web | manual | 1.14d? | 2021-01-05 | 2021-01-05 |  |  | 24h |
| 120 | 1.2.2.4.8.2 | DB | manual | 1.14d? | 2021-01-05 | 2021-01-05 |  |  | 32h |
| 121 | 1.2.2.4.9 | **TradeDesk Campaign** |  | 1.14d? | 2021-01-05 | 2021-01-05 | 0d |  | 56h |
| 122 | 1.2.2.4.9.1 | Web | manual | 1.14d? | 2021-01-05 | 2021-01-05 |  |  | 24h |
| 123 | 1.2.2.4.9.2 | DB | manual | 1.14d? | 2021-01-05 | 2021-01-05 |  |  | 32h |
| 124 | 1.2.2.4.10 | **DV360 Campaign** |  | 1.14d? | 2021-01-05 | 2021-01-05 | 0d |  | 56h |
| 125 | 1.2.2.4.10.1 | Web | manual | 1.14d? | 2021-01-05 | 2021-01-05 |  |  | 24h |
| 126 | 1.2.2.4.10.2 | DB | manual | 1.14d? | 2021-01-05 | 2021-01-05 |  |  | 32h |

| ID | WBS | Task | Type | Duration | Start | Finish | Predecessors | Total slack | Free slack | Resources | Work |
| --- | --- | --- | --- | --- | --- | --- | --- | --- | --- | --- | --- |
| 127 | 1.2.2.4.11 | **Sync to DCM** |  | 1.14d? | 2021-01-05 | 2021-01-05 |  | 0d |  |  | 56h |
| 128 | 1.2.2.4.11.1 | Web | manual | 1.14d? | 2021-01-05 | 2021-01-05 |  |  |  |  | 24h |
| 129 | 1.2.2.4.11.2 | DB | manual | 1.14d? | 2021-01-05 | 2021-01-05 |  |  |  |  | 32h |
| 130 | 1.2.2.4.12 | Summary Page | manual | 1.14d? | 2021-01-05 | 2021-01-05 |  |  |  |  | 24h |
| 131 | 1.3 | **QA - Iteration 1** |  | 50.57d? | 2021-01-05 | 2021-03-08 |  | 0d |  |  | 298h |
| 132 | 1.3.1 | **Build 1** |  | 50.57d | 2021-01-05 | 2021-03-08 |  | 32.86d |  |  | 242h |
| 133 | 1.3.1.1 | **Import / Export without MS Excel** |  | 3.29d | 2021-01-22 | 2021-01-27 | 3 | 21.57d | 0d |  | 39h |
| 134 | 1.3.1.1.1 | **RM/PM.** |  | 2.43d | 2021-01-22 | 2021-01-26 |  | 22.43d |  | Bilal R | 16h |
| 135 | 1.3.1.1.1.1 | Employee Schedule > Import |  | 0.29d | 2021-01-22 | 2021-01-22 |  | 22.43d | 0d |  |  |
| 136 | 1.3.1.1.1.2 | Employee Schedule > Export. |  | 0.29d | 2021-01-25 | 2021-01-25 | 135 | 22.43d | 0d |  | 2h |
| 137 | 1.3.1.1.1.3 | Task Management > Export |  | 0.29d | 2021-01-25 | 2021-01-25 | 136 | 22.43d | 0d |  | 2h |
| 138 | 1.3.1.1.1.4 | Calendar > Task List > Export |  | 0.43d | 2021-01-25 | 2021-01-25 | 137 | 22.43d | 0d |  | 3h |
| 139 | 1.3.1.1.1.5 | Custom Upload. |  | 0.29d | 2021-01-25 | 2021-01-26 | 138 | 22.43d | 0d |  | 2h |
| 140 | 1.3.1.1.1.6 | Custom Export |  | 0.29d | 2021-01-26 | 2021-01-26 | 139 | 22.43d | 0d |  | 2h |
| 141 | 1.3.1.1.1.7 | Reports > Template based reports. |  | 0.29d | 2021-01-26 | 2021-01-26 | 140 | 22.43d | 0d |  | 2h |
| 142 | 1.3.1.1.1.8 | Client Profile > Import Clients. |  | 0.29d | 2021-01-26 | 2021-01-26 | 141 | 22.43d |  |  | 3h |
| 143 | 1.3.1.1.2 | **Level2 Inquiry** |  | 1d | 2021-01-22 | 2021-01-25 |  | 21.57d | 0d | Bilal R | 7h |
| 144 | 1.3.1.1.2.1 | Status report. |  | 0.43d | 2021-01-22 | 2021-01-25 |  | 21.57d | 0d |  | 3h |
| 145 | 1.3.1.1.2.2 | Transaction export. |  | 0.57d | 2021-01-25 | 2021-01-25 | 144 | 21.57d |  |  | 4h |
| 146 | 1.3.1.1.3 | **Setup** |  | 0.57d | 2021-01-25 | 2021-01-26 | 143 | 21.57d | 0d | Bilal R | 4h |
| 147 | 1.3.1.1.3.1 | Creative Export |  | 0.14d | 2021-01-25 | 2021-01-25 |  | 21.57d | 0d |  | 1h |
| 148 | 1.3.1.1.3.2 | Account Maps Import/Export. |  | 0.43d | 2021-01-25 | 2021-01-26 | 147 | 21.57d |  |  | 3h |
| 149 | 1.3.1.1.4 | **Media RFP** |  | 0d | 2021-01-26 | 2021-01-26 | 146 | 21.57d | 0d | Bilal R |  |
| 150 | 1.3.1.1.4.1 | Placement Import | milestone | 0d | 2021-01-26 | 2021-01-26 |  | 21.57d | 0d |  |  |
| 151 | 1.3.1.1.4.2 | Placement Export | milestone | 0d | 2021-01-26 | 2021-01-26 | 150 | 21.57d |  |  |  |

| ID | WBS | Task | Type | Duration | Start | Finish | Predecessors | Total slack | Free slack | Resources | Work |
| --- | --- | --- | --- | --- | --- | --- | --- | --- | --- | --- | --- |
| 152 | 1.3.1.1.5 | **Delivery Override** |  | 1.71d | 2021-01-26 | 2021-01-27 |  | 21.57d |  | Bilal R | 12h |
| 153 | 1.3.1.1.5.1 | Delivery override Import |  | 0.57d | 2021-01-26 | 2021-01-26 | 149 | 21.57d | 0d |  | 4h |
| 154 | 1.3.1.1.5.2 | Delivery override Export |  | 0.29d | 2021-01-26 | 2021-01-26 | 153 | 21.57d | 0d |  | 2h |
| 155 | 1.3.1.1.5.3 | Delivery override Import by Placement |  | 0.57d | 2021-01-26 | 2021-01-27 | 154 | 21.57d | 0d |  | 4h |
| 156 | 1.3.1.1.5.4 | Delivery override Export by Placement |  | 0.29d | 2021-01-27 | 2021-01-27 | 155 | 21.57d |  |  | 2h |
| 157 | 1.3.1.2 | **Support Multi Tabbing** |  | 8.43d | 2021-01-27 | 2021-02-05 | 133 | 21.57d | 0d | Bilal R | 119h |
| 158 | 1.3.1.2.1 | Timesheet-[Maintain, update and clear on page unload] |  | 0.86d | 2021-01-27 | 2021-01-28 |  | 21.57d | 0d |  | 6h |
| 159 | 1.3.1.2.2 | Expense report |  | 0.57d | 2021-01-28 | 2021-01-28 | 158 | 21.57d | 0d |  | 6h |
| 160 | 1.3.1.2.3 | Approval |  | 1.43d | 2021-01-28 | 2021-02-01 | 159 | 21.57d | 0d |  | 10h |
| 161 | 1.3.1.2.4 | PM/RM |  | 0.71d | 2021-02-01 | 2021-02-01 | 160 | 21.57d | 0d |  | 5h |
| 162 | 1.3.1.2.5 | **Media** |  | 3.14d | 2021-02-01 | 2021-02-04 | 161 | 21.57d | 0d |  | 24h |
| 163 | 1.3.1.2.5.1 | Campaign |  | 0.86d | 2021-02-01 | 2021-02-02 |  | 21.57d | 0d |  | 6h |
| 164 | 1.3.1.2.5.2 | Buying |  | 0.86d | 2021-02-02 | 2021-02-03 | 163 | 21.57d | 0d |  | 10h |
| 165 | 1.3.1.2.5.3 | MPM |  | 0.57d | 2021-02-03 | 2021-02-03 | 164 | 21.57d | 0d |  | 4h |
| 166 | 1.3.1.2.5.4 | Delivery Override |  | 0.86d | 2021-02-03 | 2021-02-04 | 165 | 21.57d |  |  | 4h |
| 167 | 1.3.1.2.6 | Billing [6+ Screens] |  | 1.71d | 2021-02-04 | 2021-02-05 | 162 | 21.57d |  | Bilal R | 12h |
| 168 | 1.3.1.2.7 | Media Reconciliation | milestone | 0d | 2021-01-27 | 2021-01-27 |  | 30d |  | Bilal R |  |
| 169 | 1.3.1.3 | Enhancement in DCM errors and style coming from DCM |  | 3.86d | 2021-02-08 | 2021-02-11 | 157 | 21.57d | 0d | Bilal R | 20h |
| 170 | 1.3.1.4 | Optimize Individual Placement Save |  | 1.43d | 2021-01-14 | 2021-01-15 | 57 | 43.71d | 36.86d | Asif A | 10h |
| 171 | 1.3.1.5 | Display prompt if user enters delivery at package level when Rule is set to override at placement level |  | 0.29d | 2021-01-15 | 2021-01-15 | 49 | 45d | 38.14d | Asif A | 2h |
| 172 | 1.3.1.6 | Google Ads for budget order and delivery |  | 0.57d | 2021-02-11 | 2021-02-11 | 169 | 23d | 0d | Bilal R | 4h |
| 173 | 1.3.1.7 | External File storage (AWS and MS One Drive (Testing only)) |  | 4.57d | 2021-03-02 | 2021-03-08 | 70 | 8.57d |  | Asif A | 32h |
| 174 | 1.3.1.8 | Conversion of eConnect application to .Net |  | 2.29d | 2021-02-11 | 2021-02-15 | 172 | 23.57d | 0d | Bilal R | 16h |
| 175 | 1.3.1.9 | Integration with DOCU SIGN |  | 1.14d | 2021-01-05 | 2021-01-05 |  | 82.29d |  |  |  |
| 176 | 1.3.1.10 | Transfer functionality for inter-company on owner side. |  | 1.14d | 2021-01-05 | 2021-01-05 |  | 82.29d |  |  |  |
| 177 | 1.3.1.11 | Possibility of filtering IO's based on month of serviceOrdisplay IO dates at IO header level. |  | 1.14d | 2021-01-05 | 2021-01-05 |  | 82.29d |  |  |  |
| 178 | 1.3.1.12 | 'Media Paid By Client' at Campaign Level - Implement Following |  | 1.14d | 2021-01-05 | 2021-01-05 |  | 82.29d |  |  |  |
| 179 | 1.3.1.13 | Delivery Override Search - Date From and To Check is not working properly |  | 1.14d | 2021-01-05 | 2021-01-05 |  | 82.29d |  |  |  |
| 180 | 1.3.1.14 | Display full client name on Campaign and Media plan search screens. We do have space so we should expand the name. Also show tooltip if it exceeds the new increased length. |  | 1.14d | 2021-01-05 | 2021-01-05 |  | 82.29d |  |  |  |
| 181 | 1.3.1.15 | Wild card search for Media Plan on Prebill |  | 1.14d | 2021-01-05 | 2021-01-05 |  | 82.29d |  |  |  |
| 182 | 1.3.1.16 | Wild card search for Media Plan on Delivery Override |  | 1.14d | 2021-01-05 | 2021-01-05 |  | 82.29d |  |  |  |

| ID | WBS | Task | Type | Duration | Start | Finish | Total slack | Resources | Work |
| --- | --- | --- | --- | --- | --- | --- | --- | --- | --- |
| 183 | 1.3.2 | **Build 2** |  | 1.14d? | 2021-01-05 | 2021-01-05 | 0d |  | 56h |
| 184 | 1.3.2.1 | Dashoard |  | 1d | 2021-01-05 | 2021-01-05 | 82.43d |  |  |
| 185 | 1.3.2.2 | Rules Implement on Main UI |  | 1.14d | 2021-01-05 | 2021-01-05 | 82.29d |  |  |
| 186 | 1.3.2.3 | **Optimization Wizard** |  | 1.14d? | 2021-01-05 | 2021-01-05 | 0d |  | 56h |
| 187 | 1.3.2.3.1 | Media Plan Revision Summary with Ad-tech |  | 1d | 2021-01-05 | 2021-01-05 | 82.43d |  |  |
| 188 | 1.3.2.3.2 | Generate Schedule |  | 1.14d | 2021-01-05 | 2021-01-05 | 82.29d |  |  |
| 189 | 1.3.2.3.3 | Approve Media Plans |  | 1.14d | 2021-01-05 | 2021-01-05 | 82.29d |  |  |
| 190 | 1.3.2.3.4 | Revise Insertion Orders (IO) |  | 1.14d | 2021-01-05 | 2021-01-05 | 82.29d |  |  |
| 191 | 1.3.2.3.5 | **Budget Orders** |  | 1.14d? | 2021-01-05 | 2021-01-05 | 82.29d |  | 56h |
| 192 | 1.3.2.3.5.1 | **Display BO Listing** |  | 1.14d | 2021-01-05 | 2021-01-05 | 82.29d |  | 16h |
| 193 | 1.3.2.3.5.1.1 | DB |  | 1.14d | 2021-01-05 | 2021-01-05 | 82.29d | Farhan | 8h |
| 194 | 1.3.2.3.5.1.2 | Web |  | 1.14d | 2021-01-05 | 2021-01-05 | 82.29d | Imran Q | 8h |
| 195 | 1.3.2.3.5.2 | **Revise Budget Orders** |  | 1.14d? | 2021-01-05 | 2021-01-05 | 82.29d |  | 40h |
| 196 | 1.3.2.3.5.2.1 | Web |  | 1.14d? | 2021-01-05 | 2021-01-05 | 82.29d |  | 8h |
| 197 | 1.3.2.3.5.2.2 | DB |  | 1.14d? | 2021-01-05 | 2021-01-05 | 82.29d |  | 32h |
| 198 | 1.3.2.3.6 | **Facebook Campaign** |  | 1.14d? | 2021-01-05 | 2021-01-05 | 0d |  |  |
| 199 | 1.3.2.3.6.1 | Web | manual | 1.14d? | 2021-01-05 | 2021-01-05 |  |  |  |
| 200 | 1.3.2.3.6.2 | DB | manual | 1.14d? | 2021-01-05 | 2021-01-05 |  |  |  |
| 201 | 1.3.2.3.7 | **Yahoo Campaign** |  | 1.14d? | 2021-01-05 | 2021-01-05 | 0d |  |  |
| 202 | 1.3.2.3.7.1 | Web | manual | 1.14d? | 2021-01-05 | 2021-01-05 |  |  |  |
| 203 | 1.3.2.3.7.2 | DB | manual | 1.14d? | 2021-01-05 | 2021-01-05 |  |  |  |
| 204 | 1.3.2.3.8 | **Microsoft Ads** |  | 1.14d? | 2021-01-05 | 2021-01-05 | 0d |  |  |
| 205 | 1.3.2.3.8.1 | Web | manual | 1.14d? | 2021-01-05 | 2021-01-05 |  |  |  |
| 206 | 1.3.2.3.8.2 | DB | manual | 1.14d? | 2021-01-05 | 2021-01-05 |  |  |  |

| ID | WBS | Task | Type | Duration | Start | Finish | Predecessors | Complete | Remaining | Total slack | Free slack | Resources | Work | Actual work | Comments |
| --- | --- | --- | --- | --- | --- | --- | --- | --- | --- | --- | --- | --- | --- | --- | --- |
| 207 | 1.3.2.3.9 | **TradeDesk Campaign** |  | 1.14d? | 2021-01-05 | 2021-01-05 |  |  |  | 0d |  |  |  |  |  |
| 208 | 1.3.2.3.9.1 | Web | manual | 1.14d? | 2021-01-05 | 2021-01-05 |  |  |  |  |  |  |  |  |  |
| 209 | 1.3.2.3.9.2 | DB | manual | 1.14d? | 2021-01-05 | 2021-01-05 |  |  |  |  |  |  |  |  |  |
| 210 | 1.3.2.3.10 | **DV360 Campaign** |  | 1.14d? | 2021-01-05 | 2021-01-05 |  |  |  | 0d |  |  |  |  |  |
| 211 | 1.3.2.3.10.1 | Web | manual | 1.14d? | 2021-01-05 | 2021-01-05 |  |  |  |  |  |  |  |  |  |
| 212 | 1.3.2.3.10.2 | DB | manual | 1.14d? | 2021-01-05 | 2021-01-05 |  |  |  |  |  |  |  |  |  |
| 213 | 1.4 | **Bug Fixing - Iteration 1** |  | 26.43d | 2021-02-15 | 2021-03-18 |  |  |  | 0d |  |  | 148h |  |  |
| 214 | 1.4.1 | Import / Export without MS Excel |  | 3.43d | 2021-03-05 | 2021-03-10 | 133, 31 |  |  | 0d |  | Shoaib | 24h |  |  |
| 215 | 1.4.2 | Support Multi Tabbing |  | 5.71d | 2021-03-10 | 2021-03-17 | 157, 214 |  |  | 0d |  | Shoaib | 40h |  |  |
| 216 | 1.4.3 | Enhancement in DCM errors and style coming from DCM |  | 1.14d | 2021-03-02 | 2021-03-03 | 169, 70 |  |  | 6.86d | 0d | Imran Q | 8h |  |  |
| 217 | 1.4.4 | Optimize Individual Placement Save |  | 0.71d | 2021-03-03 | 2021-03-03 | 170, 216 |  |  | 6.86d | 0d | Imran Q | 5h |  |  |
| 218 | 1.4.5 | Display prompt if user enters delivery at package level when Rule is set to override at placement level |  | 0.14d | 2021-03-03 | 2021-03-03 | 171, 217 |  |  | 6.86d | 0d | Imran Q | 1h |  |  |
| 219 | 1.4.6 | Google Ads for budget order and delivery |  | 5.71d | 2021-03-04 | 2021-03-10 | 172, 218 |  |  | 6.86d |  | Imran Q | 40h |  |  |
| 220 | 1.4.7 | External File storage (AWS and MS One Drive (Testing only)) |  | 1.43d | 2021-03-17 | 2021-03-18 | 173, 215 |  |  | 0d |  | Shoaib | 10h |  |  |
| 221 | 1.4.8 | Conversion of eConnect application to .Net |  | 2.86d | 2021-02-15 | 2021-02-18 | 174 |  |  | 23.57d |  | Farooq | 20h |  |  |
| 222 | 1.5 | Bug Verification and Second QA Iteration |  | 11.43d | 2021-03-19 | 2021-04-01 | 213 |  |  | 0d |  | Bilal R | 80h |  |  |
| 223 | 1.6 | Bug Fixing - Iteration 2 |  | 5.71d | 2021-04-02 | 2021-04-08 | 222 |  |  | 0d |  | Shoaib; Arif K; Farhan; Imran Q | 160h |  |  |
| 224 | 1.7 | Deployment and Verification on Release Environment |  | 5.71d | 2021-04-09 | 2021-04-15 | 223 |  |  | 0d |  | Asif A; Bilal R | 80h |  |  |
| 225 | 2 | **Additional Tasks** |  | 1.71d? | 2021-01-05 A | 2021-01-06 |  | 39% | 1.04d? | 81.71d |  |  | 38h | 26h |  |
| 226 | 2.1 | **Wild card search for Media Plan on Prebill** |  | 1.14d? | 2021-01-05 A | 2021-01-05 A |  | 100% |  |  |  |  | 12h | 12h | Need Discussion |
| 227 | 2.1.1 | Web |  | 0.57d? | 2021-01-05 A | 2021-01-05 A |  | 100% |  |  |  | Shoaib | 4h | 4h |  |
| 228 | 2.1.2 | DB |  | 1.14d? | 2021-01-05 A | 2021-01-05 A |  | 100% |  |  |  | Farhan | 8h | 8h |  |
| 229 | 2.2 | **Wild card search for Media Plan on Delivery Override** |  | 1.71d? | 2021-01-05 A | 2021-01-06 A |  | 100% |  |  |  |  | 14h | 14h | Need Discussion |
| 230 | 2.2.1 | Web |  | 0.29d? | 2021-01-05 A | 2021-01-05 A |  | 100% |  |  |  | Shoaib | 2h | 2h |  |
| 231 | 2.2.2 | DB |  | 1.71d? | 2021-01-05 A | 2021-01-06 A |  | 100% |  |  |  | Farhan | 12h | 12h |  |

| ID | WBS | Task | Duration | Start | Finish | Total slack | Resources | Work | Comments |
| --- | --- | --- | --- | --- | --- | --- | --- | --- | --- |
| 232 | 2.3 | **API Sunset** | 1.14d? | 2021-01-05 | 2021-01-05 | 82.29d | Imran Q | 8h | Needs to be done in Feb |
| 233 | 2.3.1 | DCM - Expires Feb 28 | 1.14d? | 2021-01-05 | 2021-01-05 | 82.29d |  |  |  |
| 234 | 2.3.2 | Google Ads(IPC Version is 4.0 Beta): (Sunset: June 2021) | 1.14d | 2021-01-05 | 2021-01-05 | 82.29d |  |  |  |
| 235 | 2.4 | Ability to transfer IC charges on owner side | 1.14d | 2021-01-05 | 2021-01-05 | 82.29d |  |  |  |
| 236 | 2.5 | On posted trx, 1. Provide a check box to select all trx on a page. 2. And/or date filters | 1.14d? | 2021-01-05 | 2021-01-05 | 82.29d |  |  |  |
| 237 | 2.6 | MPM - UI becomes unresponsive on negative value against positive plan | 1.14d? | 2021-01-05 | 2021-01-05 | 82.29d | Imran Q [50%] | 4h |  |
