# Nexelus 14 - R1_10

Schedule from MS Project, 2022-04-25 to 2022-11-11.

## Calendars

- Standard: Mon-Fri 09:30-13:00, 14:00-18:30; Sat-Sun off. Exceptions (off unless hours are given): 2022-05-02 to 2022-05-04 (Eid ul Fitr), 2022-07-11 to 2022-07-13 (Eid-al-Adha), 2022-08-08 (Ashura), 2022-10-07 (Eid Milad Nabi).

## Resources

| Resource |
| --- |
| Bilal |
| Arif K |
| Imran Q |
| Asif |
| Zeeshan |
| Adnan |
| Farooq |
| Resource 1 |
| Resource 2 |
| DB Resource 1 |
| Naeem |
| Ayesha |
| AsimJ |
| Tauseef |
| Rabia |

## Schedule

| ID | WBS | Task | Duration | Start | Finish | Predecessors | Total slack | Free slack | Resources | Work | Text2 |
| --- | --- | --- | --- | --- | --- | --- | --- | --- | --- | --- | --- |
| 1 | 1 | **Nexelus 14** | 136.71d? | 2022-04-25 | 2022-11-11 |  | 0d |  |  | 5566h |  |
| 2 | 1.1 | **Migration to Core** | 120.25d? | 2022-04-25 | 2022-10-20 |  | 4d |  |  | 3071h |  |
| 3 | 1.1.1 | **Development** | 114d? | 2022-04-25 | 2022-10-11 |  | 5.25d |  |  | 2125h |  |
| 4 | 1.1.1.1 | **Build 1** | 13.75d | 2022-04-25 | 2022-05-17 |  | 5.25d |  |  | 205h | Shoaib,Jawad |
| 5 | 1.1.1.1.1 | **Vendor Profile** | 13.75d | 2022-04-25 | 2022-05-17 |  | 7d | 0d |  | 70h |  |
| 6 | 1.1.1.1.1.1 | Dev | 13.75d | 2022-04-25 | 2022-05-17 |  | 22.5d |  | Zeeshan [50%] | 55h |  |
| 7 | 1.1.1.1.1.2 | DB | 4.69d | 2022-04-25 | 2022-04-29 |  | 7d | 0d | Arif K [40%] | 15h |  |
| 8 | 1.1.1.1.2 | **Expense Groups** | 10d | 2022-04-25 | 2022-05-11 |  | 6.38d | 0d |  | 95h |  |
| 9 | 1.1.1.1.2.1 | Dev | 10d | 2022-04-25 | 2022-05-11 |  | 6.38d |  | Adnan | 80h |  |
| 10 | 1.1.1.1.2.2 | DB | 4.69d | 2022-04-29 | 2022-05-11 | 7 | 7d |  | Arif K [40%] | 15h |  |
| 11 | 1.1.1.1.3 | **Schedule Billing and Estimation Billing for Level 1** | 3.12d | 2022-04-25 | 2022-04-28 |  | 5.25d | 0d |  | 25h |  |
| 12 | 1.1.1.1.3.1 | Dev | 1.88d | 2022-04-25 | 2022-04-26 |  | 5.25d | 0d | Farooq | 15h |  |
| 13 | 1.1.1.1.3.2 | DB | 3.12d | 2022-04-25 | 2022-04-28 |  | 22.38d | 6.88d | Arif K [40%] | 10h |  |
| 14 | 1.1.1.1.4 | **Delete file from Temp folders on new voucher etc** | 1.88d | 2022-04-26 | 2022-04-28 |  | 5.25d | 0d |  | 15h |  |
| 15 | 1.1.1.1.4.1 | Dev | 1.88d | 2022-04-26 | 2022-04-28 | 12 | 5.25d |  | Farooq | 15h |  |
| 16 | 1.1.1.2 | **Build 2** | 44.25d? | 2022-05-12 | 2022-07-18 |  | 10.38d |  |  | 561h |  |
| 17 | 1.1.1.2.1 | **GL Ditribution** | 20.75d? | 2022-05-12 | 2022-06-09 | 8 | 4.12d | 0d |  | 162h |  |
| 18 | 1.1.1.2.1.1 | UI | 2d | 2022-05-12 | 2022-05-13 |  | 22.88d | 18.75d | AsimJ | 16h |  |
| 19 | 1.1.1.2.1.2 | User Documentation | 2d | 2022-05-20 | 2022-05-24 | 127 | 4.12d | 0d | Adnan | 16h |  |
| 20 | 1.1.1.2.1.3 | Dev | 12.5d | 2022-05-24 | 2022-06-09 | 19 | 4.12d |  | Adnan | 100h |  |
| 21 | 1.1.1.2.1.4 | DB | 9.38d? | 2022-05-12 | 2022-05-25 | 13 | 15.5d |  | Arif K [40%] | 30h |  |
| 22 | 1.1.1.2.2 | **Post Voucher** | 17d? | 2022-06-09 | 2022-07-04 | 17 | 4.12d | 0d |  | 167h |  |
| 23 | 1.1.1.2.2.1 | UI | 2d | 2022-06-09 | 2022-06-13 | 18 | 19.12d |  | AsimJ | 16h |  |
| 24 | 1.1.1.2.2.2 | User Documentation | 2d | 2022-06-09 | 2022-06-13 |  | 4.12d | 0d | Adnan | 16h |  |
| 25 | 1.1.1.2.2.3 | Dev | 15d | 2022-06-13 | 2022-07-04 | 24 | 4.12d |  | Adnan | 120h |  |
| 26 | 1.1.1.2.2.4 | DB | 4.69d? | 2022-06-13 | 2022-06-20 | 24 | 14.44d | 0d | Arif K [40%] | 15h |  |
| 27 | 1.1.1.2.3 | Display UI’s only if there is license for module | 6.25d | 2022-06-20 | 2022-06-28 | 26 | 49.56d | 0d | Arif K [80%] | 40h |  |

| ID | WBS | Task | Duration | Start | Finish | Predecessors | Total slack | Free slack | Constraint | Resources | Work |
| --- | --- | --- | --- | --- | --- | --- | --- | --- | --- | --- | --- |
| 28 | 1.1.1.2.4 | **Upload Transaction** | 21.5d? | 2022-05-17 | 2022-06-16 | 5 | 22.5d | 0d |  |  | 100h |
| 29 | 1.1.1.2.4.1 | UI | 3.62d | 2022-05-17 | 2022-05-23 |  | 40.38d |  |  | AsimJ | 16h |
| 30 | 1.1.1.2.4.2 | User Documentation | 6d | 2022-05-25 | 2022-06-02 | 126 | 22.5d | 0d |  | Zeeshan [50%] | 24h |
| 31 | 1.1.1.2.4.3 | Dev | 10d? | 2022-06-02 | 2022-06-16 | 30 | 22.5d |  |  | Zeeshan [50%] | 40h |
| 32 | 1.1.1.2.4.4 | DB | 2.5d? | 2022-05-17 | 2022-05-20 |  | 41.5d |  |  | DB Resource 1 | 20h |
| 33 | 1.1.1.2.5 | **Post Transaction** | 19d? | 2022-06-16 | 2022-07-18 | 28 | 22.5d | 0d |  |  | 92h |
| 34 | 1.1.1.2.5.1 | UI | 4.62d | 2022-06-16 | 2022-06-22 |  | 36.88d |  |  | AsimJ | 16h |
| 35 | 1.1.1.2.5.2 | User Documentation | 4d | 2022-06-23 | 2022-06-29 | 134 | 22.5d | 0d |  | Zeeshan [50%] | 16h |
| 36 | 1.1.1.2.5.3 | Dev | 10d? | 2022-06-29 | 2022-07-18 | 35 | 22.5d |  |  | Zeeshan [50%] | 40h |
| 37 | 1.1.1.2.5.4 | DB | 2.5d | 2022-06-16 | 2022-06-20 |  | 39d |  |  | DB Resource 1 | 20h |
| 38 | 1.1.1.3 | **Build 3** | 31.62d? | 2022-06-01 | 2022-07-19 |  | 36d |  |  |  | 436h |
| 39 | 1.1.1.3.1 | **Journal Entry** | 14.62d? | 2022-06-01 | 2022-06-21 |  | 36d | 0d |  |  | 132h |
| 40 | 1.1.1.3.1.1 | UI | 2.62d | 2022-06-01 | 2022-06-03 |  | 36d | 0d | start no earlier than 2022-06-01 | AsimJ | 16h |
| 41 | 1.1.1.3.1.2 | User Documentation | 2d | 2022-06-03 | 2022-06-07 | 40 | 36d | 0d |  | Resource 2 | 16h |
| 42 | 1.1.1.3.1.3 | Dev | 10d? | 2022-06-07 | 2022-06-21 | 41 | 36d |  |  | Resource 2 | 80h |
| 43 | 1.1.1.3.1.4 | DB | 2.5d? | 2022-06-07 | 2022-06-10 | 41 | 43.5d |  |  | Rabia | 20h |
| 44 | 1.1.1.3.2 | **Setup Screens - UI** | 17d | 2022-06-21 | 2022-07-19 | 39 | 36d | 0d |  |  | 162h |
| 45 | 1.1.1.3.2.1 | UI | 2.62d | 2022-06-21 | 2022-06-24 |  | 50.38d |  |  | AsimJ | 16h |
| 46 | 1.1.1.3.2.2 | User Documentation | 2d | 2022-06-21 | 2022-06-23 |  | 36d | 0d |  | Resource 1 | 16h |
| 47 | 1.1.1.3.2.3 | Dev | 15d | 2022-06-23 | 2022-07-19 | 46 | 36d |  |  | Resource 1 | 120h |
| 48 | 1.1.1.3.2.4 | DB | 1.25d | 2022-06-21 | 2022-06-22 |  | 51.75d |  |  | Rabia | 10h |
| 49 | 1.1.1.3.3 | **Expense Type** | 14.5d? | 2022-06-21 | 2022-07-15 | 39 | 43.25d | 0d |  |  | 142h |
| 50 | 1.1.1.3.3.1 | UI | 2.62d | 2022-06-21 | 2022-06-24 |  | 55.12d |  |  | AsimJ | 16h |
| 51 | 1.1.1.3.3.2 | User Documentation | 2d | 2022-06-21 | 2022-06-23 |  | 43.25d | 0d |  | Resource 2 | 16h |
| 52 | 1.1.1.3.3.3 | Dev | 12.5d? | 2022-06-23 | 2022-07-15 | 51 | 43.25d |  |  | Resource 2 | 100h |
| 53 | 1.1.1.3.3.4 | DB | 3.12d? | 2022-06-28 | 2022-07-01 | 27 | 49.56d |  |  | Arif K [40%] | 10h |

| ID | WBS | Task | Duration | Start | Finish | Predecessors | Total slack | Free slack | Resources | Work |
| --- | --- | --- | --- | --- | --- | --- | --- | --- | --- | --- |
| 54 | 1.1.1.4 | **Build 4** | 82.5d? | 2022-06-02 | 2022-09-30 |  | 0d |  |  | 397h |
| 55 | 1.1.1.4.1 | **Purchase Order** | 33.88d? | 2022-07-15 | 2022-09-01 | 22, 132 | 4.12d | 0d |  | 317h |
| 56 | 1.1.1.4.1.1 | UI | 2.62d | 2022-07-15 | 2022-07-19 |  | 35.38d |  | AsimJ | 16h |
| 57 | 1.1.1.4.1.2 | User Documentation | 2.62d | 2022-07-15 | 2022-07-19 |  | 4.12d | 0d | Adnan | 16h |
| 58 | 1.1.1.4.1.3 | Dev | 31.25d? | 2022-07-19 | 2022-09-01 | 57 | 4.12d |  | Adnan | 250h |
| 59 | 1.1.1.4.1.4 | DB | 10.94d? | 2022-07-15 | 2022-07-29 |  | 27.06d |  | Arif K [40%] | 35h |
| 60 | 1.1.1.4.2 | **Restrict multiple login with single user.** | 82.5d? | 2022-06-02 | 2022-09-30 |  | 0d |  |  | 80h |
| 61 | 1.1.1.4.2.1 | Dev | 5d? | 2022-09-23 | 2022-09-30 | 67 | 0d |  | Farooq | 40h |
| 62 | 1.1.1.4.2.2 | DB | 6.25d? | 2022-06-02 | 2022-06-10 | 151 | 76.25d |  | Arif K [80%] | 40h |
| 63 | 1.1.1.5 | **Build 5** | 60.88d? | 2022-07-15 | 2022-10-11 |  | 7.88d |  |  | 526h |
| 64 | 1.1.1.5.1 | **Update Transaction** | 23.25d? | 2022-09-07 | 2022-10-11 | 276 | 0d |  |  | 162h |
| 65 | 1.1.1.5.1.1 | UI | 2.62d | 2022-09-07 | 2022-09-12 |  | 20.62d |  | AsimJ | 16h |
| 66 | 1.1.1.5.1.2 | User Documentation | 2d | 2022-09-07 | 2022-09-09 |  | 0d |  | Farooq | 16h |
| 67 | 1.1.1.5.1.3 | Dev | 10d? | 2022-09-09 | 2022-09-23 | 66 | 0d |  | Farooq | 80h |
| 68 | 1.1.1.5.1.4 | DB | 6.25d? | 2022-09-30 | 2022-10-11 | 60 | 0d |  | Rabia | 50h |
| 69 | 1.1.1.5.2 | **Resource Transaction Entry** | 17d? | 2022-07-29 | 2022-08-24 | 44, 138 | 36d | 0d |  | 162h |
| 70 | 1.1.1.5.2.1 | UI | 2.62d | 2022-07-29 | 2022-08-03 |  | 50.38d |  | AsimJ | 16h |
| 71 | 1.1.1.5.2.2 | User Documentation | 2d | 2022-07-29 | 2022-08-02 |  | 36d | 0d | Resource 1 | 16h |
| 72 | 1.1.1.5.2.3 | Dev | 15d? | 2022-08-02 | 2022-08-24 | 71 | 36d | 5d | Resource 1 | 120h |
| 73 | 1.1.1.5.2.4 | DB | 1.25d? | 2022-07-29 | 2022-08-01 |  | 51.75d |  | DB Resource 1 | 10h |
| 74 | 1.1.1.5.3 | **Expense Transaction Entry** | 19.62d? | 2022-07-15 | 2022-08-12 | 49 | 43.25d | 0d |  | 162h |
| 75 | 1.1.1.5.3.1 | UI | 2.62d | 2022-07-15 | 2022-07-19 |  | 43.25d | 0d | AsimJ | 16h |
| 76 | 1.1.1.5.3.2 | User Documentation | 2d | 2022-07-19 | 2022-07-21 | 75 | 43.25d | 0d | Resource 2 | 16h |
| 77 | 1.1.1.5.3.3 | Dev | 15d? | 2022-07-21 | 2022-08-12 | 76 | 43.25d | 0d | Resource 2 | 120h |
| 78 | 1.1.1.5.3.4 | DB | 1.25d? | 2022-07-15 | 2022-07-18 |  | 62.38d |  | DB Resource 1 | 10h |

| ID | WBS | Task | Duration | Start | Finish | Predecessors | Total slack | Free slack | Resources | Work | Text2 |
| --- | --- | --- | --- | --- | --- | --- | --- | --- | --- | --- | --- |
| 79 | 1.1.1.5.4 | **Report Server Migration to 2016 version.** | 5d | 2022-09-30 | 2022-10-10 | 61 | 9.12d | 0d |  | 40h |  |
| 80 | 1.1.1.5.4.1 | Dev | 5d | 2022-09-30 | 2022-10-10 |  | 9.12d |  | Farooq | 40h |  |
| 81 | 1.1.2 | **QA** | 117d | 2022-04-25 | 2022-10-14 |  | 4.12d |  |  | 666h |  |
| 82 | 1.1.2.1 | **Test Case writing from Build 1-5** | 12.25d | 2022-04-25 | 2022-05-16 |  | 4.12d |  |  | 177h |  |
| 83 | 1.1.2.1.1 | Expense Groups | 1d | 2022-04-25 | 2022-04-25 |  | 4.12d | 0d | Ayesha | 8h |  |
| 84 | 1.1.2.1.2 | Restrict multiple login with single user. | 1d | 2022-04-26 | 2022-04-26 | 83 | 4.12d | 0d | Ayesha | 8h |  |
| 85 | 1.1.2.1.3 | Post Voucher | 1.5d | 2022-04-27 | 2022-04-28 | 84 | 4.12d | 0d | Ayesha | 12h |  |
| 86 | 1.1.2.1.4 | Journal Entry | 1.25d | 2022-04-28 | 2022-04-29 | 85 | 4.12d | 0d | Ayesha | 10h |  |
| 87 | 1.1.2.1.5 | Expense Type | 1d | 2022-04-29 | 2022-05-05 | 86 | 4.12d | 0d | Ayesha | 8h |  |
| 88 | 1.1.2.1.6 | Resource Transaction Entry | 2d | 2022-05-05 | 2022-05-09 | 87 | 4.12d | 0d | Ayesha | 16h |  |
| 89 | 1.1.2.1.7 | Upload Transaction | 2d | 2022-05-09 | 2022-05-11 | 88 | 4.12d | 0d | Ayesha | 16h |  |
| 90 | 1.1.2.1.8 | Display UI’s only if there is license for module | 1d | 2022-05-11 | 2022-05-12 | 89 | 4.12d | 0d | Ayesha | 8h |  |
| 91 | 1.1.2.1.9 | Purchase Order | 1.5d | 2022-05-12 | 2022-05-16 | 90 | 4.12d | 0d | Ayesha; Naeem | 24h |  |
| 92 | 1.1.2.1.10 | GL Ditribution | 1d | 2022-04-25 | 2022-04-25 |  | 115.88d | 0d | Naeem | 8h |  |
| 93 | 1.1.2.1.11 | Setup Screens - UI | 1d | 2022-04-26 | 2022-04-26 | 92 | 115.88d | 0d | Naeem | 8h |  |
| 94 | 1.1.2.1.12 | Vendor Profile | 1d | 2022-04-27 | 2022-04-27 | 93 | 115.88d | 0d | Naeem | 8h |  |
| 95 | 1.1.2.1.13 | Schedule Billing and Estimation Billing for Level 1 | 1d | 2022-04-28 | 2022-04-28 | 94 | 115.88d | 0d | Naeem | 8h |  |
| 96 | 1.1.2.1.14 | Report Server Migration to 2016 version. | 1d | 2022-04-29 | 2022-04-29 | 95 | 115.88d | 0d | Naeem | 8h |  |
| 97 | 1.1.2.1.15 | Delete file from Temp folders on new voucher etc | 0.12d | 2022-05-05 | 2022-05-05 | 96 | 115.88d | 0d | Naeem | 1h |  |
| 98 | 1.1.2.1.16 | Expense Transaction Entry | 1.25d | 2022-05-05 | 2022-05-06 | 97 | 115.88d | 0d | Naeem | 10h |  |
| 99 | 1.1.2.1.17 | Post Transaction | 1d | 2022-05-06 | 2022-05-09 | 98 | 115.88d | 0d | Naeem | 8h |  |
| 100 | 1.1.2.1.18 | Update Transaction | 1d | 2022-05-09 | 2022-05-10 | 99 | 115.88d |  | Naeem | 8h |  |
| 101 | 1.1.2.2 | **Build 1** | 12.12d | 2022-04-28 | 2022-05-19 |  | 13.25d |  |  | 48h | Shoaib,Jawad |
| 102 | 1.1.2.2.1 | Vendor Profile | 1.5d | 2022-05-17 | 2022-05-19 | 5 | 22.5d | 0d | Naeem | 12h |  |
| 103 | 1.1.2.2.2 | Expense Groups | 2d | 2022-05-16 | 2022-05-18 | 8, 91 | 4.12d | 0d | Ayesha | 16h |  |
| 104 | 1.1.2.2.3 | Schedule Billing and Estimation Billing for Level 1 | 2d | 2022-04-28 | 2022-05-05 | 11 | 117.62d | 0d | Naeem | 16h |  |
| 105 | 1.1.2.2.4 | Delete file from Temp folders on new voucher etc | 0.5d | 2022-04-28 | 2022-04-29 | 14 | 119.75d | 0d | Naeem | 4h |  |

| ID | WBS | Task | Duration | Start | Finish | Predecessors | Total slack | Free slack | Resources | Work | Text2 |
| --- | --- | --- | --- | --- | --- | --- | --- | --- | --- | --- | --- |
| 106 | 1.1.2.3 | **Build 2** | 26.5d | 2022-06-09 | 2022-07-21 |  | 21.12d |  |  | 128h |  |
| 107 | 1.1.2.3.1 | GL Ditribution | 2d | 2022-06-09 | 2022-06-13 | 17 | 90d | 15d | Ayesha; Naeem | 32h |  |
| 108 | 1.1.2.3.2 | Post Voucher | 4d | 2022-07-04 | 2022-07-08 | 22 | 4.12d | 0d | Ayesha | 32h |  |
| 109 | 1.1.2.3.3 | Display UI’s only if there is license for module | 1d | 2022-06-28 | 2022-06-29 | 27 | 78.94d | 0d | Ayesha; Naeem | 16h |  |
| 110 | 1.1.2.3.4 | Upload Transaction | 3d | 2022-06-16 | 2022-06-21 | 28 | 22.5d | 0d | Ayesha | 24h |  |
| 111 | 1.1.2.3.5 | Post Transaction | 3d | 2022-07-18 | 2022-07-21 | 33 | 22.5d | 0d | Naeem | 24h |  |
| 112 | 1.1.2.4 | **Build 3** | 22.62d | 2022-06-21 | 2022-07-27 |  | 53d |  |  | 120h |  |
| 113 | 1.1.2.4.1 | Journal Entry | 5d | 2022-06-21 | 2022-06-28 | 39 | 72.38d | 29.12d | Ayesha | 40h |  |
| 114 | 1.1.2.4.2 | Setup Screens - UI | 4.38d | 2022-07-19 | 2022-07-25 | 44 | 36d | 0d | Ayesha; Naeem | 70h |  |
| 115 | 1.1.2.4.3 | Expense Type | 1.25d | 2022-07-26 | 2022-07-27 | 49, 114 | 58.5d | 15.25d | Ayesha | 10h |  |
| 116 | 1.1.2.5 | **Build 4** | 23.88d | 2022-09-01 | 2022-10-05 |  | 4.12d |  |  | 74h |  |
| 117 | 1.1.2.5.1 | Purchase Order | 6.25d | 2022-09-01 | 2022-09-12 | 55 | 4.12d | 0d | Asif | 50h |  |
| 118 | 1.1.2.5.2 | Restrict multiple login with single user. | 3d | 2022-09-30 | 2022-10-05 | 60 | 7.5d |  | Naeem | 24h |  |
| 119 | 1.1.2.6 | **Build 5** | 44.25d | 2022-08-12 | 2022-10-14 |  | 6.75d |  |  | 119h |  |
| 120 | 1.1.2.6.1 | Update Transaction | 3d | 2022-10-12 | 2022-10-14 | 64 | 0d |  | Naeem | 24h |  |
| 121 | 1.1.2.6.2 | Resource Transaction Entry | 5d | 2022-08-24 | 2022-08-31 | 69 | 36d | 0d | Ayesha | 40h |  |
| 122 | 1.1.2.6.3 | Expense Transaction Entry | 5d | 2022-08-12 | 2022-08-19 | 74, 113 | 44d | 0.75d | Naeem | 40h |  |
| 123 | 1.1.2.6.4 | Report Server Migration to 2016 version. | 1.88d | 2022-10-10 | 2022-10-12 | 79 | 9.12d | 0d | Naeem | 15h |  |
| 124 | 1.1.3 | **Bug Fixing** | 116d | 2022-04-29 | 2022-10-20 |  | 4d |  |  | 280h |  |
| 125 | 1.1.3.1 | **Build 1** | 15d | 2022-04-29 | 2022-05-25 |  | 14.12d |  |  | 46h | Shoaib,Jawad |
| 126 | 1.1.3.1.1 | Vendor Profile | 4d | 2022-05-19 | 2022-05-25 | 102 | 22.5d | 0d | Zeeshan [50%] | 16h |  |
| 127 | 1.1.3.1.2 | Expense Groups | 2d | 2022-05-18 | 2022-05-20 | 103 | 4.12d | 0d | Adnan | 16h |  |
| 128 | 1.1.3.1.3 | Schedule Billing and Estimation Billing for Level 1 | 1.5d | 2022-05-05 | 2022-05-06 | 104 | 117.62d |  | Farooq | 12h |  |
| 129 | 1.1.3.1.4 | Delete file from Temp folders on new voucher etc | 0.25d | 2022-04-29 | 2022-04-29 | 105 | 119.75d |  | Farooq | 2h |  |

| ID | WBS | Task | Type | Duration | Start | Finish | Predecessors | Total slack | Free slack | Constraint | Resources | Work |
| --- | --- | --- | --- | --- | --- | --- | --- | --- | --- | --- | --- | --- |
| 130 | 1.1.3.2 | **Build 2** |  | 20d | 2022-06-21 | 2022-07-22 |  | 17.62d |  |  |  | 48h |
| 131 | 1.1.3.2.1 | GL Ditribution |  | 1.5d | 2022-07-04 | 2022-07-06 | 107, 22 | 75d |  |  | Adnan | 12h |
| 132 | 1.1.3.2.2 | Post Voucher |  | 1.25d | 2022-07-08 | 2022-07-14 | 108 | 4.12d | 0d |  | Adnan | 10h |
| 133 | 1.1.3.2.3 | Display UI’s only if there is license for module |  | 0.62d | 2022-06-29 | 2022-06-30 | 109 | 78.94d |  |  | Arif K [40%] | 2h |
| 134 | 1.1.3.2.4 | Upload Transaction |  | 2d | 2022-06-21 | 2022-06-23 | 110 | 22.5d | 0d |  | Zeeshan | 16h |
| 135 | 1.1.3.2.5 | Post Transaction |  | 1d | 2022-07-21 | 2022-07-22 | 111 | 22.5d | 0d |  | Zeeshan | 8h |
| 136 | 1.1.3.3 | **Build 3** |  | 18.5d | 2022-07-26 | 2022-08-22 |  | 36d |  |  |  | 76h |
| 137 | 1.1.3.3.1 | Journal Entry |  | 3.75d | 2022-08-12 | 2022-08-18 | 113, 77 | 43.25d | 0d |  | Resource 2 | 30h |
| 138 | 1.1.3.3.2 | Setup Screens - UI |  | 3.75d | 2022-07-26 | 2022-07-29 | 114 | 36d | 0d |  | Resource 1 | 30h |
| 139 | 1.1.3.3.3 | Expense Type |  | 2d | 2022-08-18 | 2022-08-22 | 115, 137 | 43.25d | 0d |  | Resource 2 | 16h |
| 140 | 1.1.3.4 | **Build 4** |  | 27.12d | 2022-09-12 | 2022-10-20 |  | 0d |  |  |  | 56h |
| 141 | 1.1.3.4.1 | Purchase Order |  | 5d | 2022-09-12 | 2022-09-19 | 117 | 4.12d | 0d |  | Adnan | 40h |
| 142 | 1.1.3.4.2 | Restrict multiple login with single user. |  | 2d | 2022-10-18 | 2022-10-20 | 118, 144 | 0d |  |  | Farooq | 16h |
| 143 | 1.1.3.5 | **Build 5** |  | 39.75d | 2022-08-22 | 2022-10-18 |  | 6d |  |  |  | 54h |
| 144 | 1.1.3.5.1 | Update Transaction |  | 1.25d | 2022-10-17 | 2022-10-18 | 120 | 0d |  |  | Farooq | 10h |
| 145 | 1.1.3.5.2 | Resource Transaction Entry |  | 2.5d | 2022-08-31 | 2022-09-05 | 121, 72 | 36d |  |  | Resource 1 | 20h |
| 146 | 1.1.3.5.3 | Expense Transaction Entry |  | 2.5d | 2022-08-22 | 2022-08-24 | 122, 139 | 43.25d |  |  | Resource 2 | 20h |
| 147 | 1.1.3.5.4 | Report Server Migration to 2016 version. |  | 0.5d | 2022-10-12 | 2022-10-13 | 123 | 9.12d |  |  | Farooq | 4h |
| 148 | 1.2 | **Optimization UI** |  | 124.25d? | 2022-04-25 | 2022-10-26 |  | 0d |  |  |  | 2163h |
| 149 | 1.2.1 | **Development** |  | 108.12d? | 2022-04-25 | 2022-10-03 |  | 9d |  |  |  | 1378h |
| 150 | 1.2.1.1 | Prototype and Requiement Finalizatiion | milestone | 0d? | 2022-04-25 | 2022-04-25 |  | 124.25d |  |  | Imran Q |  |
| 151 | 1.2.1.2 | **Build 1** |  | 16.25d | 2022-05-11 | 2022-06-02 | 15 | 0d |  |  |  | 130h |
| 152 | 1.2.1.2.1 | Resolve UI and CSS issues |  | 2.5d | 2022-05-11 | 2022-05-13 |  | 0d |  | start no earlier than 2022-05-11 | Farooq | 20h |
| 153 | 1.2.1.2.2 | Buttons and label addition |  | 0.31d | 2022-05-13 | 2022-05-13 | 152 | 0d |  |  | Farooq | 2.5h |
| 154 | 1.2.1.2.3 | Media Plan Changes |  | 0.62d | 2022-05-13 | 2022-05-16 | 153 | 0d |  |  | Farooq | 5h |
| 155 | 1.2.1.2.4 | Back implementation Optimization |  | 0.31d | 2022-05-16 | 2022-05-16 | 154 | 0d |  |  | Farooq | 2.5h |
| 156 | 1.2.1.2.5 | Vendor Lookup (edit and delete) |  | 3.75d | 2022-05-16 | 2022-05-20 | 155 | 0d |  |  | Farooq | 30h |
| 157 | 1.2.1.2.6 | Add mapping lookup |  | 1.25d | 2022-05-20 | 2022-05-23 | 156 | 0d |  |  | Farooq | 10h |
| 158 | 1.2.1.2.7 | DB save call for vendor edit, add |  | 2.5d | 2022-05-23 | 2022-05-26 | 157 | 0d |  |  | Farooq | 20h |
| 159 | 1.2.1.2.8 | Refresh Sites from IPC call |  | 5d | 2022-05-26 | 2022-06-02 | 158 | 0d |  |  | Farooq | 40h |

| ID | WBS | Task | Duration | Start | Finish | Predecessors | Total slack | Free slack | Constraint | Resources | Work |
| --- | --- | --- | --- | --- | --- | --- | --- | --- | --- | --- | --- |
| 160 | 1.2.1.3 | **Build 2** | 91.12d? | 2022-05-11 | 2022-09-21 |  | 4.12d |  |  |  | 492h |
| 161 | 1.2.1.3.1 | Add Media Plan Name, Revision and Rule descrrption on top of UI | 2.5d? | 2022-05-11 | 2022-05-13 |  | 5.88d | 0d | start no earlier than 2022-05-11 | Imran Q [80%] | 16h |
| 162 | 1.2.1.3.2 | Calculate and split placement data based on Period | 5d | 2022-05-13 | 2022-05-20 | 161 | 5.88d | 0d |  | Imran Q [80%] | 32h |
| 163 | 1.2.1.3.3 | **Placement grid** | 18.12d? | 2022-05-20 | 2022-06-15 |  | 5.88d | 0d |  |  | 116h |
| 164 | 1.2.1.3.3.1 | Data Loading | 2.5d? | 2022-05-20 | 2022-05-24 | 162 | 5.88d | 0d |  | Imran Q [80%] | 16h |
| 165 | 1.2.1.3.3.2 | Selection of Rows and validation | 3.12d? | 2022-05-25 | 2022-05-30 | 164 | 5.88d | 0d |  | Imran Q [80%] | 20h |
| 166 | 1.2.1.3.3.3 | Indenting data | 3.75d? | 2022-05-30 | 2022-06-02 | 165 | 5.88d | 0d |  | Imran Q [80%] | 24h |
| 167 | 1.2.1.3.3.4 | AdTech Lookup - Readonly | 2.5d? | 2022-06-02 | 2022-06-07 | 166 | 5.88d | 0d |  | Imran Q [80%] | 16h |
| 168 | 1.2.1.3.3.5 | Ext Cost Editing / Recalculation | 6.25d? | 2022-06-07 | 2022-06-15 | 167 | 5.88d |  |  | Imran Q [80%] | 40h |
| 169 | 1.2.1.3.4 | Copy / Paste Placement / Package. Copy as Link Placement | 3.75d | 2022-06-15 | 2022-06-21 | 163 | 5.88d | 0d |  | Imran Q [80%] | 24h |
| 170 | 1.2.1.3.5 | Delete Lines | 2.5d? | 2022-06-21 | 2022-06-23 | 169 | 5.88d | 0d |  | Imran Q [80%] | 16h |
| 171 | 1.2.1.3.6 | **Package/placement** | 38.75d? | 2022-06-23 | 2022-08-23 |  | 5.88d | 3.5d |  |  | 248h |
| 172 | 1.2.1.3.6.1 | Core Attributes | 6.25d? | 2022-06-23 | 2022-07-04 | 170 | 5.88d | 0d |  | Imran Q [80%] | 40h |
| 173 | 1.2.1.3.6.2 | Ad Tech and Dimension Drop Downs | 6.25d? | 2022-07-04 | 2022-07-15 | 172 | 5.88d | 0d |  | Imran Q [80%] | 40h |
| 174 | 1.2.1.3.6.3 | Placement Linkage with Export to DCM | 6.25d? | 2022-07-15 | 2022-07-25 | 173 | 5.88d | 0d |  | Imran Q [80%] | 40h |
| 175 | 1.2.1.3.6.4 | Sizmek and DCM Attributes | 6.25d? | 2022-07-25 | 2022-08-02 | 174 | 5.88d | 0d |  | Imran Q [80%] | 40h |
| 176 | 1.2.1.3.6.5 | Custom Fields | 6.25d? | 2022-08-02 | 2022-08-12 | 175 | 5.88d | 0d |  | Imran Q [80%] | 40h |
| 177 | 1.2.1.3.6.6 | Add/Edit Placement / Package. | 6.25d | 2022-08-12 | 2022-08-22 | 176 | 5.88d | 0d |  | Imran Q [80%] | 40h |
| 178 | 1.2.1.3.6.7 | Delete Placement /Package | 1.25d | 2022-08-22 | 2022-08-23 | 177 | 5.88d | 0d |  | Imran Q [80%] | 8h |
| 179 | 1.2.1.3.7 | View Change Log | 2d | 2022-09-19 | 2022-09-21 | 141 | 4.12d | 0d |  | Adnan | 16h |
| 180 | 1.2.1.3.8 | Save, cancel | 2.5d | 2022-08-23 | 2022-08-26 | 178 | 5.88d | 0d |  | Imran Q [80%] | 16h |
| 181 | 1.2.1.3.9 | Reset changes placement | 1.25d | 2022-08-26 | 2022-08-29 | 180 | 5.88d | 0d |  | Imran Q [80%] | 8h |
| 182 | 1.2.1.4 | **Build 3** | 42.5d | 2022-07-22 | 2022-09-21 |  | 22.5d |  |  |  | 210h |
| 183 | 1.2.1.4.1 | Generate Media Plan revision with Optimized Vendor Placements | 2.5d | 2022-08-29 | 2022-08-31 | 181 | 5.88d | 0d |  | Imran Q [80%] | 16h |
| 184 | 1.2.1.4.2 | Generate Client Schedule | 3.75d | 2022-08-31 | 2022-09-06 | 183 | 5.88d | 0d |  | Imran Q [80%] | 24h |
| 185 | 1.2.1.4.3 | Import / Export Placements. | 30d | 2022-07-22 | 2022-09-05 | 135 | 22.5d | 0d |  | Zeeshan [50%] | 120h |
| 186 | 1.2.1.4.4 | Import lookup, Import export buttons, with import file selection | 12.5d | 2022-09-05 | 2022-09-21 | 185 | 23.5d |  |  | Zeeshan [50%] | 50h |

| ID | WBS | Task | Duration | Start | Finish | Predecessors | Total slack | Free slack | Resources | Work |
| --- | --- | --- | --- | --- | --- | --- | --- | --- | --- | --- |
| 187 | 1.2.1.5 | **Build 4** | 16d | 2022-06-08 | 2022-06-30 |  | 0d |  |  | 128h |
| 188 | 1.2.1.5.1 | Approval Process Changes | 5d | 2022-06-08 | 2022-06-15 | 246 | 0d |  | Farooq | 40h |
| 189 | 1.2.1.5.2 | Grouping and print selection | 4d | 2022-06-15 | 2022-06-21 | 188 | 0d |  | Farooq | 32h |
| 190 | 1.2.1.5.3 | IO Approval Changes | 5d | 2022-06-21 | 2022-06-28 | 189 | 0d |  | Farooq | 40h |
| 191 | 1.2.1.5.4 | Checks for approval by vendor | 2d | 2022-06-28 | 2022-06-30 | 190 | 0d |  | Farooq | 16h |
| 192 | 1.2.1.6 | **Build 5** | 62.62d | 2022-06-30 | 2022-10-03 |  | 0d |  |  | 128h |
| 193 | 1.2.1.6.1 | Bo Revision | 8d | 2022-06-30 | 2022-07-15 | 191 | 0d |  | Farooq | 64h |
| 194 | 1.2.1.6.2 | Trade Desk | 8d | 2022-09-21 | 2022-10-03 | 179 | 4.12d | 0d | Adnan | 64h |
| 195 | 1.2.1.7 | **Build 6** | 40.12d | 2022-07-25 | 2022-09-20 |  | 0d |  |  | 240h |
| 196 | 1.2.1.7.1 | Facebook | 5d | 2022-07-25 | 2022-08-01 | 261, 193 | 0d |  | Farooq | 40h |
| 197 | 1.2.1.7.2 | MicroSoft Ads | 5d | 2022-08-01 | 2022-08-09 | 196 | 0d |  | Farooq | 40h |
| 198 | 1.2.1.7.3 | Yahoo | 10d | 2022-08-09 | 2022-08-23 | 197 | 0d |  | Farooq | 80h |
| 199 | 1.2.1.7.4 | Twitter | 5d | 2022-09-06 | 2022-09-13 | 184 | 5.88d | 0d | Imran Q | 40h |
| 200 | 1.2.1.7.5 | DV 360 | 5d | 2022-09-13 | 2022-09-20 | 199 | 5.88d | 0d | Imran Q | 40h |
| 201 | 1.2.1.8 | **Build 7** | 6.25d | 2022-08-23 | 2022-08-31 |  | 0d |  |  | 50h |
| 202 | 1.2.1.8.1 | Summary Page Model for all Revisions | 6.25d | 2022-08-23 | 2022-08-31 | 198 | 0d |  | Farooq | 50h |
| 203 | 1.2.2 | **QA** | 84.62d | 2022-06-02 | 2022-10-04 |  | 0d |  |  | 413h |
| 204 | 1.2.2.1 | **Build 1** | 2.25d | 2022-06-02 | 2022-06-06 | 151 | 0d |  |  | 18h |
| 205 | 1.2.2.1.1 | Buttons and label addition | 0.06d | 2022-06-02 | 2022-06-02 | 153 | 0d |  | Bilal | 0.5h |
| 206 | 1.2.2.1.2 | Media Plan Changes | 0.06d | 2022-06-02 | 2022-06-02 | 154, 205 | 0d |  | Bilal | 0.5h |
| 207 | 1.2.2.1.3 | Back implementation Optimization | 0.12d | 2022-06-02 | 2022-06-02 | 155, 206 | 0d |  | Bilal | 1h |
| 208 | 1.2.2.1.4 | Vendor Lookup (edit and delete) | 0.5d | 2022-06-02 | 2022-06-02 | 156, 207 | 0d |  | Bilal | 4h |
| 209 | 1.2.2.1.5 | Add mapping lookup | 0.5d | 2022-06-03 | 2022-06-03 | 157, 208 | 0d |  | Bilal | 4h |
| 210 | 1.2.2.1.6 | Refresh Sites from IPC call | 1d | 2022-06-03 | 2022-06-06 | 159, 209 | 0d |  | Asif | 8h |

| ID | WBS | Task | Duration | Start | Finish | Predecessors | Total slack | Free slack | Resources | Work |
| --- | --- | --- | --- | --- | --- | --- | --- | --- | --- | --- |
| 211 | 1.2.2.2 | **Build 2** | 72d | 2022-06-15 | 2022-09-29 |  | 10.44d |  |  | 106h |
| 212 | 1.2.2.2.1 | Placement grid | 2d | 2022-06-15 | 2022-06-17 | 163 | 68.19d | 45.5d | Bilal | 16h |
| 213 | 1.2.2.2.2 | Save, cancel | 1d | 2022-08-26 | 2022-08-29 | 180, 212 | 22.69d | 0d | Bilal | 8h |
| 214 | 1.2.2.2.3 | Package/placement PopUp | 3.75d | 2022-08-29 | 2022-09-01 | 171, 213 | 22.69d | 13.25d | Bilal | 30h |
| 215 | 1.2.2.2.4 | View Change Log | 0.25d | 2022-09-21 | 2022-09-21 | 179, 214 | 10.44d | 0d | Bilal | 2h |
| 216 | 1.2.2.2.5 | Ad tech look up under placement | 1d | 2022-09-21 | 2022-09-22 | 215 | 10.44d | 0d | Bilal | 8h |
| 217 | 1.2.2.2.6 | Add Placement / Package. | 3d | 2022-09-22 | 2022-09-27 | 177, 216 | 10.44d | 0d | Bilal | 24h |
| 218 | 1.2.2.2.7 | Delete Placement /Package | 0.25d | 2022-09-27 | 2022-09-27 | 178, 217 | 10.44d | 0d | Bilal | 2h |
| 219 | 1.2.2.2.8 | Copy / Paste Placement / Package. Copy as Link Placement | 2d | 2022-09-27 | 2022-09-29 | 169, 218 | 10.44d | 4.56d | Bilal | 16h |
| 220 | 1.2.2.3 | **Build 3** | 9.88d | 2022-08-31 | 2022-09-14 | 204 | 23.5d |  |  | 108h |
| 221 | 1.2.2.3.1 | Generate Media Plan revision with Optimized Vendor Placements | 3d | 2022-08-31 | 2022-09-05 | 183 | 29.12d | 23.25d | Bilal | 24h |
| 222 | 1.2.2.3.2 | Generate Client Schedule | 3d | 2022-09-06 | 2022-09-09 | 184 | 26.62d | 20.75d | Bilal | 24h |
| 223 | 1.2.2.3.3 | Import / Export Placements. | 7.5d | 2022-09-05 | 2022-09-14 | 185 | 22.5d | 3.88d | Bilal | 60h |
| 224 | 1.2.2.4 | **Build 4** | 11.75d | 2022-06-15 | 2022-07-01 |  | 13d | 7.25d |  | 32h |
| 225 | 1.2.2.4.1 | Approval Process Changes | 1d | 2022-06-15 | 2022-06-16 | 188 | 18d |  | Bilal | 8h |
| 226 | 1.2.2.4.2 | Grouping and print selection | 0.25d | 2022-06-21 | 2022-06-21 | 189 | 17.75d |  | Bilal | 2h |
| 227 | 1.2.2.4.3 | IO Approval Changes | 2.5d | 2022-06-28 | 2022-06-30 | 190 | 10.75d | 0d | Bilal | 20h |
| 228 | 1.2.2.4.4 | Checks for approval by vendor | 0.25d | 2022-07-01 | 2022-07-01 | 191, 227 | 13d |  | Bilal | 2h |
| 229 | 1.2.2.5 | **Build 5** | 56.38d | 2022-07-15 | 2022-10-04 |  | 4.12d |  |  | 34h |
| 230 | 1.2.2.5.1 | Bo Revision | 2.5d | 2022-07-15 | 2022-07-19 | 193, 224 | 56.25d | 52.12d | Bilal | 20h |
| 231 | 1.2.2.5.2 | Trade Desk | 1.75d | 2022-10-03 | 2022-10-04 | 194, 230 | 4.12d | 0d | Bilal | 14h |
| 232 | 1.2.2.6 | **Build 6** | 35.75d | 2022-08-01 | 2022-09-21 |  | 20.5d |  |  | 29h |
| 233 | 1.2.2.6.1 | Facebook | 0.75d | 2022-08-01 | 2022-08-02 | 196 | 20.5d |  | Bilal | 6h |
| 234 | 1.2.2.6.2 | MicroSoft Ads | 1d | 2022-08-09 | 2022-08-10 | 197 | 16.25d |  | Bilal | 8h |
| 235 | 1.2.2.6.3 | Yahoo | 0.62d | 2022-08-23 | 2022-08-24 | 198 | 7.62d |  | Bilal | 5h |
| 236 | 1.2.2.6.4 | Twitter | 0.62d | 2022-09-13 | 2022-09-14 | 199 | 26.5d | 20.62d | Bilal | 5h |
| 237 | 1.2.2.6.5 | DV 360 | 0.62d | 2022-09-20 | 2022-09-21 | 200 | 22.75d | 16.88d | Bilal | 5h |

| ID | WBS | Task | Duration | Start | Finish | Predecessors | Total slack | Free slack | Constraint | Resources | Work |
| --- | --- | --- | --- | --- | --- | --- | --- | --- | --- | --- | --- |
| 238 | 1.2.2.7 | **Build 7** | 10.75d | 2022-08-31 | 2022-09-15 |  | 21.5d |  |  |  | 86h |
| 239 | 1.2.2.7.1 | Summary Page Model for all Revisions - New page at end of complete process | 1.25d | 2022-08-31 | 2022-09-01 | 202 | 21.5d | 0d |  | Bilal | 10h |
| 240 | 1.2.2.7.2 | **Optimizaion Verification wih Rules (Verification of Previous Build)** | 9.5d | 2022-09-02 | 2022-09-15 | 239 | 21.5d | 17.38d |  |  | 76h |
| 241 | 1.2.2.7.2.1 | Rule 1 | 1.25d | 2022-09-02 | 2022-09-05 |  | 21.5d | 0d |  | Bilal | 10h |
| 242 | 1.2.2.7.2.2 | Rule 2 | 2.5d | 2022-09-05 | 2022-09-07 | 241 | 21.5d | 0d |  | Bilal | 20h |
| 243 | 1.2.2.7.2.3 | Rule 3 | 3.75d | 2022-09-07 | 2022-09-13 | 242 | 21.5d | 0d |  | Bilal | 30h |
| 244 | 1.2.2.7.2.4 | Mannual Optimize | 2d | 2022-09-13 | 2022-09-15 | 243 | 21.5d |  |  | Bilal | 16h |
| 245 | 1.2.3 | **Bug Fixing** | 96.75d | 2022-06-06 | 2022-10-26 |  | 0d |  |  |  | 372h |
| 246 | 1.2.3.1 | Build 1 | 2d | 2022-06-06 | 2022-06-08 | 204 | 0d |  |  | Farooq | 16h |
| 247 | 1.2.3.2 | **Build 2** | 12.5d | 2022-09-20 | 2022-10-10 |  | 5.88d |  |  |  | 80h |
| 248 | 1.2.3.2.1 | Placement grid | 3.75d | 2022-09-20 | 2022-09-26 | 200 | 5.88d | 0d |  | Imran Q [80%] | 24h |
| 249 | 1.2.3.2.2 | Save, cancel | 0.31d | 2022-09-26 | 2022-09-26 | 213, 248 | 5.88d | 0d |  | Imran Q [80%] | 2h |
| 250 | 1.2.3.2.3 | Package/placement PopUp | 5d | 2022-09-26 | 2022-10-03 | 214, 249 | 5.88d | 0d |  | Imran Q [80%] | 32h |
| 251 | 1.2.3.2.4 | View Change Log | 0.31d | 2022-10-03 | 2022-10-03 | 215, 250 | 5.88d | 0d |  | Imran Q [80%] | 2h |
| 252 | 1.2.3.2.5 | Ad tech look up under placement | 0.62d | 2022-10-04 | 2022-10-04 | 216, 251 | 5.88d | 0d |  | Imran Q [80%] | 4h |
| 253 | 1.2.3.2.6 | Add Placement / Package. | 1.25d | 2022-10-04 | 2022-10-05 | 217, 252 | 5.88d | 0d |  | Imran Q [80%] | 8h |
| 254 | 1.2.3.2.7 | Delete Placement /Package | 0.31d | 2022-10-05 | 2022-10-06 | 218, 253 | 5.88d | 0d |  | Imran Q [80%] | 2h |
| 255 | 1.2.3.2.8 | Copy / Paste Placement / Package. Copy as Link Placement | 0.94d | 2022-10-06 | 2022-10-10 | 219, 254 | 5.88d | 0d | start no earlier than 2022-09-26 | Imran Q [80%] | 6h |
| 256 | 1.2.3.3 | **Build 3** | 30.12d | 2022-08-31 | 2022-10-13 |  | 8.38d |  |  |  | 58h |
| 257 | 1.2.3.3.1 | Generate Media Plan revision with Optimized Vendor Placements | 1.25d | 2022-10-10 | 2022-10-11 | 221, 255 | 5.88d | 0d |  | Imran Q [80%] | 8h |
| 258 | 1.2.3.3.2 | Generate Client Schedule | 2.5d | 2022-10-11 | 2022-10-13 | 222, 257 | 5.88d | 0d |  | Imran Q [80%] | 16h |
| 259 | 1.2.3.3.3 | Import / Export Placements. | 6d | 2022-09-20 | 2022-09-28 | 223, 200 | 18.62d |  |  | Zeeshan [50%] | 24h |
| 260 | 1.2.3.3.4 | Import lookup, Import export buttons, with import file selection | 2.5d | 2022-08-31 | 2022-09-05 | 202 | 36d |  |  | Zeeshan [50%] | 10h |
| 261 | 1.2.3.4 | **Build 4** | 6d | 2022-07-15 | 2022-07-25 |  | 0d |  |  |  | 48h |
| 262 | 1.2.3.4.1 | Approval Process Changes | 3d | 2022-07-15 | 2022-07-20 | 225, 193 | 0d |  |  | Farooq | 24h |
| 263 | 1.2.3.4.2 | Grouping and print selection | 0.25d | 2022-07-20 | 2022-07-20 | 226, 262 | 0d |  |  | Farooq | 2h |
| 264 | 1.2.3.4.3 | IO Approval Changes | 2.5d | 2022-07-20 | 2022-07-25 | 227, 263 | 0d |  |  | Farooq | 20h |
| 265 | 1.2.3.4.4 | Checks for approval by vendor | 0.25d | 2022-07-25 | 2022-07-25 | 228, 264 | 0d |  |  | Farooq | 2h |

| ID | WBS | Task | Duration | Start | Finish | Predecessors | Total slack | Free slack | Resources | Work |
| --- | --- | --- | --- | --- | --- | --- | --- | --- | --- | --- |
| 266 | 1.2.3.5 | **Build 5** | 14.38d | 2022-10-04 | 2022-10-26 |  | 0d |  |  | 64h |
| 267 | 1.2.3.5.1 | Bo Revision | 4d | 2022-10-20 | 2022-10-26 | 194, 142 | 0d |  | Farooq | 32h |
| 268 | 1.2.3.5.2 | Trade Desk | 4d | 2022-10-04 | 2022-10-11 | 231 | 4.12d | 0d | Adnan | 32h |
| 269 | 1.2.3.6 | **Build 6** | 32.62d | 2022-08-31 | 2022-10-18 |  | 0d |  |  | 48h |
| 270 | 1.2.3.6.1 | Facebook | 1d | 2022-08-31 | 2022-09-01 | 233, 202 | 0d |  | Farooq | 8h |
| 271 | 1.2.3.6.2 | MicroSoft Ads | 1d | 2022-09-01 | 2022-09-02 | 234, 270 | 0d |  | Farooq | 8h |
| 272 | 1.2.3.6.3 | Yahoo | 2d | 2022-09-02 | 2022-09-06 | 235, 271 | 0d |  | Farooq | 16h |
| 273 | 1.2.3.6.4 | Twitter | 1.25d | 2022-10-13 | 2022-10-17 | 236, 258 | 5.88d | 0d | Imran Q [80%] | 8h |
| 274 | 1.2.3.6.5 | DV 360 | 1.25d | 2022-10-17 | 2022-10-18 | 237, 273 | 5.88d |  | Imran Q [80%] | 8h |
| 275 | 1.2.3.7 | **Build 7** | 30.38d | 2022-09-06 | 2022-10-20 | 201 | 0d |  |  | 58h |
| 276 | 1.2.3.7.1 | Summary Page Model for all Revisions | 1d | 2022-09-06 | 2022-09-07 | 265, 272 | 0d |  | Farooq | 8h |
| 277 | 1.2.3.7.2 | Fix Rules Implementation | 6.25d | 2022-10-11 | 2022-10-20 | 240, 268 | 4.12d |  | Adnan | 50h |
| 278 | 1.3 | Cross verification (Second QA Cycle) | 8.33d | 2022-10-26 | 2022-11-07 | 2, 148 | 0d |  | Bilal; Asif; Naeem | 200h |
| 279 | 1.4 | **Integration Testing and Release Verification** | 4.12d? | 2022-11-07 | 2022-11-11 | 278 | 0d |  |  | 132h |
| 280 | 1.4.1 | Integration Testing | 1.88d? | 2022-11-07 | 2022-11-09 |  | 0d |  | Bilal; Asif; Ayesha; Naeem | 60h |
| 281 | 1.4.2 | Release Deplyment and Verification | 2.25d | 2022-11-09 | 2022-11-11 | 280 | 0d |  | Asif; Bilal; Ayesha; Naeem | 72h |
| 282 | 2 | **Other Tasks** | 62.5d? | 2022-04-25 | 2022-07-28 |  | 0d |  |  | 300h |
| 283 | 2.1 | Revisit missing constraints | 62.5d | 2022-04-25 | 2022-07-28 |  | 74.21d |  | Arif K [20%] | 100h |
| 284 | 2.2 | SOC 1 Compliance | 62.5d | 2022-04-25 | 2022-07-28 |  | 74.21d |  | AsimJ [20%]; Tauseef [20%] | 200h |
