# nexelus 14_R22

Schedule from MS Project, 2022-04-25 to 2022-10-24.

## Calendars

- Standard: Mon-Fri 09:30-13:00, 14:00-18:30; Sat-Sun off. Exceptions (off unless hours are given): 2022-05-02 to 2022-05-04 (Eid ul Fitr), 2022-07-11 to 2022-07-13 (Eid-al-Adha), 2022-08-08 (Ashura), 2022-10-07 (Eid Milad Nabi).

## Resources

| Resource |
| --- |
| Bilal |
| Arif K |
| Imran Q |
| Asif |
| Zeeshan |
| Adnan |
| Farooq |
| Resource 1 |
| Resource 2 |
| DB Resource 1 |
| Naeem |
| Ayesha |
| AsimJ |
| Tauseef |
| Rabia |
| Arshad |

## Schedule

| ID | WBS | Task | Duration | Start | Finish | Predecessors | Total slack | Free slack | Constraint | Resources | Work | Text2 |
| --- | --- | --- | --- | --- | --- | --- | --- | --- | --- | --- | --- | --- |
| 1 | 1 | **Nexelus 14** | 122.58d? | 2022-04-25 | 2022-10-24 |  | 0d |  |  |  | 4790h |  |
| 2 | 1.1 | **Migration to Core** | 110.12d? | 2022-04-25 | 2022-10-05 |  | 0d |  |  |  | 2407h |  |
| 3 | 1.1.1 | **Development** | 103.38d? | 2022-04-25 | 2022-09-26 |  | 4.38d |  |  |  | 1631h |  |
| 4 | 1.1.1.1 | **Build 1** | 11.25d | 2022-04-25 | 2022-05-13 |  | 5.25d |  |  |  | 195h | Shoaib,Jawad |
| 5 | 1.1.1.1.1 | **Vendor Profile** | 11.25d | 2022-04-25 | 2022-05-13 |  | 12.31d | 0d |  |  | 60h |  |
| 6 | 1.1.1.1.1.1 | Dev | 11.25d | 2022-04-25 | 2022-05-13 |  | 12.31d |  |  | Zeeshan [50%] | 45h |  |
| 7 | 1.1.1.1.1.2 | DB | 4.69d | 2022-04-25 | 2022-04-29 |  | 16.88d | 0d |  | Arif K [40%] | 15h |  |
| 8 | 1.1.1.1.2 | **Expense Groups** | 10d | 2022-04-25 | 2022-05-11 |  | 16.25d | 0.75d |  |  | 95h |  |
| 9 | 1.1.1.1.2.1 | Dev | 10d | 2022-04-25 | 2022-05-11 |  | 16.25d |  |  | Adnan | 80h |  |
| 10 | 1.1.1.1.2.2 | DB | 4.69d | 2022-04-29 | 2022-05-11 | 7 | 16.88d |  |  | Arif K [40%] | 15h |  |
| 11 | 1.1.1.1.3 | **Schedule Billing and Estimation Billing for Level 1** | 3.12d | 2022-04-25 | 2022-04-28 |  | 5.25d | 0d |  |  | 25h |  |
| 12 | 1.1.1.1.3.1 | Dev | 1.88d | 2022-04-25 | 2022-04-26 |  | 5.25d | 0d |  | Farooq | 15h |  |
| 13 | 1.1.1.1.3.2 | DB | 3.12d | 2022-04-25 | 2022-04-28 |  | 103.25d |  |  | Arif K [40%] | 10h |  |
| 14 | 1.1.1.1.4 | **Delete file from Temp folders on new voucher etc** | 1.88d | 2022-04-26 | 2022-04-28 |  | 5.25d | 1.38d |  |  | 15h |  |
| 15 | 1.1.1.1.4.1 | Dev | 1.88d | 2022-04-26 | 2022-04-28 | 12 | 5.25d |  |  | Farooq | 15h |  |
| 16 | 1.1.1.2 | **Build 2** | 58.94d? | 2022-05-11 | 2022-08-04 |  | 18.19d |  |  |  | 137h |  |
| 17 | 1.1.1.2.1 | Display UI’s only if there is license for module | 2d | 2022-05-11 | 2022-05-12 |  | 66.75d | 1.75d | start no earlier than 2022-05-11 | Rabia | 16h |  |
| 18 | 1.1.1.2.2 | **Upload Transaction** | 16d? | 2022-07-08 | 2022-08-04 | 251 | 18.19d | 0d |  |  | 121h |  |
| 19 | 1.1.1.2.2.1 | UI | 2d | 2022-07-08 | 2022-07-15 |  | 32.19d |  |  | AsimJ [50%] | 7h |  |
| 20 | 1.1.1.2.2.2 | User Documentation | 6d | 2022-07-08 | 2022-07-21 | 108 | 18.19d | 0d |  | Zeeshan [50%] | 24h |  |
| 21 | 1.1.1.2.2.3 | Dev | 10d? | 2022-07-21 | 2022-08-04 | 20 | 18.19d |  |  | Zeeshan [50%] | 40h |  |
| 22 | 1.1.1.2.2.4 | DB | 6.25d? | 2022-07-08 | 2022-07-22 |  | 27.94d |  |  | Rabia | 50h |  |
| 23 | 1.1.1.3 | **Build 3** | 31.62d? | 2022-06-01 | 2022-07-19 |  | 21.88d |  |  |  | 418h |  |
| 24 | 1.1.1.3.1 | **Journal Entry** | 14.62d? | 2022-06-01 | 2022-06-21 |  | 21.88d | 0d |  |  | 132h |  |
| 25 | 1.1.1.3.1.1 | UI | 2.62d | 2022-06-01 | 2022-06-03 |  | 21.88d | 0d | start no earlier than 2022-06-01 | AsimJ | 16h |  |
| 26 | 1.1.1.3.1.2 | User Documentation | 2d | 2022-06-03 | 2022-06-07 | 25 | 21.88d | 0d |  | Resource 2 | 16h |  |
| 27 | 1.1.1.3.1.3 | Dev | 10d? | 2022-06-07 | 2022-06-21 | 26 | 21.88d |  |  | Resource 2 | 80h |  |
| 28 | 1.1.1.3.1.4 | DB | 2.5d? | 2022-06-07 | 2022-06-10 | 26 | 29.38d |  |  | Rabia | 20h |  |

| ID | WBS | Task | Duration | Start | Finish | Predecessors | Total slack | Free slack | Resources | Work |
| --- | --- | --- | --- | --- | --- | --- | --- | --- | --- | --- |
| 29 | 1.1.1.3.2 | **Setup Screens - UI** | 17d | 2022-06-21 | 2022-07-19 | 24 | 21.88d | 0d |  | 153h |
| 30 | 1.1.1.3.2.1 | UI | 2d | 2022-06-21 | 2022-06-23 |  | 36.88d |  | AsimJ [50%] | 7h |
| 31 | 1.1.1.3.2.2 | User Documentation | 2d | 2022-06-21 | 2022-06-23 |  | 21.88d | 0d | Resource 1 | 16h |
| 32 | 1.1.1.3.2.3 | Dev | 15d | 2022-06-23 | 2022-07-19 | 31 | 21.88d |  | Resource 1 | 120h |
| 33 | 1.1.1.3.2.4 | DB | 1.25d | 2022-06-21 | 2022-06-22 |  | 37.62d |  | Rabia | 10h |
| 34 | 1.1.1.3.3 | **Expense Type** | 14.5d? | 2022-06-21 | 2022-07-15 | 24 | 27.75d | 0d |  | 133h |
| 35 | 1.1.1.3.3.1 | UI | 2d | 2022-06-21 | 2022-06-23 |  | 40.25d |  | AsimJ [50%] | 7h |
| 36 | 1.1.1.3.3.2 | User Documentation | 2d | 2022-06-21 | 2022-06-23 |  | 27.75d | 0d | Resource 2 | 16h |
| 37 | 1.1.1.3.3.3 | Dev | 12.5d? | 2022-06-23 | 2022-07-15 | 36 | 27.75d |  | Resource 2 | 100h |
| 38 | 1.1.1.3.3.4 | DB | 3.12d? | 2022-06-21 | 2022-06-24 | 17 | 39.12d |  | Arif K [40%] | 10h |
| 39 | 1.1.1.4 | **Build 4** | 33.88d? | 2022-08-01 | 2022-09-19 |  | 0d |  |  | 388h |
| 40 | 1.1.1.4.1 | **Purchase Order** | 33.88d? | 2022-08-01 | 2022-09-19 | 247 | 0d |  |  | 308h |
| 41 | 1.1.1.4.1.1 | UI | 2d | 2022-08-01 | 2022-08-03 |  | 31.88d |  | AsimJ [50%] | 7h |
| 42 | 1.1.1.4.1.2 | User Documentation | 2.62d | 2022-08-01 | 2022-08-04 |  | 0d |  | Adnan | 16h |
| 43 | 1.1.1.4.1.3 | Dev | 31.25d? | 2022-08-04 | 2022-09-19 | 42 | 0d |  | Adnan | 250h |
| 44 | 1.1.1.4.1.4 | DB | 10.94d? | 2022-08-01 | 2022-08-17 |  | 22.94d |  | Arif K [40%] | 35h |
| 45 | 1.1.1.4.2 | **Restrict multiple login with single user.** | 10d? | 2022-08-16 | 2022-08-30 | 114 | 18.19d | 0d |  | 80h |
| 46 | 1.1.1.4.2.1 | Dev | 10d? | 2022-08-16 | 2022-08-30 |  | 18.19d |  | Zeeshan [50%] | 40h |
| 47 | 1.1.1.4.2.2 | DB | 6.25d? | 2022-08-16 | 2022-08-25 | 132 | 21.94d |  | Arif K [80%] | 40h |
| 48 | 1.1.1.5 | **Build 5** | 50.25d? | 2022-07-15 | 2022-09-26 |  | 4.38d |  |  | 493h |
| 49 | 1.1.1.5.1 | **Update Transaction** | 9.5d? | 2022-09-06 | 2022-09-20 | 254 | 6.62d | 0d |  | 134h |
| 50 | 1.1.1.5.1.1 | UI | 2d | 2022-09-06 | 2022-09-08 |  | 14.12d |  | AsimJ [50%] | 8h |
| 51 | 1.1.1.5.1.2 | User Documentation | 2d | 2022-09-06 | 2022-09-08 |  | 6.62d | 0d | Farooq | 16h |
| 52 | 1.1.1.5.1.3 | Dev | 7.5d? | 2022-09-08 | 2022-09-20 | 51 | 6.62d |  | Farooq | 60h |
| 53 | 1.1.1.5.1.4 | DB | 6.25d? | 2022-09-06 | 2022-09-14 |  | 9.88d |  | Rabia | 50h |

| ID | WBS | Task | Duration | Start | Finish | Predecessors | Total slack | Free slack | Resources | Work |
| --- | --- | --- | --- | --- | --- | --- | --- | --- | --- | --- |
| 54 | 1.1.1.5.2 | **Resource Transaction Entry** | 17d? | 2022-07-29 | 2022-08-24 | 29, 117 | 21.88d | 0d |  | 162h |
| 55 | 1.1.1.5.2.1 | UI | 2.62d | 2022-07-29 | 2022-08-03 |  | 36.25d |  | AsimJ | 16h |
| 56 | 1.1.1.5.2.2 | User Documentation | 2d | 2022-07-29 | 2022-08-02 |  | 21.88d | 0d | Resource 1 | 16h |
| 57 | 1.1.1.5.2.3 | Dev | 15d? | 2022-08-02 | 2022-08-24 | 56 | 21.88d | 5d | Resource 1 | 120h |
| 58 | 1.1.1.5.2.4 | DB | 1.25d? | 2022-07-29 | 2022-08-01 |  | 37.62d |  | DB Resource 1 | 10h |
| 59 | 1.1.1.5.3 | **Expense Transaction Entry** | 21d? | 2022-07-15 | 2022-08-16 | 34 | 27.75d | 0d |  | 157h |
| 60 | 1.1.1.5.3.1 | UI | 3d | 2022-07-15 | 2022-07-21 |  | 27.75d | 0d | AsimJ [50%] | 11h |
| 61 | 1.1.1.5.3.2 | User Documentation | 2d | 2022-07-21 | 2022-07-25 | 60 | 27.75d | 0d | Resource 2 | 16h |
| 62 | 1.1.1.5.3.3 | Dev | 15d? | 2022-07-25 | 2022-08-16 | 61 | 27.75d | 0d | Resource 2 | 120h |
| 63 | 1.1.1.5.3.4 | DB | 3.12d? | 2022-07-15 | 2022-07-20 |  | 46.38d |  | DB Resource 1 [40%] | 10h |
| 64 | 1.1.1.5.4 | **Report Server Migration to 2016 version.** | 5d | 2022-09-19 | 2022-09-26 | 40 | 4.38d | 0d |  | 40h |
| 65 | 1.1.1.5.4.1 | Dev | 5d | 2022-09-19 | 2022-09-26 |  | 4.38d | 0d | Adnan | 40h |
| 66 | 1.1.2 | **QA** | 105.25d | 2022-04-25 | 2022-09-28 |  | 4.88d |  |  | 523h |
| 67 | 1.1.2.1 | **Test Case writing from Build 1-5** | 10.75d | 2022-04-25 | 2022-05-12 |  | 15.5d |  |  | 165h |
| 68 | 1.1.2.1.1 | Expense Groups | 1d | 2022-04-25 | 2022-04-25 |  | 15.5d | 0d | Ayesha | 8h |
| 69 | 1.1.2.1.2 | Restrict multiple login with single user. | 1d | 2022-04-26 | 2022-04-26 | 68 | 15.5d | 0d | Ayesha | 8h |
| 70 | 1.1.2.1.3 | Post Voucher | 1.5d | 2022-04-27 | 2022-04-28 | 69 | 15.5d | 0d | Ayesha | 12h |
| 71 | 1.1.2.1.4 | Journal Entry | 1.25d | 2022-04-28 | 2022-04-29 | 70 | 15.5d | 0d | Ayesha | 10h |
| 72 | 1.1.2.1.5 | Expense Type | 1d | 2022-04-29 | 2022-05-05 | 71 | 15.5d | 0d | Ayesha | 8h |
| 73 | 1.1.2.1.6 | Resource Transaction Entry | 2d | 2022-05-05 | 2022-05-09 | 72 | 15.5d | 0d | Ayesha | 16h |
| 74 | 1.1.2.1.7 | Upload Transaction | 2d | 2022-05-09 | 2022-05-11 | 73 | 15.5d | 0d | Ayesha | 16h |
| 75 | 1.1.2.1.8 | Display UI’s only if there is license for module | 1d | 2022-05-11 | 2022-05-12 | 74 | 15.5d | 0d | Ayesha | 8h |
| 76 | 1.1.2.1.9 | Purchase Order | 1.5d | 2022-04-25 | 2022-04-26 |  | 100.25d | 0d | Naeem | 12h |
| 77 | 1.1.2.1.10 | GL Ditribution | 1d | 2022-04-26 | 2022-04-27 | 76 | 100.25d | 0d | Naeem | 8h |
| 78 | 1.1.2.1.11 | Setup Screens - UI | 1d | 2022-04-27 | 2022-04-28 | 77 | 100.25d | 0d | Naeem | 8h |
| 79 | 1.1.2.1.12 | Vendor Profile | 1d | 2022-04-28 | 2022-04-29 | 78 | 100.25d | 0d | Naeem | 8h |
| 80 | 1.1.2.1.13 | Schedule Billing and Estimation Billing for Level 1 | 1d | 2022-04-29 | 2022-05-05 | 79 | 100.25d | 0d | Naeem | 8h |
| 81 | 1.1.2.1.14 | Report Server Migration to 2016 version. | 1d | 2022-05-05 | 2022-05-06 | 80 | 100.25d | 0d | Naeem | 8h |
| 82 | 1.1.2.1.15 | Delete file from Temp folders on new voucher etc | 0.12d | 2022-05-06 | 2022-05-06 | 81 | 100.25d | 0d | Naeem | 1h |
| 83 | 1.1.2.1.16 | Expense Transaction Entry | 1.25d | 2022-05-06 | 2022-05-09 | 82 | 100.25d | 0d | Naeem | 10h |
| 84 | 1.1.2.1.17 | Post Transaction | 1d | 2022-05-09 | 2022-05-10 | 83 | 100.25d | 0d | Naeem | 8h |
| 85 | 1.1.2.1.18 | Update Transaction | 1d | 2022-05-10 | 2022-05-11 | 84 | 100.25d |  | Naeem | 8h |

| ID | WBS | Task | Duration | Start | Finish | Predecessors | Total slack | Free slack | Resources | Work | Text2 |
| --- | --- | --- | --- | --- | --- | --- | --- | --- | --- | --- | --- |
| 86 | 1.1.2.2 | **Build 1** | 9.62d | 2022-04-28 | 2022-05-16 |  | 20.44d |  |  | 48h | Shoaib,Jawad |
| 87 | 1.1.2.2.1 | Vendor Profile | 1.5d | 2022-05-13 | 2022-05-16 | 5 | 12.31d | 0d | Naeem | 12h |  |
| 88 | 1.1.2.2.2 | Expense Groups | 2d | 2022-05-12 | 2022-05-16 | 8, 75 | 15.5d | 0d | Ayesha | 16h |  |
| 89 | 1.1.2.2.3 | Schedule Billing and Estimation Billing for Level 1 | 2d | 2022-04-28 | 2022-05-05 | 11 | 103.25d | 0d | Asif | 16h |  |
| 90 | 1.1.2.2.4 | Delete file from Temp folders on new voucher etc | 0.5d | 2022-05-05 | 2022-05-05 | 14, 89 | 104.25d | 1d | Asif | 4h |  |
| 91 | 1.1.2.3 | **Build 2** | 58.19d | 2022-05-16 | 2022-08-10 |  | 38.56d |  |  | 32h |  |
| 92 | 1.1.2.3.1 | Display UI’s only if there is license for module | 1d | 2022-05-16 | 2022-05-17 | 17, 88 | 95.75d | 0d | Ayesha | 8h |  |
| 93 | 1.1.2.3.2 | Upload Transaction | 3d | 2022-08-04 | 2022-08-10 | 18 | 18.19d | 0d | Ayesha | 24h |  |
| 94 | 1.1.2.4 | **Build 3** | 22.62d | 2022-06-21 | 2022-07-27 |  | 38.88d |  |  | 85h |  |
| 95 | 1.1.2.4.1 | Journal Entry | 5d | 2022-06-21 | 2022-06-28 | 24 | 58.25d | 30.5d | Ayesha | 40h |  |
| 96 | 1.1.2.4.2 | Setup Screens - UI | 4.38d | 2022-07-19 | 2022-07-25 | 29 | 21.88d | 0d | Ayesha | 35h |  |
| 97 | 1.1.2.4.3 | Expense Type | 1.25d | 2022-07-26 | 2022-07-27 | 34, 96 | 44.38d | 16.62d | Ayesha | 10h |  |
| 98 | 1.1.2.5 | **Build 4** | 19.69d | 2022-08-30 | 2022-09-27 |  | 1.5d |  |  | 74h |  |
| 99 | 1.1.2.5.1 | Purchase Order | 6.25d | 2022-09-19 | 2022-09-27 | 40 | 0d |  | Asif | 50h |  |
| 100 | 1.1.2.5.2 | Restrict multiple login with single user. | 3d | 2022-08-30 | 2022-09-02 | 45 | 18.19d | 0d | Naeem | 24h |  |
| 101 | 1.1.2.6 | **Build 5** | 31.12d | 2022-08-16 | 2022-09-28 |  | 4.38d |  |  | 119h |  |
| 102 | 1.1.2.6.1 | Update Transaction | 3d | 2022-09-20 | 2022-09-23 | 49 | 6.62d | 1.12d | Naeem | 24h |  |
| 103 | 1.1.2.6.2 | Resource Transaction Entry | 5d | 2022-08-24 | 2022-08-31 | 54 | 21.88d | 0d | Ayesha | 40h |  |
| 104 | 1.1.2.6.3 | Expense Transaction Entry | 5d | 2022-08-16 | 2022-08-23 | 59, 95 | 28.5d | 0.75d | Naeem | 40h |  |
| 105 | 1.1.2.6.4 | Report Server Migration to 2016 version. | 1.88d | 2022-09-26 | 2022-09-28 | 64 | 4.38d |  | Naeem | 15h |  |
| 106 | 1.1.3 | **Bug Fixing** | 105d | 2022-05-05 | 2022-10-05 |  | 0d |  |  | 253h |  |
| 107 | 1.1.3.1 | **Build 1** | 11.62d | 2022-05-05 | 2022-05-20 |  | 19.94d |  |  | 46h | Shoaib,Jawad |
| 108 | 1.1.3.1.1 | Vendor Profile | 4d | 2022-05-16 | 2022-05-20 | 87 | 12.31d | 0d | Zeeshan [50%] | 16h |  |
| 109 | 1.1.3.1.2 | Expense Groups | 2d | 2022-05-16 | 2022-05-18 | 88 | 15.5d |  | Adnan | 16h |  |
| 110 | 1.1.3.1.3 | Schedule Billing and Estimation Billing for Level 1 | 1.5d | 2022-05-05 | 2022-05-06 | 89 | 103.25d | 0d | Farooq | 12h |  |
| 111 | 1.1.3.1.4 | Delete file from Temp folders on new voucher etc | 0.25d | 2022-05-06 | 2022-05-06 | 90, 110 | 103.25d |  | Farooq | 2h |  |

| ID | WBS | Task | Type | Duration | Start | Finish | Predecessors | Total slack | Free slack | Constraint | Resources | Work |
| --- | --- | --- | --- | --- | --- | --- | --- | --- | --- | --- | --- | --- |
| 112 | 1.1.3.2 | **Build 2** |  | 61.19d | 2022-05-17 | 2022-08-16 |  | 35.19d |  |  |  | 21h |
| 113 | 1.1.3.2.1 | Display UI’s only if there is license for module |  | 0.62d | 2022-05-17 | 2022-05-18 | 92 | 95.75d |  |  | Rabia | 5h |
| 114 | 1.1.3.2.2 | Upload Transaction |  | 4d | 2022-08-10 | 2022-08-16 | 93 | 18.19d | 0d |  | Zeeshan [50%] | 16h |
| 115 | 1.1.3.3 | **Build 3** |  | 19.88d | 2022-07-26 | 2022-08-23 |  | 21.88d |  |  |  | 76h |
| 116 | 1.1.3.3.1 | Journal Entry |  | 3.75d | 2022-08-16 | 2022-08-19 | 95, 62 | 27.75d | 0d |  | Resource 2 | 30h |
| 117 | 1.1.3.3.2 | Setup Screens - UI |  | 3.75d | 2022-07-26 | 2022-07-29 | 96 | 21.88d | 0d |  | Resource 1 | 30h |
| 118 | 1.1.3.3.3 | Expense Type |  | 2d | 2022-08-19 | 2022-08-23 | 97, 116 | 27.75d | 0d |  | Resource 2 | 16h |
| 119 | 1.1.3.4 | **Build 4** |  | 21.69d | 2022-09-02 | 2022-10-04 |  | 0.5d |  |  |  | 56h |
| 120 | 1.1.3.4.1 | Purchase Order |  | 5d | 2022-09-27 | 2022-10-04 | 99 | 0d |  |  | Adnan | 40h |
| 121 | 1.1.3.4.2 | Restrict multiple login with single user. |  | 4d | 2022-09-02 | 2022-09-08 | 100 | 18.19d |  |  | Zeeshan [50%] | 16h |
| 122 | 1.1.3.5 | **Build 5** |  | 30.25d | 2022-08-23 | 2022-10-05 |  | 0d |  |  |  | 54h |
| 123 | 1.1.3.5.1 | Update Transaction |  | 1.25d | 2022-09-26 | 2022-09-27 | 102, 65 | 5.5d |  |  | Farooq | 10h |
| 124 | 1.1.3.5.2 | Resource Transaction Entry |  | 2.5d | 2022-08-31 | 2022-09-05 | 103, 57 | 21.88d |  |  | Resource 1 | 20h |
| 125 | 1.1.3.5.3 | Expense Transaction Entry |  | 2.5d | 2022-08-23 | 2022-08-26 | 104, 118 | 27.75d |  |  | Resource 2 | 20h |
| 126 | 1.1.3.5.4 | Report Server Migration to 2016 version. |  | 0.5d | 2022-10-04 | 2022-10-05 | 105, 120 | 0d |  |  | Adnan | 4h |
| 127 | 1.2 | **Optimization UI** |  | 97.12d? | 2022-04-25 | 2022-09-16 |  | 9d |  |  |  | 2051h |
| 128 | 1.2.1 | **Development** |  | 80.88d? | 2022-04-25 | 2022-08-24 |  | 9d |  |  |  | 1260h |
| 129 | 1.2.1.1 | Prototype and Requiement Finalizatiion | milestone | 0d? | 2022-04-25 | 2022-04-25 |  | 110.12d |  |  | Imran Q |  |
| 130 | 1.2.1.2 | Media Training for Adnan and Zeeshan |  | 1d | 2022-05-13 | 2022-05-13 |  | 17.06d | 4.75d | start no earlier than 2022-05-13 | Tauseef | 6h |
| 131 | 1.2.1.3 | Media Review |  | 1d | 2022-05-20 | 2022-05-23 | 130, 108 | 12.31d | 0d |  | Adnan; Zeeshan | 16h |
| 132 | 1.2.1.4 | **Build 1 - UI Chnages, Site Editing** |  | 17d? | 2022-05-11 | 2022-06-02 | 15 | 0d |  |  |  | 136h |
| 133 | 1.2.1.4.1 | Resolve UI and CSS issues |  | 2.5d | 2022-05-11 | 2022-05-13 |  | 0d |  | start no earlier than 2022-05-11 | Farooq | 20h |
| 134 | 1.2.1.4.2 | Buttons and label addition |  | 0.31d | 2022-05-13 | 2022-05-13 | 133 | 0d |  |  | Farooq | 2.5h |
| 135 | 1.2.1.4.3 | Media Plan Changes |  | 0.62d | 2022-05-13 | 2022-05-16 | 134 | 0d |  |  | Farooq | 5h |
| 136 | 1.2.1.4.4 | Back implementation Optimization |  | 0.31d | 2022-05-16 | 2022-05-16 | 135 | 0d |  |  | Farooq | 2.5h |
| 137 | 1.2.1.4.5 | Vendor Lookup (edit and delete) |  | 3.75d | 2022-05-16 | 2022-05-20 | 136 | 0d |  |  | Farooq | 30h |
| 138 | 1.2.1.4.6 | Add mapping lookup |  | 1.25d | 2022-05-20 | 2022-05-23 | 137 | 0d |  |  | Farooq | 10h |
| 139 | 1.2.1.4.7 | DB save call for vendor edit, add |  | 2.5d | 2022-05-23 | 2022-05-26 | 138 | 0d |  |  | Farooq | 20h |
| 140 | 1.2.1.4.8 | Refresh Sites from IPC call |  | 5d | 2022-05-26 | 2022-06-02 | 139 | 0d |  |  | Farooq | 40h |
| 141 | 1.2.1.4.9 | Add Media Plan Name, Revision and Rule descrrption on top of UI |  | 0.75d? | 2022-06-02 | 2022-06-02 | 140 | 0d |  | start no earlier than 2022-05-11 | Farooq | 6h |

| ID | WBS | Task | Duration | Start | Finish | Predecessors | Total slack | Free slack | Constraint | Resources | Work |
| --- | --- | --- | --- | --- | --- | --- | --- | --- | --- | --- | --- |
| 142 | 1.2.1.5 | **Build 2 - Placement Editing** | 65.62d? | 2022-05-11 | 2022-08-16 |  | 13d |  |  |  | 420h |
| 143 | 1.2.1.5.1 | **Build 2A - Placement Grid, Package/Placement** | 18.12d? | 2022-05-11 | 2022-06-06 |  | 13d |  |  |  | 116h |
| 144 | 1.2.1.5.1.1 | **Placement grid** | 11.88d? | 2022-05-11 | 2022-05-26 |  | 13d | 0d |  |  | 76h |
| 145 | 1.2.1.5.1.1.1 | Data Loading | 2.5d? | 2022-05-11 | 2022-05-13 |  | 13d | 0d | start no earlier than 2022-05-11 | Imran Q [80%] | 16h |
| 146 | 1.2.1.5.1.1.2 | Selection of Rows and validation | 3.12d? | 2022-05-13 | 2022-05-18 | 145 | 13d | 0d |  | Imran Q [80%] | 20h |
| 147 | 1.2.1.5.1.1.3 | Indenting data | 3.75d? | 2022-05-18 | 2022-05-24 | 146 | 13d | 0d |  | Imran Q [80%] | 24h |
| 148 | 1.2.1.5.1.1.4 | AdTech Lookup - Readonly | 2.5d? | 2022-05-24 | 2022-05-26 | 147 | 13d |  |  | Imran Q [80%] | 16h |
| 149 | 1.2.1.5.1.2 | Copy / Paste Placement / Package. Copy as Link Placement | 3.75d | 2022-05-26 | 2022-06-01 | 144 | 13d | 0d |  | Imran Q [80%] | 24h |
| 150 | 1.2.1.5.1.3 | Delete Lines | 2.5d? | 2022-06-01 | 2022-06-06 | 149 | 13d | 0d |  | Imran Q [80%] | 16h |
| 151 | 1.2.1.5.2 | **Build 2B - Packgae/Placement** | 47.5d? | 2022-06-06 | 2022-08-16 |  | 13d |  |  |  | 304h |
| 152 | 1.2.1.5.2.1 | **Package/placement** | 38.75d? | 2022-06-06 | 2022-08-02 |  | 13d | 3.5d |  |  | 248h |
| 153 | 1.2.1.5.2.1.1 | Core Attributes | 6.25d? | 2022-06-06 | 2022-06-14 | 150 | 13d | 0d |  | Imran Q [80%] | 40h |
| 154 | 1.2.1.5.2.1.2 | Ad Tech and Dimension Drop Downs | 6.25d? | 2022-06-14 | 2022-06-22 | 153 | 13d | 0d |  | Imran Q [80%] | 40h |
| 155 | 1.2.1.5.2.1.3 | Placement Linkage with Export to DCM | 6.25d? | 2022-06-22 | 2022-06-30 | 154 | 13d | 0d |  | Imran Q [80%] | 40h |
| 156 | 1.2.1.5.2.1.4 | Sizmek and DCM Attributes | 6.25d? | 2022-06-30 | 2022-07-14 | 155 | 13d | 0d |  | Imran Q [80%] | 40h |
| 157 | 1.2.1.5.2.1.5 | Custom Fields | 6.25d? | 2022-07-14 | 2022-07-22 | 156 | 13d | 0d |  | Imran Q [80%] | 40h |
| 158 | 1.2.1.5.2.1.6 | Add/Edit Placement / Package. | 6.25d | 2022-07-22 | 2022-08-01 | 157 | 13d | 0d |  | Imran Q [80%] | 40h |
| 159 | 1.2.1.5.2.1.7 | Delete Placement /Package | 1.25d | 2022-08-01 | 2022-08-02 | 158 | 13d | 0d |  | Imran Q [80%] | 8h |
| 160 | 1.2.1.5.2.2 | Save, cancel | 2.5d | 2022-08-02 | 2022-08-05 | 159 | 13d | 0d |  | Imran Q [80%] | 16h |
| 161 | 1.2.1.5.2.3 | Reset changes placement | 1.25d | 2022-08-05 | 2022-08-09 | 160 | 13d | 0d |  | Imran Q [80%] | 8h |
| 162 | 1.2.1.5.2.4 | Calculate and split placement data based on Period | 5d | 2022-08-09 | 2022-08-16 | 161 | 13d | 0d | start no earlier than 2022-05-11 | Imran Q [80%] | 32h |
| 163 | 1.2.1.6 | **Build 3 - Media Plan Revision, Client Schedule** | 16.62d | 2022-08-01 | 2022-08-24 |  | 6.62d |  |  |  | 90h |
| 164 | 1.2.1.6.1 | Generate Media Plan revision with Optimized Vendor Placements | 2.5d | 2022-08-16 | 2022-08-19 | 162 | 13d | 0d |  | Imran Q [80%] | 16h |
| 165 | 1.2.1.6.2 | Generate Client Schedule | 3.75d | 2022-08-19 | 2022-08-24 | 164 | 13d | 0d |  | Imran Q [80%] | 24h |
| 166 | 1.2.1.6.3 | Summary Page Model for all Revisions | 6.25d | 2022-08-01 | 2022-08-10 | 182 | 6.62d | 0d |  | Farooq | 50h |

| ID | WBS | Task | Duration | Start | Finish | Predecessors | Total slack | Free slack | Resources | Work |
| --- | --- | --- | --- | --- | --- | --- | --- | --- | --- | --- |
| 167 | 1.2.1.7 | **Build 4 - Import, Export, eSignature** | 17d | 2022-06-09 | 2022-07-04 | 224 | 0d |  |  | 264h |
| 168 | 1.2.1.7.1 | Import lookup, Import export buttons, with import file selection | 2d | 2022-06-09 | 2022-06-13 | 131, 109 | 0d |  | Adnan | 16h |
| 169 | 1.2.1.7.2 | Import / Export Placements. | 15d | 2022-06-13 | 2022-07-04 | 168 | 0d |  | Adnan | 120h |
| 170 | 1.2.1.7.3 | Approval Process Changes | 5d | 2022-06-09 | 2022-06-16 | 141 | 6.62d | 0d | Farooq | 40h |
| 171 | 1.2.1.7.4 | Grouping and print selection | 4d | 2022-06-16 | 2022-06-22 | 170 | 6.62d | 0d | Farooq | 32h |
| 172 | 1.2.1.7.5 | IO Approval Changes | 5d | 2022-06-22 | 2022-06-29 | 171 | 6.62d | 0d | Farooq | 40h |
| 173 | 1.2.1.7.6 | Checks for approval by vendor | 2d | 2022-06-29 | 2022-07-01 | 172 | 6.62d | 0d | Farooq | 16h |
| 174 | 1.2.1.8 | **Build 5 - BO, Trade Desk** | 9d | 2022-07-01 | 2022-07-19 |  | 1d |  |  | 128h |
| 175 | 1.2.1.8.1 | Bo Revision | 8d | 2022-07-01 | 2022-07-18 | 173 | 6.62d | 0d | Farooq | 64h |
| 176 | 1.2.1.8.2 | Trade Desk | 8d | 2022-07-04 | 2022-07-19 | 169 | 0d |  | Adnan | 64h |
| 177 | 1.2.1.9 | **Build 6 - Ad Server Revisions** | 46.31d | 2022-05-23 | 2022-08-01 |  | 6.62d |  |  | 200h |
| 178 | 1.2.1.9.1 | Facebook | 10d | 2022-05-23 | 2022-06-06 | 131 | 18.19d | 0d | Zeeshan [50%] | 40h |
| 179 | 1.2.1.9.2 | MicroSoft Ads | 10d | 2022-06-06 | 2022-06-20 | 178 | 18.19d | 0d | Zeeshan [50%] | 40h |
| 180 | 1.2.1.9.3 | Yahoo | 10d | 2022-06-20 | 2022-07-04 | 179 | 18.19d | 0d | Zeeshan [50%] | 40h |
| 181 | 1.2.1.9.4 | Twitter | 5d | 2022-07-18 | 2022-07-25 | 175 | 6.62d | 0d | Farooq | 40h |
| 182 | 1.2.1.9.5 | DV 360 | 5d | 2022-07-25 | 2022-08-01 | 181 | 6.62d | 0d | Farooq | 40h |
| 183 | 1.2.2 | **QA** | 63d | 2022-05-26 | 2022-08-29 |  | 5.12d |  |  | 411h |
| 184 | 1.2.2.1 | **Build 1** | 2.25d | 2022-06-03 | 2022-06-07 | 132 | 0d |  |  | 18h |
| 185 | 1.2.2.1.1 | Buttons and label addition | 0.06d | 2022-06-03 | 2022-06-03 | 134 | 0d |  | Asif | 0.5h |
| 186 | 1.2.2.1.2 | Media Plan Changes | 0.06d | 2022-06-03 | 2022-06-03 | 135, 185 | 0d |  | Asif | 0.5h |
| 187 | 1.2.2.1.3 | Back implementation Optimization | 0.12d | 2022-06-03 | 2022-06-03 | 136, 186 | 0d |  | Asif | 1h |
| 188 | 1.2.2.1.4 | Vendor Lookup (edit and delete) | 0.5d | 2022-06-03 | 2022-06-03 | 137, 187 | 0d |  | Asif | 4h |
| 189 | 1.2.2.1.5 | Add mapping lookup | 0.5d | 2022-06-03 | 2022-06-06 | 138, 188 | 0d |  | Asif | 4h |
| 190 | 1.2.2.1.6 | Refresh Sites from IPC call | 1d | 2022-06-06 | 2022-06-07 | 140, 189 | 0d |  | Asif | 8h |

| ID | WBS | Task | Duration | Start | Finish | Predecessors | Total slack | Free slack | Constraint | Resources | Work |
| --- | --- | --- | --- | --- | --- | --- | --- | --- | --- | --- | --- |
| 191 | 1.2.2.2 | **Build 2** | 58.5d | 2022-05-26 | 2022-08-23 |  | 26.06d |  |  |  | 104h |
| 192 | 1.2.2.2.1 | Placement grid | 2d | 2022-05-26 | 2022-05-30 | 144 | 70.31d | 45.5d |  | Bilal | 16h |
| 193 | 1.2.2.2.2 | Save, cancel | 1d | 2022-08-05 | 2022-08-09 | 160, 192 | 24.81d | 0d |  | Asif | 8h |
| 194 | 1.2.2.2.3 | Package/placement PopUp | 3.75d | 2022-08-09 | 2022-08-15 | 152, 193 | 24.81d | 0d |  | Asif | 30h |
| 195 | 1.2.2.2.4 | Ad tech look up under placement | 1d | 2022-08-15 | 2022-08-16 | 194 | 26.06d | 0d |  | Bilal | 8h |
| 196 | 1.2.2.2.5 | Add Placement / Package. | 3d | 2022-08-16 | 2022-08-19 | 158, 195 | 26.06d | 0d |  | Bilal | 24h |
| 197 | 1.2.2.2.6 | Delete Placement /Package | 0.25d | 2022-08-19 | 2022-08-19 | 159, 196 | 26.06d | 0d |  | Bilal | 2h |
| 198 | 1.2.2.2.7 | Copy / Paste Placement / Package. Copy as Link Placement | 2d | 2022-08-19 | 2022-08-23 | 149, 197 | 26.06d | 13.06d |  | Bilal | 16h |
| 199 | 1.2.2.3 | **Build 3** | 36.62d | 2022-07-04 | 2022-08-29 | 184 | 0.5d |  |  |  | 118h |
| 200 | 1.2.2.3.1 | Generate Media Plan revision with Optimized Vendor Placements | 3d | 2022-08-19 | 2022-08-24 | 164 | 26.25d | 13.25d |  | Asif | 24h |
| 201 | 1.2.2.3.2 | Generate Client Schedule | 3d | 2022-08-24 | 2022-08-29 | 165 | 23.75d | 10.75d |  | Asif | 24h |
| 202 | 1.2.2.3.3 | Import / Export Placements. | 7.5d | 2022-07-04 | 2022-07-18 | 169 | 0.5d |  |  | Asif | 60h |
| 203 | 1.2.2.3.4 | Summary Page Model for all Revisions - New page at end of complete process | 1.25d | 2022-08-10 | 2022-08-11 | 166 | 38.38d |  |  | Bilal | 10h |
| 204 | 1.2.2.4 | **Build 4** | 11.75d | 2022-06-16 | 2022-07-01 |  | 35.38d |  |  |  | 32h |
| 205 | 1.2.2.4.1 | Approval Process Changes | 1d | 2022-06-16 | 2022-06-17 | 170 | 40.88d | 34.25d |  | Naeem | 8h |
| 206 | 1.2.2.4.2 | Grouping and print selection | 0.25d | 2022-06-22 | 2022-06-22 | 171 | 40.12d | 33.5d |  | Naeem | 2h |
| 207 | 1.2.2.4.3 | IO Approval Changes | 2.5d | 2022-06-29 | 2022-07-01 | 172 | 33.12d | 0d |  | Naeem | 20h |
| 208 | 1.2.2.4.4 | Checks for approval by vendor | 0.25d | 2022-07-01 | 2022-07-01 | 173, 207 | 35.38d | 28.75d |  | Naeem | 2h |
| 209 | 1.2.2.5 | **Build 5** | 9.5d | 2022-07-06 | 2022-07-22 |  | 9.75d |  |  |  | 110h |
| 210 | 1.2.2.5.1 | Bo Revision | 2.5d | 2022-07-18 | 2022-07-20 | 175 | 53.38d |  |  | Bilal | 20h |
| 211 | 1.2.2.5.2 | Trade Desk | 1.75d | 2022-07-19 | 2022-07-20 | 176 | 3.5d |  |  | Bilal | 14h |
| 212 | 1.2.2.5.3 | **Optimizaion Verification wih Rules (Verification of Previous Build)** | 9.5d | 2022-07-06 | 2022-07-22 |  | 51.62d |  |  |  | 76h |
| 213 | 1.2.2.5.3.1 | Rule 1 | 1.25d | 2022-07-06 | 2022-07-07 |  | 51.62d | 0d | start no earlier than 2022-07-06 | Bilal | 10h |
| 214 | 1.2.2.5.3.2 | Rule 2 | 2.5d | 2022-07-07 | 2022-07-14 | 213 | 51.62d | 0d |  | Bilal | 20h |
| 215 | 1.2.2.5.3.3 | Rule 3 | 3.75d | 2022-07-14 | 2022-07-20 | 214 | 51.62d | 0d |  | Bilal | 30h |
| 216 | 1.2.2.5.3.4 | Mannual Optimize | 2d | 2022-07-20 | 2022-07-22 | 215 | 51.62d |  |  | Bilal | 16h |

| ID | WBS | Task | Duration | Start | Finish | Predecessors | Total slack | Free slack | Resources | Work |
| --- | --- | --- | --- | --- | --- | --- | --- | --- | --- | --- |
| 217 | 1.2.2.6 | **Build 6** | 36.94d | 2022-06-06 | 2022-08-01 |  | 23d |  |  | 29h |
| 218 | 1.2.2.6.1 | Facebook | 0.75d | 2022-06-06 | 2022-06-07 | 178 | 37.44d | 19.25d | Bilal | 6h |
| 219 | 1.2.2.6.2 | MicroSoft Ads | 1d | 2022-06-20 | 2022-06-21 | 179 | 28.19d | 10d | Bilal | 8h |
| 220 | 1.2.2.6.3 | Yahoo | 0.62d | 2022-07-04 | 2022-07-05 | 180 | 19.56d | 1.38d | Bilal | 5h |
| 221 | 1.2.2.6.4 | Twitter | 0.62d | 2022-07-25 | 2022-07-25 | 181 | 26.75d | 20.12d | Bilal | 5h |
| 222 | 1.2.2.6.5 | DV 360 | 0.62d | 2022-08-01 | 2022-08-01 | 182 | 23d | 16.38d | Bilal | 5h |
| 223 | 1.2.3 | **Bug Fixing** | 68.88d | 2022-06-07 | 2022-09-16 |  | 0d |  |  | 380h |
| 224 | 1.2.3.1 | Build 1 | 2d | 2022-06-07 | 2022-06-09 | 184 | 0d |  | Farooq | 16h |
| 225 | 1.2.3.2 | **Build 2** | 12.5d | 2022-08-24 | 2022-09-12 |  | 13d |  |  | 80h |
| 226 | 1.2.3.2.1 | Placement grid | 3.75d | 2022-08-24 | 2022-08-30 | 165 | 13d | 0d | Imran Q [80%] | 24h |
| 227 | 1.2.3.2.2 | Save, cancel | 0.31d | 2022-08-30 | 2022-08-30 | 193, 226 | 13d | 0d | Imran Q [80%] | 2h |
| 228 | 1.2.3.2.3 | Package/placement PopUp | 5d | 2022-08-30 | 2022-09-06 | 194, 227 | 13d | 0d | Imran Q [80%] | 32h |
| 229 | 1.2.3.2.4 | View Change Log | 0.31d | 2022-09-06 | 2022-09-07 | 228 | 13d | 0d | Imran Q [80%] | 2h |
| 230 | 1.2.3.2.5 | Ad tech look up under placement | 0.62d | 2022-09-07 | 2022-09-07 | 195, 229 | 13d | 0d | Imran Q [80%] | 4h |
| 231 | 1.2.3.2.6 | Add Placement / Package. | 1.25d | 2022-09-07 | 2022-09-09 | 196, 230 | 13d | 0d | Imran Q [80%] | 8h |
| 232 | 1.2.3.2.7 | Delete Placement /Package | 0.31d | 2022-09-09 | 2022-09-09 | 197, 231 | 13d | 0d | Imran Q [80%] | 2h |
| 233 | 1.2.3.2.8 | Copy / Paste Placement / Package. Copy as Link Placement | 0.94d | 2022-09-09 | 2022-09-12 | 198, 232 | 13d | 0d | Imran Q [80%] | 6h |
| 234 | 1.2.3.3 | **Build 3** | 14.62d | 2022-08-26 | 2022-09-16 |  | 6.62d |  |  | 32h |
| 235 | 1.2.3.3.1 | Generate Media Plan revision with Optimized Vendor Placements | 1.25d | 2022-09-12 | 2022-09-13 | 200, 233 | 13d | 0d | Imran Q [80%] | 8h |
| 236 | 1.2.3.3.2 | Generate Client Schedule | 2.5d | 2022-09-13 | 2022-09-16 | 201, 235 | 13d |  | Imran Q [80%] | 16h |
| 237 | 1.2.3.3.3 | Summary Page Model for all Revisions | 1d | 2022-08-26 | 2022-08-29 | 244, 253 | 6.62d | 0d | Farooq | 8h |
| 238 | 1.2.3.4 | **Build 4** | 20.75d | 2022-07-19 | 2022-08-17 |  | 0d |  |  | 86h |
| 239 | 1.2.3.4.1 | Import lookup, Import export buttons, with import file selection | 1.25d | 2022-07-19 | 2022-07-20 | 202, 176 | 0d |  | Adnan | 10h |
| 240 | 1.2.3.4.2 | Import / Export Placements. | 4d | 2022-07-20 | 2022-07-26 | 239 | 0d |  | Adnan | 32h |
| 241 | 1.2.3.4.3 | Approval Process Changes | 2.5d | 2022-08-10 | 2022-08-12 | 205, 166 | 6.62d | 0d | Farooq | 20h |
| 242 | 1.2.3.4.4 | Grouping and print selection | 0.25d | 2022-08-15 | 2022-08-15 | 206, 241 | 6.62d | 0d | Farooq | 2h |
| 243 | 1.2.3.4.5 | IO Approval Changes | 2.5d | 2022-08-15 | 2022-08-17 | 207, 242 | 6.62d | 0d | Farooq | 20h |
| 244 | 1.2.3.4.6 | Checks for approval by vendor | 0.25d | 2022-08-17 | 2022-08-17 | 208, 243 | 6.62d | 0d | Farooq | 2h |

| ID | WBS | Task | Duration | Start | Finish | Predecessors | Total slack | Free slack | Resources | Work |
| --- | --- | --- | --- | --- | --- | --- | --- | --- | --- | --- |
| 245 | 1.2.3.5 | **Build 5** | 19.5d | 2022-07-26 | 2022-08-23 |  | 0d |  |  | 64h |
| 246 | 1.2.3.5.1 | Bo Revision | 4d | 2022-08-18 | 2022-08-23 | 176, 244 | 6.62d | 0d | Farooq | 32h |
| 247 | 1.2.3.5.2 | Trade Desk | 4d | 2022-07-26 | 2022-08-01 | 211, 240 | 0d |  | Adnan | 32h |
| 248 | 1.2.3.6 | **Build 6** | 41.81d | 2022-07-04 | 2022-09-06 |  | 6.62d |  |  | 102h |
| 249 | 1.2.3.6.1 | Facebook | 1d | 2022-07-04 | 2022-07-05 | 218, 180 | 18.19d | 0d | Zeeshan | 8h |
| 250 | 1.2.3.6.2 | MicroSoft Ads | 1d | 2022-07-05 | 2022-07-06 | 219, 249 | 18.19d | 0d | Zeeshan | 8h |
| 251 | 1.2.3.6.3 | Yahoo | 2d | 2022-07-06 | 2022-07-08 | 220, 250 | 18.19d | 0d | Zeeshan | 16h |
| 252 | 1.2.3.6.4 | Twitter | 1.25d | 2022-08-24 | 2022-08-25 | 221, 246 | 6.62d | 0d | Farooq | 10h |
| 253 | 1.2.3.6.5 | DV 360 | 1.25d | 2022-08-25 | 2022-08-26 | 222, 252 | 6.62d | 0d | Farooq | 10h |
| 254 | 1.2.3.6.6 | Fix Rules Implementation | 6.25d | 2022-08-29 | 2022-09-06 | 237 | 6.62d | 0d | Farooq | 50h |
| 255 | 1.3 | Cross verification (Second QA Cycle) | 8.33d | 2022-10-05 | 2022-10-18 | 2, 127 | 0d |  | Bilal; Asif; Naeem | 200h |
| 256 | 1.4 | **Integration Testing and Release Verification** | 4.12d? | 2022-10-18 | 2022-10-24 | 255 | 0d |  |  | 132h |
| 257 | 1.4.1 | Integration Testing | 1.88d? | 2022-10-18 | 2022-10-20 |  | 0d |  | Bilal; Asif; Ayesha; Naeem | 60h |
| 258 | 1.4.2 | Release Deplyment and Verification | 2.25d | 2022-10-20 | 2022-10-24 | 257 | 0d |  | Asif; Bilal; Ayesha; Naeem | 72h |
| 259 | 2 | **Other Tasks** | 62.5d | 2022-04-25 | 2022-07-28 |  | 60.08d |  |  | 250h |
| 260 | 2.1 | Revisit missing constraints | 62.5d | 2022-04-25 | 2022-07-28 |  | 60.08d |  | Arif K [20%] | 100h |
| 261 | 2.2 | SOC 1 Compliance | 33.48d | 2022-04-25 | 2022-06-14 |  | 89.1d |  | AsimJ [20%]; Tauseef [20%]; Arshad [40%] | 150h |
