Schedule from MS Project, 2025-06-17 to 2025-08-29.

## Calendars

- Standard: Mon-Fri 08:00-12:00, 13:00-17:00; Sat-Sun off. Exceptions (off unless hours are given): 2025-08-14 (Augus 14).

## Resources

| Resource |
| --- |
| Abid |
| Asad |
| Yasir |
| Arslan |
| Ali |
| Bilal |
| Asim |
| Muzamal |
| Arif |
| Hamza |
| Tao |
| Shoaib |
| Ayesha |
| Aimen |
| Kashif |

## Schedule

| ID | WBS | Task | Duration | Start | Finish | Predecessors | Total slack | Free slack | Constraint | Resources | Work |
| --- | --- | --- | --- | --- | --- | --- | --- | --- | --- | --- | --- |
| 1 | 1 | **2025.3** | 52.42d? | 2025-06-17 | 2025-08-29 |  | 0d |  |  |  | 1540.5h |
| 2 | 1.1 | **APWorks** | 52.42d? | 2025-06-17 | 2025-08-29 |  | 0d |  |  |  | 1540.5h |
| 3 | 1.1.1 | Planning | 7.14d | 2025-06-17 | 2025-06-26 |  | 45.27d |  |  | Abid [70%] | 40h |
| 4 | 1.1.2 | Team Brainstorming | 0.62d | 2025-06-17 | 2025-06-17 |  | 4.17d | 1.04d |  | Asad [80%]; Yasir [80%]; Arslan [80%]; Ali [80%]; Bilal [80%] | 20h |
| 5 | 1.1.3 | **Enabling user-specific report views and filter preferences to be retained during the session, enhancing usability and efficiency** | 18.67d? | 2025-06-17 | 2025-07-11 |  | 3.13d |  |  |  | 149h |
| 6 | 1.1.3.1 | Design document | 1.67d? | 2025-06-17 | 2025-06-18 |  | 3.13d | 0d |  | Asim [60%] | 8h |
| 7 | 1.1.3.2 | Design document review and structural changes marking | 0.75d? | 2025-06-18 | 2025-06-19 | 6, 4 | 3.13d | 0d |  | Ali [80%]; Abid [50%] | 6h |
| 8 | 1.1.3.3 | **Development** | 11.79d? | 2025-06-17 | 2025-07-02 |  | 5.54d | 0d |  |  | 60h |
| 9 | 1.1.3.3.1 | DotNet | 9.38d? | 2025-06-19 | 2025-07-02 | 7 | 3.13d | 0d |  | Ali [80%] | 60h |
| 10 | 1.1.3.3.2 | DB | 1d? | 2025-06-17 | 2025-06-17 |  | 43.92d |  |  |  |  |
| 11 | 1.1.3.4 | Deployment | 0.31d | 2025-07-02 | 2025-07-03 | 8 | 33.12d | 1.56d |  | Abid [40%] | 1h |
| 12 | 1.1.3.5 | **QA** | 13.29d? | 2025-06-23 | 2025-07-10 |  | 31.67d |  |  |  | 42h |
| 13 | 1.1.3.5.1 | Test case writing | 1.88d? | 2025-06-23 | 2025-06-24 | 7 | 31.67d | 0d | start no earlier than 2025-06-23 | Ayesha [80%] | 12h |
| 14 | 1.1.3.5.2 | Testing | 3.75d? | 2025-07-04 | 2025-07-10 | 11, 144 | 31.56d | 0d |  | Ayesha [80%] | 24h |
| 15 | 1.1.3.5.3 | QA Review and management | 1.88d | 2025-07-07 | 2025-07-08 | 17 | 36.49d |  |  | Bilal [40%] | 6h |
| 16 | 1.1.3.6 | **Bug fixing** | 6.49d? | 2025-07-03 | 2025-07-11 |  | 3.13d |  |  |  | 20h |
| 17 | 1.1.3.6.1 | Bug fixing | 1.88d? | 2025-07-03 | 2025-07-07 | 52 | 3.13d | 0d |  | Ali [80%] | 12h |
| 18 | 1.1.3.6.2 | Bug Verification | 1.25d? | 2025-07-10 | 2025-07-11 | 17, 14 | 31.56d | 3.82d |  | Ayesha [80%] | 8h |
| 19 | 1.1.3.7 | Review and Management | 7.5d? | 2025-06-19 | 2025-06-30 | 7 | 42.5d |  |  | Abid [20%] | 12h |
| 20 | 1.1.4 | **Net Amount Total: We need an additional calculated field in the header that sums the Invoice Net Amount. Currently, if they want to view the Invoice Net Amount total, they must add the line amounts outside of the system.** | 9.38d? | 2025-06-17 | 2025-06-30 |  | 22.02d |  |  |  | 43h |
| 21 | 1.1.4.1 | Design document | 1d? | 2025-06-18 | 2025-06-19 | 6 | 20.36d | 0d |  | Asim [50%] | 4h |
| 22 | 1.1.4.2 | Design document review and structural changes marking | 0.19d? | 2025-06-24 | 2025-06-24 | 21 | 36.4d | 0d | start no earlier than 2025-06-24 | Abid [50%]; Arslan [80%] | 2h |
| 23 | 1.1.4.3 | **Development** | 7.82d? | 2025-06-17 | 2025-06-26 |  | 41.72d | 0d |  |  | 20h |
| 24 | 1.1.4.3.1 | DotNet (invoice UI, Preview, manual entry screen) | 2.5d? | 2025-06-24 | 2025-06-26 | 22 | 36.4d | 0d |  | Arslan [80%] | 16h |
| 25 | 1.1.4.3.2 | DB | 1d? | 2025-06-17 | 2025-06-17 |  | 49.85d |  |  |  | 4h |
| 26 | 1.1.4.4 | Deployment | 0.31d? | 2025-06-26 | 2025-06-27 | 23 | 43.04d | 0d |  | Abid [40%] | 1h |

| ID | WBS | Task | Type | Duration | Start | Finish | Predecessors | Total slack | Free slack | Resources | Work |
| --- | --- | --- | --- | --- | --- | --- | --- | --- | --- | --- | --- |
| 27 | 1.1.4.5 | **QA** |  | 3.38d? | 2025-06-25 | 2025-06-30 |  | 43.04d |  |  | 11h |
| 28 | 1.1.4.5.1 | Test case writing |  | 0.62d? | 2025-06-25 | 2025-06-25 | 21, 13 | 45.17d | 0d | Kashif [80%] | 4h |
| 29 | 1.1.4.5.2 | Testing |  | 0.94d? | 2025-06-27 | 2025-06-30 | 26 | 43.04d | 0d | Kashif [80%] | 6h |
| 30 | 1.1.4.5.3 | QA Review and management |  | 0.31d? | 2025-06-30 | 2025-06-30 | 29 | 43.04d |  | Bilal [40%] | 1h |
| 31 | 1.1.4.6 | **Bug Fixing** |  | 0.47d? | 2025-06-27 | 2025-06-27 |  | 36.4d |  |  | 3h |
| 32 | 1.1.4.6.1 | Bug fixing |  | 0.31d? | 2025-06-27 | 2025-06-27 | 37 | 36.4d | 0d | Arslan [80%] | 2h |
| 33 | 1.1.4.6.2 | Bug Verification |  | 0.16d? | 2025-06-27 | 2025-06-27 | 32 | 43.75d |  | Kashif [80%] | 1h |
| 34 | 1.1.4.7 | Review and Management |  | 1.25d? | 2025-06-24 | 2025-06-25 | 22 | 45.85d |  | Abid [20%] | 2h |
| 35 | 1.1.5 | **Invoice comment log: They would like a way to add comments to an invoice for record-keeping, in case auditors inquire about invoice actions. (Routing history button)** |  | 17.29d? | 2025-06-17 | 2025-07-10 |  | 15.42d |  |  | 84h |
| 36 | 1.1.5.1 | Design document |  | 1.5d? | 2025-06-19 | 2025-06-23 | 21 | 20.36d | 0d | Asim [50%] | 6h |
| 37 | 1.1.5.2 | Design document review and structural changes marking |  | 0.38d? | 2025-06-26 | 2025-06-27 | 36, 24 | 36.4d | 0d | Abid [50%]; Arslan [80%] | 4h |
| 38 | 1.1.5.3 | **Development** |  | 14.14d? | 2025-06-17 | 2025-07-07 |  | 36.4d | 0d |  | 44h |
| 39 | 1.1.5.3.1 | DotNet |  | 5.62d? | 2025-06-27 | 2025-07-07 | 32 | 36.4d |  | Arslan [80%] | 36h |
| 40 | 1.1.5.3.2 | DB |  | 1d? | 2025-06-17 | 2025-06-17 |  | 49.54d |  |  | 8h |
| 41 | 1.1.5.4 | Deployment |  | 0.62d? | 2025-07-07 | 2025-07-07 | 38 | 36.4d | 0d | Abid [20%] | 2h |
| 42 | 1.1.5.5 | **QA** |  | 9.39d? | 2025-06-25 | 2025-07-09 |  | 36.4d |  |  | 14h |
| 43 | 1.1.5.5.1 | Test case writing |  | 0.62d? | 2025-06-25 | 2025-06-26 | 36, 28 | 45.17d |  | Kashif [80%] | 4h |
| 44 | 1.1.5.5.2 | Testing |  | 1.25d? | 2025-07-07 | 2025-07-09 | 41 | 36.4d |  | Kashif [80%] | 8h |
| 45 | 1.1.5.5.3 | QA Review and management |  | 0.62d? | 2025-06-25 | 2025-06-26 | 36, 28 | 45.17d |  | Bilal [40%] | 2h |
| 46 | 1.1.5.6 | **Bug fixing** |  | 1.88d? | 2025-07-08 | 2025-07-10 |  | 0d |  |  | 12h |
| 47 | 1.1.5.6.1 | Bug fixing | manual | 1.25d? | 2025-07-08 | 2025-07-09 |  |  |  | Arslan [80%] | 8h |
| 48 | 1.1.5.6.2 | Bug Verification |  | 0.62d? | 2025-07-09 | 2025-07-10 | 47 | 35.12d |  | Kashif [80%] | 4h |
| 49 | 1.1.5.7 | Review and Management |  | 1.25d? | 2025-06-27 | 2025-06-30 | 37 | 42.96d |  | Abid [20%] | 2h |
| 50 | 1.1.6 | **In Discrepant bucket, A way for Users to flag an invocie so they can easy find it later** |  | 24.68d? | 2025-06-17 | 2025-07-21 |  | 14.92d |  |  | 126h |
| 51 | 1.1.6.1 | Design document |  | 2d? | 2025-06-23 | 2025-06-25 | 36 | 20.36d | 0d | Asim [50%] | 8h |
| 52 | 1.1.6.2 | Design document review and structural changes marking |  | 0.38d? | 2025-07-02 | 2025-07-03 | 9 | 3.13d | 0d | Ali [80%]; Abid [50%] | 4h |

| ID | WBS | Task | Type | Duration | Start | Finish | Predecessors | Total slack | Free slack | Resources | Work |
| --- | --- | --- | --- | --- | --- | --- | --- | --- | --- | --- | --- |
| 53 | 1.1.6.3 | **Development** |  | 7.81d? | 2025-07-07 | 2025-07-16 |  | 3.13d | 0d |  | 70h |
| 54 | 1.1.6.3.1 | DotNet |  | 7.81d? | 2025-07-07 | 2025-07-16 | 17 | 3.13d | 0d | Ali [80%] | 50h |
| 55 | 1.1.6.3.2 | DB |  | 3.12d? | 2025-07-09 | 2025-07-14 | 47 | 29.81d |  | Yasir [80%] | 20h |
| 56 | 1.1.6.4 | Deployment |  | 0.62d? | 2025-07-16 | 2025-07-17 | 53 | 27.74d | 0d | Abid [20%] | 1h |
| 57 | 1.1.6.5 | DB Packaging |  | 0.62d? | 2025-07-16 | 2025-07-17 | 53 | 29.93d |  | Arif [40%] | 2h |
| 58 | 1.1.6.6 | **QA** |  | 17.88d? | 2025-06-25 | 2025-07-21 |  | 28.37d |  |  | 17h |
| 59 | 1.1.6.6.1 | Test case writing |  | 0.62d? | 2025-06-25 | 2025-06-25 | 51, 13 | 31.5d | 0d | Ayesha [80%] | 4h |
| 60 | 1.1.6.6.2 | Testing |  | 1.56d? | 2025-07-17 | 2025-07-21 | 56, 18 | 27.74d | 0d | Ayesha [80%] | 10h |
| 61 | 1.1.6.6.3 | QA Review and management |  | 0.94d? | 2025-07-17 | 2025-07-18 | 56 | 28.99d |  | Bilal [40%] | 3h |
| 62 | 1.1.6.7 | **Bug fixing** |  | 2.5d? | 2025-07-17 | 2025-07-21 |  | 3.13d |  |  | 14h |
| 63 | 1.1.6.7.1 | Bug fixing |  | 1.56d? | 2025-07-17 | 2025-07-18 | 70 | 3.13d | 0d | Ali [80%] | 10h |
| 64 | 1.1.6.7.2 | Bug Verification |  | 0.62d? | 2025-07-21 | 2025-07-21 | 63, 60 | 27.74d |  | Ayesha [80%] | 4h |
| 65 | 1.1.6.8 | Review and Management |  | 6.25d? | 2025-06-17 | 2025-06-25 |  | 46.17d |  | Abid [20%] | 10h |
| 66 | 1.1.7 | **Favorite button does not work ( Fix or hide) - Hide** |  | 26.36d? | 2025-06-17 | 2025-07-23 |  | 24.99d |  |  | 6.5h |
| 67 | 1.1.7.1 | Design document | milestone | 0d? | 2025-06-25 | 2025-06-25 | 51 | 20.36d | 0d | Asim [50%] |  |
| 68 | 1.1.7.2 | Design document review and structural changes marking | milestone | 0d? | 2025-07-18 | 2025-07-18 | 63 | 28.05d | 0d | Ali [80%]; Abid [50%] |  |
| 69 | 1.1.7.3 | **Development** |  | 22.18d? | 2025-06-17 | 2025-07-17 |  | 3.91d | 0d |  | 2h |
| 70 | 1.1.7.3.1 | DotNet |  | 0.31d? | 2025-07-16 | 2025-07-17 | 54 | 3.13d | 0d | Ali [80%] | 2h |
| 71 | 1.1.7.3.2 | DB |  | 1d? | 2025-06-17 | 2025-06-17 |  | 25.09d |  |  |  |
| 72 | 1.1.7.4 | Deployment |  | 0.62d? | 2025-07-17 | 2025-07-17 | 69 | 3.91d | 0d | Abid [20%] | 1h |
| 73 | 1.1.7.5 | **QA** |  | 16.79d? | 2025-06-25 | 2025-07-17 |  | 20.54d |  |  | 1.5h |
| 74 | 1.1.7.5.1 | Test case writing | milestone | 0d? | 2025-06-25 | 2025-06-25 | 67 | 46.25d |  | Kashif [80%] |  |
| 75 | 1.1.7.5.2 | Testing |  | 0.16d? | 2025-07-17 | 2025-07-17 | 72 | 3.91d | 0.78d | Kashif [80%] | 1h |
| 76 | 1.1.7.5.3 | QA Review and management |  | 0.16d? | 2025-07-17 | 2025-07-17 | 72 | 29.46d |  | Bilal [40%] | 0.5h |
| 77 | 1.1.7.6 | Bug fixing |  | 0.16d? | 2025-07-18 | 2025-07-18 | 63, 75 | 3.13d | 0d | Ali [80%] | 1h |
| 78 | 1.1.7.7 | Review and Management |  | 0.62d? | 2025-07-18 | 2025-07-23 | 68 | 26.05d |  | Abid [20%] | 1h |

| ID | WBS | Task | Type | Duration | Start | Finish | Predecessors | Total slack | Free slack | Resources | Work |
| --- | --- | --- | --- | --- | --- | --- | --- | --- | --- | --- | --- |
| 79 | 1.1.8 | **Format all amounts to be trwo decimals (Appearing in filters)** |  | 30.46d? | 2025-06-17 | 2025-07-29 |  | 21.96d |  |  | 42h |
| 80 | 1.1.8.1 | Design document |  | 0.5d? | 2025-06-25 | 2025-06-25 | 67 | 20.36d | 0d | Asim [50%] | 2h |
| 81 | 1.1.8.2 | Design document review and structural changes marking |  | 0.71d? | 2025-07-18 | 2025-07-23 | 77, 80 | 1.13d | 0d | Ali [80%]; Abid [50%] | 4h |
| 82 | 1.1.8.3 | **Development** |  | 28.89d? | 2025-06-17 | 2025-07-25 |  | 21.96d | 0d |  | 16h |
| 83 | 1.1.8.3.1 | DotNet |  | 2.5d? | 2025-07-23 | 2025-07-25 | 81 | 1.13d | 0d | Ali [80%] | 16h |
| 84 | 1.1.8.3.2 | DB |  | 1d? | 2025-06-17 | 2025-06-17 |  | 49.85d |  |  |  |
| 85 | 1.1.8.4 | Deployment |  | 0.62d? | 2025-07-25 | 2025-07-28 | 82 | 21.96d | 0d | Abid [20%] | 1h |
| 86 | 1.1.8.5 | **QA** |  | 23.67d? | 2025-06-25 | 2025-07-29 |  | 21.96d |  |  | 12h |
| 87 | 1.1.8.5.1 | Test case writing |  | 0.62d? | 2025-06-25 | 2025-06-26 | 80, 59 | 31.5d | 0d | Ayesha [80%] | 4h |
| 88 | 1.1.8.5.2 | Testing |  | 0.94d? | 2025-07-28 | 2025-07-29 | 85 | 21.96d |  | Ayesha [80%] | 6h |
| 89 | 1.1.8.5.3 | QA Review and management |  | 0.62d? | 2025-07-28 | 2025-07-29 | 85 | 22.27d |  | Bilal [40%] | 2h |
| 90 | 1.1.8.6 | **Bug fixing** |  | 0.47d? | 2025-07-28 | 2025-07-28 |  | 22.43d |  |  | 3h |
| 91 | 1.1.8.6.1 | Bug fixing |  | 0.31d? | 2025-07-28 | 2025-07-28 | 98 | 22.43d | 0d | Ali [80%] | 2h |
| 92 | 1.1.8.6.2 | Bug Verification |  | 0.16d? | 2025-07-28 | 2025-07-28 | 91 | 22.43d |  | Ayesha [80%] | 1h |
| 93 | 1.1.8.7 | Review and Management |  | 2.5d? | 2025-07-23 | 2025-07-25 | 81 | 23.52d |  | Abid [20%] | 4h |
| 94 | 1.1.9 | **If we add a new user and start with the sequence on screen, we get an error. Starting with "User Group" and then filling in rest of details, i.e. resource id, name, email and login, we get "null resource ID error. If we fill in all details and assign user** |  | 30.46d? | 2025-06-17 | 2025-07-29 |  | 21.96d |  |  | 10h |
| 95 | 1.1.9.1 | Design document | milestone | 0d? | 2025-06-25 | 2025-06-25 | 80 | 22.92d | 0d | Asim [50%] |  |
| 96 | 1.1.9.2 | Design document review and structural changes marking | milestone | 0d? | 2025-07-25 | 2025-07-25 | 83 | 1.13d | 0d | Ali [80%]; Abid [50%] |  |
| 97 | 1.1.9.3 | **Development** |  | 29.52d? | 2025-06-17 | 2025-07-28 |  | 1.13d | 0d |  | 4h |
| 98 | 1.1.9.3.1 | DotNet |  | 0.62d? | 2025-07-25 | 2025-07-28 | 96 | 1.13d | 0d | Ali [80%] | 4h |
| 99 | 1.1.9.3.2 | DB |  | 1d? | 2025-06-17 | 2025-06-17 |  | 29.65d |  |  |  |
| 100 | 1.1.9.4 | Deployment |  | 0.62d? | 2025-07-28 | 2025-07-29 | 97 | 1.13d | 0d | Abid [20%] | 1h |
| 101 | 1.1.9.5 | **QA** |  | 23.04d? | 2025-06-26 | 2025-07-29 |  | 21.96d |  |  | 3h |
| 102 | 1.1.9.5.1 | Test case writing | milestone | 0d? | 2025-06-26 | 2025-06-26 | 95, 87 | 31.5d | 0d | Ayesha [80%] |  |
| 103 | 1.1.9.5.2 | Testing |  | 0.31d? | 2025-07-29 | 2025-07-29 | 100 | 1.13d | 0d | Ayesha [80%] | 2h |
| 104 | 1.1.9.5.3 | Bug fixing | milestone | 0d? | 2025-07-29 | 2025-07-29 | 103 | 1.13d | 0d | Ali [80%] |  |
| 105 | 1.1.9.5.4 | QA Review and management |  | 0.31d? | 2025-07-29 | 2025-07-29 | 100 | 21.96d |  | Bilal [40%] | 1h |
| 106 | 1.1.9.6 | Review and Management |  | 1.25d? | 2025-07-25 | 2025-07-29 | 96 | 22.27d |  | Abid [20%] | 2h |

| ID | WBS | Task | Duration | Start | Finish | Predecessors | Total slack | Free slack | Constraint | Resources | Work | Text1 |
| --- | --- | --- | --- | --- | --- | --- | --- | --- | --- | --- | --- | --- |
| 107 | 1.1.10 | **Manually mark invoice Archieved** | 37.37d? | 2025-06-25 | 2025-08-19 |  | 1.13d |  |  |  | 191h |  |
| 108 | 1.1.10.1 | Design document | 2d? | 2025-06-25 | 2025-06-27 | 95 | 22.92d | 0d |  | Asim [50%] | 8h |  |
| 109 | 1.1.10.2 | Design document review and structural changes marking | 0.77d? | 2025-07-29 | 2025-07-30 | 108, 104 | 1.13d | 0d |  | Ali [80%]; Abid [50%] | 8h |  |
| 110 | 1.1.10.3 | **Development** | 10d? | 2025-07-30 | 2025-08-13 |  | 1.13d |  |  |  | 96h |  |
| 111 | 1.1.10.3.1 | DotNet- Mark the screen archive/unarchive and View in disable mode | 5d? | 2025-07-30 | 2025-08-06 | 109 | 1.13d | 0d |  | Ali [80%] | 32h |  |
| 112 | 1.1.10.3.2 | New Screen Development | 5d? | 2025-08-06 | 2025-08-13 | 111 | 1.13d | 0d |  | Ali [80%] | 32h |  |
| 113 | 1.1.10.3.3 | DB | 5.71d? | 2025-07-30 | 2025-08-06 | 109 | 8.23d |  |  | Yasir [70%] | 32h |  |
| 114 | 1.1.10.4 | Deployment | 1d? | 2025-08-06 | 2025-08-07 | 111 | 3.25d | 0d |  | Abid [20%] | 1h |  |
| 115 | 1.1.10.5 | **QA** | 33.25d? | 2025-06-27 | 2025-08-13 |  | 3.25d |  |  |  | 46h |  |
| 116 | 1.1.10.5.1 | Test case writing | 1.88d? | 2025-06-27 | 2025-07-01 | 108 | 34.62d |  |  | Kashif [80%] | 12h |  |
| 117 | 1.1.10.5.2 | Testing | 4.69d? | 2025-08-07 | 2025-08-13 | 114 | 3.25d |  |  | Kashif [80%] | 30h |  |
| 118 | 1.1.10.5.3 | QA Review and management | 1.62d? | 2025-08-07 | 2025-08-08 | 114 | 6.32d |  |  | Bilal [40%] | 4h |  |
| 119 | 1.1.10.6 | **Bug fixing** | 6.81d? | 2025-08-07 | 2025-08-19 |  | 1.13d |  |  |  | 24h |  |
| 120 | 1.1.10.6.1 | Bug fixing | 1.56d? | 2025-08-13 | 2025-08-15 | 114, 112 | 1.13d | 0d |  | Ali [80%] | 10h |  |
| 121 | 1.1.10.6.2 | DB Bug fixing | 1.5d | 2025-08-07 | 2025-08-08 | 114 | 6.44d |  |  | Yasir [50%] | 6h |  |
| 122 | 1.1.10.6.3 | Bug Verification | 1.25d? | 2025-08-15 | 2025-08-19 | 120 | 1.13d |  |  | Kashif [80%] | 8h |  |
| 123 | 1.1.10.7 | Review and Management | 5d? | 2025-07-30 | 2025-08-06 | 109 | 8.94d |  |  | Abid [20%] | 8h |  |
| 124 | 1.1.11 | **eInvoice pull** | 45.17d? | 2025-06-17 | 2025-08-20 |  | 0d |  |  |  | 729h | Waiting for design document |
| 125 | 1.1.11.1 | **eInvoices (iPC)(BingAd, DV360,GCM,GoogleAd, Twitter)** | 30.3d? | 2025-06-17 | 2025-07-29 |  | 14.86d |  |  |  | 199h |  |
| 126 | 1.1.11.1.1 | KickOff meeting with Tao | 0.5d? | 2025-06-18 | 2025-06-18 |  | 13.88d | 0d | start no earlier than 2025-06-18 | Tao [25%]; Abid [25%]; Shoaib [25%] | 3h |  |
| 127 | 1.1.11.1.2 | API Review and Postman calls configurations | 7.5d | 2025-06-18 | 2025-06-30 | 126 | 13.88d | 0d |  | Tao [50%]; Shoaib [60%] | 60h |  |
| 128 | 1.1.11.1.3 | Design document review and structural changes marking | 1d? | 2025-06-30 | 2025-07-01 | 127 | 13.88d | 0d |  | Shoaib [50%]; Abid [50%] | 8h |  |
| 129 | 1.1.11.1.4 | **Development** | 20.18d? | 2025-07-01 | 2025-07-29 |  | 14.86d |  |  |  | 128h |  |
| 130 | 1.1.11.1.4.1 | DotNet - iPC Changes(New Methods for 4 Platforms + Expected change for 1 Platform) + Packaging and Deployment | 18.75d? | 2025-07-01 | 2025-07-25 | 128 | 14.86d | 0d |  | Shoaib [80%] | 120h |  |
| 131 | 1.1.11.1.4.2 | DB | 1.43d? | 2025-07-25 | 2025-07-29 | 130 | 14.86d |  |  | Yasir [70%] | 8h |  |

| ID | WBS | Task | Type | Duration | Start | Finish | Predecessors | Total slack | Free slack | Constraint | Resources | Work |
| --- | --- | --- | --- | --- | --- | --- | --- | --- | --- | --- | --- | --- |
| 132 | 1.1.11.1.5 | **QA** |  | 1d? | 2025-06-17 | 2025-06-17 |  | 44.17d |  |  |  |  |
| 133 | 1.1.11.1.5.1 | Bug fixing |  | 1d? | 2025-06-17 | 2025-06-17 |  | 44.17d |  |  |  |  |
| 134 | 1.1.11.1.6 | Review and Management |  | 1d? | 2025-06-17 | 2025-06-17 |  | 44.17d |  |  |  |  |
| 135 | 1.1.11.2 | **eInvoices (Apworks)** |  | 43.04d? | 2025-06-19 | 2025-08-20 |  | 0d |  |  |  | 466h |
| 136 | 1.1.11.2.1 | Design document |  | 2d? | 2025-06-19 | 2025-06-23 |  | 0d |  | start no earlier than 2025-06-19 | Tao [50%] | 8h |
| 137 | 1.1.11.2.2 | Design document review and structural changes marking |  | 1.04d? | 2025-06-23 | 2025-06-24 | 136 | 0d |  |  | Abid [40%]; Asim [40%]; Tao [40%] | 10h |
| 138 | 1.1.11.2.3 | **Development** |  | 30.73d? | 2025-06-23 | 2025-08-04 |  | 0d |  |  |  | 250h |
| 139 | 1.1.11.2.3.1 | Dot Net |  | 29.69d? | 2025-06-24 | 2025-08-04 | 137 | 0d |  |  | Asad [80%] | 190h |
| 140 | 1.1.11.2.3.2 | DB |  | 9.38d? | 2025-06-23 | 2025-07-04 | 136 | 21.35d |  |  | Yasir [80%] | 60h |
| 141 | 1.1.11.2.4 | Deployment |  | 2.5d? | 2025-08-04 | 2025-08-07 | 138 | 0d |  |  | Abid [20%] | 4h |
| 142 | 1.1.11.2.5 | DB Packaging |  | 1.25d? | 2025-08-04 | 2025-08-06 | 138 | 9.06d |  |  | Yasir [80%] | 8h |
| 143 | 1.1.11.2.6 | **QA** |  | 37.75d? | 2025-06-26 | 2025-08-20 |  | 0d |  |  |  | 146h |
| 144 | 1.1.11.2.6.1 | Test case writing |  | 6.25d? | 2025-06-26 | 2025-07-04 | 137, 102 | 31.5d | 0d |  | Ayesha [80%] | 40h |
| 145 | 1.1.11.2.6.2 | Testing |  | 6.25d? | 2025-08-07 | 2025-08-18 | 141 | 1.56d |  |  | Ayesha [80%] | 40h |
| 146 | 1.1.11.2.6.3 | Bug fixing |  | 7.81d? | 2025-08-07 | 2025-08-20 | 141 | 0d |  |  | Asad [80%] | 50h |
| 147 | 1.1.11.2.6.4 | DB Bug fixing |  | 2.5d? | 2025-08-07 | 2025-08-11 | 141 | 5.31d |  |  | Yasir [80%] | 16h |
| 148 | 1.1.11.2.7 | Review and Management |  | 25d? | 2025-06-23 | 2025-07-30 | 136 | 14.04d |  |  | Abid [20%] | 40h |
| 149 | 1.1.11.3 | iPC - SelfServices | manual | 1d | 2025-06-17 | 2025-06-17 |  |  |  |  |  |  |
| 150 | 1.1.11.4 | **Upgrade ApWorks application to dotnet Core 9.0 from 7.0** |  | 0d | 2025-06-17 | 2025-06-17 |  | 45.17d |  |  |  | 48h |
| 151 | 1.1.11.4.1 | Lambda Upgrade | manual | 1d? | 2025-06-17 | 2025-06-17 |  |  |  |  |  | 8h |
| 152 | 1.1.11.4.2 | Application upgrade (need to resolve aws container issue with core 9.0) | manual | 1d? | 2025-06-17 | 2025-06-17 |  |  |  |  |  | 32h |
| 153 | 1.1.11.4.3 | Azure service upgrade | manual | 1d? | 2025-06-17 | 2025-06-17 |  |  |  |  |  | 8h |
| 154 | 1.1.11.5 | Separate Integration layer from main application(80 % work completed, only container setup things need to be verified) | manual | 1d? | 2025-06-17 | 2025-06-17 |  |  |  |  |  | 16h |
| 156 | 1.1.12 | **2nd integration / Integration Test** |  | 6.25d | 2025-08-20 | 2025-08-28 | 124, 107 | 0d |  |  |  | 100h |
| 157 | 1.1.12.1 | Testing |  | 6.25d | 2025-08-20 | 2025-08-28 |  | 0d |  |  | Bilal [40%] | 20h |
| 158 | 1.1.12.2 | Testing |  | 6.25d | 2025-08-20 | 2025-08-28 |  | 0d |  |  | Kashif [80%] | 40h |
| 159 | 1.1.12.3 | Testing |  | 6.25d | 2025-08-20 | 2025-08-28 |  | 0d |  |  | Kashif [80%] | 40h |
| 160 | 1.1.13 | Ready for UAT |  | 1d? | 2025-08-28 | 2025-08-29 | 156 | 0d |  |  |  |  |
