Schedule from MS Project, 2025-06-17 to 2026-01-02.

## Calendars

- Standard: Mon-Fri 08:00-12:00, 13:00-17:00; Sat-Sun off. Exceptions (off unless hours are given): 2025-08-14 (Augus 14).

## Resources

| Resource |
| --- |
| Abid |
| Asad |
| Yasir |
| Arslan |
| Ali |
| Bilal |
| Asim |
| Muzamal |
| Arif |
| Hamza |
| Tao |
| Shoaib |
| Ayesha |
| Aimen |
| Kashif |

## Schedule

| ID | WBS | Task | Type | Duration | Start | Finish | Predecessors | Total slack | Free slack | Constraint | Resources | Work |
| --- | --- | --- | --- | --- | --- | --- | --- | --- | --- | --- | --- | --- |
| 1 | 1 | **2025.3** |  | 69.59d? | 2025-06-17 | 2025-09-23 |  | 72.86d |  |  |  | 3325.5h |
| 2 | 1.1 | **Nexelus** |  | 69.59d? | 2025-06-17 | 2025-09-23 |  | 72.86d |  |  |  | 1785h |
| 3 | 1.1.1 | Planning |  | 60h | 2025-06-17 | 2025-06-26 |  | 134.96d |  |  | Abid [50%] | 30h |
| 4 | 1.1.2 | Release briefing |  | 4.17h | 2025-06-23 | 2025-06-23 |  | 95.07d | 4.02d | start no earlier than 2025-06-23 | Muzamal [60%]; Bilal [60%]; Arif [60%]; Abid [60%] | 10h |
| 5 | 1.1.3 | Rapid 7 Report Vulnerabilities. |  | 1d? | 2025-06-17 | 2025-06-17 |  | 141.46d |  |  |  |  |
| 6 | 1.1.4 | **Allow PO numbers to be appended automatically to campaign names. By Default the IO number is added but when replacing name with Placement or Package name, can the IO number be appended?** |  | 18.18d? | 2025-06-17 | 2025-07-11 |  | 81.53d |  |  |  | 65h |
| 7 | 1.1.4.1 | Design document |  | 16h | 2025-06-25 | 2025-06-27 | 208 | 74.86d | 0d | start no earlier than 2025-06-23 | Asim [50%] | 8h |
| 8 | 1.1.4.2 | Design document review and structural changes marking |  | 3.64h | 2025-06-27 | 2025-06-30 | 7, 4 | 91.05d | 0d |  | Abid [50%]; Muzamal [60%] | 4h |
| 9 | 1.1.4.3 | **Development** |  | 14.12d? | 2025-06-17 | 2025-07-07 |  | 91.05d | 0d |  |  | 29h |
| 10 | 1.1.4.3.1 | DotNet |  | 40h | 2025-06-30 | 2025-07-07 | 8 | 91.05d |  |  | Muzamal [60%] | 24h |
| 11 | 1.1.4.3.2 | DB |  | 8h | 2025-06-30 | 2025-07-01 | 8 | 95.05d |  |  | Arif [50%] | 4h |
| 12 | 1.1.4.3.3 | DB Packaging |  | 0.25d? | 2025-06-17 | 2025-06-17 |  | 104.92d |  |  | Arif [50%] | 1h |
| 13 | 1.1.4.4 | **QA** |  | 9.06d? | 2025-06-30 | 2025-07-11 |  | 95.84d |  |  |  | 18h |
| 14 | 1.1.4.4.1 | Test case writing |  | 0.62d? | 2025-06-30 | 2025-06-30 | 8 | 104.27d | 0d |  | Hamza [80%] | 4h |
| 15 | 1.1.4.4.2 | Testing |  | 1.25d? | 2025-07-07 | 2025-07-08 | 9 | 91.05d | 0d |  | Hamza [80%] | 8h |
| 16 | 1.1.4.4.3 | Bug fixing |  | 1.25d? | 2025-07-09 | 2025-07-11 | 20, 15 | 91.05d | 0d |  | Muzamal [60%] | 6h |
| 17 | 1.1.4.5 | Review and Management |  | 30h | 2025-06-30 | 2025-07-03 | 8 | 129.59d |  |  | Abid [20%] | 6h |
| 18 | 1.1.5 | **Add KPI input fields forall metric types, not just Viewability** |  | 23.91d? | 2025-06-17 | 2025-07-18 |  | 83.53d |  |  |  | 49h |
| 19 | 1.1.5.1 | Design document |  | 13.33h | 2025-06-27 | 2025-07-01 | 7 | 74.86d | 0d |  | Asim [60%] | 8h |
| 20 | 1.1.5.2 | Design document review and structural changes marking |  | 12.5h | 2025-07-08 | 2025-07-09 | 19, 15 | 91.05d | 0d |  | Abid [30%]; Muzamal [60%]; Arif [20%] | 10h |
| 21 | 1.1.5.3 | **Development** |  | 21.31d | 2025-06-17 | 2025-07-16 |  | 93.02d | 0d |  |  | 15h |
| 22 | 1.1.5.3.1 | DotNet |  | 25h | 2025-07-11 | 2025-07-16 | 16 | 91.05d | 0d |  | Muzamal [60%] | 15h |
| 23 | 1.1.5.3.2 | DB | milestone | 0h | 2025-06-17 | 2025-06-17 |  | 114.33d |  |  |  |  |
| 24 | 1.1.5.4 | **QA** |  | 14.16d? | 2025-06-30 | 2025-07-18 |  | 91.05d | 0d |  |  | 14h |
| 25 | 1.1.5.4.1 | Test case writing |  | 0.94d? | 2025-06-30 | 2025-07-01 | 14 | 104.27d |  |  | Hamza [80%] | 6h |
| 26 | 1.1.5.4.2 | Testing |  | 0.62d? | 2025-07-16 | 2025-07-16 | 21 | 93.02d |  |  | Hamza [80%] | 4h |
| 27 | 1.1.5.4.3 | Bug fixing |  | 0.83d? | 2025-07-18 | 2025-07-18 | 31 | 91.05d | 0d |  | Muzamal [60%] | 4h |
| 28 | 1.1.5.5 | Review and Management |  | 2h | 2025-06-17 | 2025-06-17 |  | 142.21d |  |  |  | 2h |

| ID | WBS | Task | Duration | Start | Finish | Predecessors | Total slack | Free slack | Resources | Work |
| --- | --- | --- | --- | --- | --- | --- | --- | --- | --- | --- |
| 29 | 1.1.6 | **Showold vs. new valueson revision screens (e.g., budget, dates) (Meta, TTD, LinkedIN, Twitter, Bing Ad, DV360)** | 53.41d? | 2025-06-17 | 2025-09-01 |  | 85.2d |  |  | 556h |
| 30 | 1.1.6.1 | Design document | 24h | 2025-07-01 | 2025-07-04 | 19 | 74.86d | 0d |  | 30h |
| 31 | 1.1.6.2 | Design document review and structural changes marking | 14.12h | 2025-07-16 | 2025-07-18 | 22 | 91.05d | 0d | Abid [60%]; Muzamal [60%]; Arif [60%]; Bilal [60%]; Hamza [60%] | 40h |
| 32 | 1.1.6.3 | **Development** | 47.31d? | 2025-06-17 | 2025-08-22 |  | 95.15d |  |  | 288h |
| 33 | 1.1.6.3.1 | **DotNet** | 47.31d? | 2025-06-17 | 2025-08-22 |  | 95.15d |  |  | 220h |
| 34 | 1.1.6.3.1.1 | TTD | 71.43h | 2025-07-18 | 2025-07-31 | 27 | 96.41d | 0d | Muzamal [70%] | 50h |
| 35 | 1.1.6.3.1.2 | LinkedIn | 166.67h | 2025-07-18 | 2025-08-20 | 31 | 91.97d | 0d | Abid [30%] | 50h |
| 36 | 1.1.6.3.1.3 | Twitter | 71.43h | 2025-07-31 | 2025-08-13 | 34 | 96.41d | 0d | Muzamal [70%] | 50h |
| 37 | 1.1.6.3.1.4 | Bing Ad | 8h? | 2025-06-17 | 2025-06-17 |  | 141.46d |  |  |  |
| 38 | 1.1.6.3.1.5 | DV360 | 50h | 2025-08-01 | 2025-08-12 | 43 | 78.43d | 0d | Shoaib [80%] | 40h |
| 39 | 1.1.6.3.1.6 | Meta | 37.5h | 2025-08-15 | 2025-08-22 | 44 | 78.43d | 0d | Shoaib [80%] | 30h |
| 40 | 1.1.6.3.1.7 | Yahoo | 1d? | 2025-06-17 | 2025-06-17 |  | 141.46d |  |  |  |
| 41 | 1.1.6.3.2 | **iPC** | 13.75d? | 2025-07-25 | 2025-08-15 |  | 78.43d |  |  | 48h |
| 42 | 1.1.6.3.2.1 | BingAd | 2.5d? | 2025-07-25 | 2025-07-30 | 258 | 78.43d | 0d | Shoaib [80%] | 16h |
| 43 | 1.1.6.3.2.2 | DV360 | 2.5d? | 2025-07-30 | 2025-08-01 | 42 | 78.43d | 0d | Shoaib [80%] | 16h |
| 44 | 1.1.6.3.2.3 | Meta | 2.5d? | 2025-08-12 | 2025-08-15 | 38 | 78.43d | 0d | Shoaib [80%] | 16h |
| 45 | 1.1.6.3.3 | DB | 20h | 2025-06-17 | 2025-06-19 |  | 139.96d |  |  | 20h |
| 46 | 1.1.6.4 | Deploymnet and Packaging | 1d? | 2025-06-17 | 2025-06-17 |  | 141.46d |  |  |  |
| 47 | 1.1.6.5 | **QA** | 50.53d? | 2025-06-17 | 2025-08-27 |  | 91.93d |  |  | 154h |
| 48 | 1.1.6.5.1 | Test case writing | 3.75d? | 2025-06-17 | 2025-06-20 |  | 138.71d |  | Hamza [80%] | 24h |
| 49 | 1.1.6.5.2 | **Testing** | 48.56d? | 2025-06-17 | 2025-08-25 |  | 93.9d |  |  | 40h |
| 50 | 1.1.6.5.2.1 | TTD | 1.25d? | 2025-07-31 | 2025-08-04 | 34 | 104.09d | 7.68d | Hamza [80%] | 8h |
| 51 | 1.1.6.5.2.2 | LinkedIn | 1.25d? | 2025-08-20 | 2025-08-22 | 35 | 91.97d | 0d | Hamza [80%] | 8h |
| 52 | 1.1.6.5.2.3 | Twitter | 1.25d? | 2025-08-22 | 2025-08-25 | 36, 51 | 92.62d | 0d | Hamza [80%] | 8h |
| 53 | 1.1.6.5.2.4 | Bing Ad | 1d? | 2025-06-17 | 2025-06-17 |  | 141.46d |  |  |  |
| 54 | 1.1.6.5.2.5 | DV360 | 1.25d? | 2025-08-12 | 2025-08-13 | 38 | 84.37d | 5.94d | Hamza [80%] | 8h |
| 55 | 1.1.6.5.2.6 | Meta | 1.25d? | 2025-08-22 | 2025-08-25 | 39 | 78.97d | 0.54d | Hamza [80%] | 8h |
| 56 | 1.1.6.5.2.7 | Yahoo | 1d? | 2025-06-17 | 2025-06-17 |  | 141.46d |  |  |  |

| ID | WBS | Task | Duration | Start | Finish | Predecessors | Total slack | Free slack | Resources | Work |
| --- | --- | --- | --- | --- | --- | --- | --- | --- | --- | --- |
| 57 | 1.1.6.5.3 | **Bug fixing** | 50.53d? | 2025-06-17 | 2025-08-27 |  | 91.93d |  |  | 50h |
| 58 | 1.1.6.5.3.1 | TTD | 2.86d? | 2025-08-13 | 2025-08-19 | 50, 36 | 96.41d | 3.79d | Muzamal [70%] | 16h |
| 59 | 1.1.6.5.3.2 | LinkedIn | 3.33d? | 2025-08-22 | 2025-08-27 | 51 | 91.97d |  | Abid [30%] | 8h |
| 60 | 1.1.6.5.3.3 | Twitter | 1.43d? | 2025-08-25 | 2025-08-26 | 52, 58 | 92.62d |  | Muzamal [70%] | 8h |
| 61 | 1.1.6.5.3.4 | Bing Ad | 1d? | 2025-06-17 | 2025-06-17 |  | 141.46d |  |  |  |
| 62 | 1.1.6.5.3.5 | DV360 | 1.79d? | 2025-08-22 | 2025-08-26 | 54, 39 | 78.43d | 0d | Shoaib [70%] | 10h |
| 63 | 1.1.6.5.3.6 | Meta | 1.43d? | 2025-08-26 | 2025-08-27 | 55, 62 | 78.43d | 5.57d | Shoaib [70%] | 8h |
| 64 | 1.1.6.5.3.7 | Yahoo | 1d? | 2025-06-17 | 2025-06-17 |  | 141.46d |  |  |  |
| 65 | 1.1.6.5.4 | QA Review and Management | 12.5d | 2025-07-31 | 2025-08-20 | 34 | 97.12d |  | Bilal [40%] | 40h |
| 66 | 1.1.6.6 | Review and Management | 220h | 2025-07-18 | 2025-09-01 | 24 | 89.05d |  | Abid [20%] | 44h |
| 67 | 1.1.7 | **Explore ifobjective field can pre-populatefrom media plan** | 11.56d? | 2025-07-04 | 2025-07-21 |  | 74.86d |  |  | 94h |
| 68 | 1.1.7.1 | Design document | 13.33h | 2025-07-04 | 2025-07-07 | 30 | 74.86d | 0d | Asim [60%] | 8h |
| 69 | 1.1.7.2 | Design document review and structural changes marking | 3.33h | 2025-07-08 | 2025-07-08 | 68, 167 | 81.04d | 0d | Arslan [60%]; Abid [60%]; Arif [60%]; Yasir [60%]; Bilal [60%]; Hamza [60%] | 12h |
| 70 | 1.1.7.3 | **Development** | 7.5d? | 2025-07-08 | 2025-07-17 |  | 82.29d | 0d |  | 50h |
| 71 | 1.1.7.3.1 | DotNet | 6.25d? | 2025-07-09 | 2025-07-17 | 175 | 81.04d | 0d | Arslan [80%] | 40h |
| 72 | 1.1.7.3.2 | DB | 2.08d? | 2025-07-08 | 2025-07-10 | 69 | 102.5d |  | Arif [60%] | 10h |
| 73 | 1.1.7.4 | **QA** | 9.48d? | 2025-07-08 | 2025-07-21 |  | 88.96d | 1.1d |  | 22h |
| 74 | 1.1.7.4.1 | Test case writing | 0.94d? | 2025-07-08 | 2025-07-09 | 69, 15 | 104.27d |  | Hamza [80%] | 6h |
| 75 | 1.1.7.4.2 | Testing | 0.62d? | 2025-07-18 | 2025-07-18 | 70, 31 | 96.93d |  | Hamza [80%] | 4h |
| 76 | 1.1.7.4.3 | Bug fixing | 1.56d? | 2025-07-18 | 2025-07-21 | 81 | 81.04d | 0d | Arslan [80%] | 10h |
| 77 | 1.1.7.4.4 | QA Review and Management | 0.62d? | 2025-07-17 | 2025-07-18 | 70 | 97.08d |  | Bilal [40%] | 2h |
| 78 | 1.1.7.5 | Review and Management | 1.25d? | 2025-07-04 | 2025-07-07 | 30 | 127.88d |  | Abid [20%] | 2h |
| 79 | 1.1.8 | **Assess ability to toggleadvantage campaign budget on/offvia API** | 22.69d? | 2025-07-08 | 2025-08-07 |  | 74.86d | 18.41d |  | 115h |
| 80 | 1.1.8.1 | Design document | 1.67d? | 2025-07-08 | 2025-07-09 | 68 | 74.86d | 0d | Asim [60%] | 8h |
| 81 | 1.1.8.2 | Design document review and architechtural changes marking | 0.42d? | 2025-07-17 | 2025-07-18 | 80, 71 | 81.04d | 0d | Arslan [60%]; Abid [60%]; Arif [60%]; Yasir [60%]; Bilal [60%]; Hamza [60%] | 12h |

| ID | WBS | Task | Duration | Start | Finish | Predecessors | Total slack | Free slack | Resources | Work |
| --- | --- | --- | --- | --- | --- | --- | --- | --- | --- | --- |
| 82 | 1.1.8.3 | **Development** | 11.85d? | 2025-07-21 | 2025-08-06 |  | 81.04d | 0d |  | 50h |
| 83 | 1.1.8.3.1 | DotNet | 6.25d? | 2025-07-21 | 2025-07-30 | 76, 81 | 81.04d | 0d | Arslan [80%] | 40h |
| 84 | 1.1.8.3.2 | DB | 2.08d? | 2025-08-04 | 2025-08-06 | 81, 96 | 91.27d |  | Arif [60%] | 10h |
| 85 | 1.1.8.4 | **QA** | 14.35d? | 2025-07-18 | 2025-08-07 |  | 89.69d |  |  | 25h |
| 86 | 1.1.8.4.1 | Test case writing | 0.94d? | 2025-07-18 | 2025-07-21 | 81 | 104.69d |  | Hamza [80%] | 6h |
| 87 | 1.1.8.4.2 | Testing | 0.94d? | 2025-08-06 | 2025-08-07 | 82 | 91.27d |  | Hamza [80%] | 6h |
| 88 | 1.1.8.4.3 | Bug fixing | 1.56d? | 2025-07-30 | 2025-08-01 | 105 | 81.04d | 0d | Arslan [80%] | 10h |
| 89 | 1.1.8.4.4 | QA Review and Management | 0.94d? | 2025-08-06 | 2025-08-07 | 82 | 91.27d |  | Bilal [40%] | 3h |
| 90 | 1.1.8.5 | Review and Management | 8.33d? | 2025-07-23 | 2025-08-04 | 80, 73 | 94.63d |  | Abid [30%] | 20h |
| 91 | 1.1.9 | **Enable multiple media plans under one Bing IO** | 36.1d? | 2025-07-15 | 2025-09-04 |  | 72.86d | 0d |  | 304h |
| 92 | 1.1.9.1 | Design document | 3.33d? | 2025-07-15 | 2025-07-18 | 104 | 74.86d | 0d | Asim [60%] | 16h |
| 93 | 1.1.9.2 | Design document review and architechtural changes marking | 1.33d? | 2025-07-18 | 2025-07-23 | 92 | 72.86d | 0d | Asim [50%]; Abid [50%]; Bilal [50%]; Arif [50%] | 16h |
| 94 | 1.1.9.3 | **Development** | 21.43d? | 2025-07-23 | 2025-08-22 |  | 72.86d | 0d |  | 160h |
| 95 | 1.1.9.3.1 | DotNet | 21.43d? | 2025-07-23 | 2025-08-22 | 93 | 72.86d | 0d | Asim [70%] | 120h |
| 96 | 1.1.9.3.2 | DB | 8.33d? | 2025-07-23 | 2025-08-04 | 93 | 85.96d | 0d | Arif [60%] | 40h |
| 97 | 1.1.9.4 | **QA** | 29.76d? | 2025-07-23 | 2025-09-04 |  | 72.86d |  |  | 92h |
| 98 | 1.1.9.4.1 | Test case writing | 1.88d? | 2025-07-23 | 2025-07-25 | 93, 81 | 100.75d |  | Hamza [80%] | 12h |
| 99 | 1.1.9.4.2 | Testing | 8.33d? | 2025-08-22 | 2025-09-04 | 94 | 72.86d |  | Bilal [60%] | 40h |
| 100 | 1.1.9.4.3 | Bug fixing | 4.17d? | 2025-08-22 | 2025-08-28 | 95 | 77.03d |  | Asim [60%] | 20h |
| 101 | 1.1.9.4.4 | Bug fixing DB | 6.25d | 2025-08-22 | 2025-09-02 | 94 | 74.95d |  | Arif [40%] | 20h |
| 102 | 1.1.9.5 | Review and Management | 12.5d? | 2025-07-18 | 2025-08-07 | 92 | 91.13d |  | Abid [20%] | 20h |
| 103 | 1.1.10 | **DENTSU _ Implementing a custom upload error log in Excel to provide detailed error tracking and improved troubleshooting.** | 31.25d? | 2025-07-09 | 2025-08-22 |  | 74.86d | 8.18d |  | 232h |
| 104 | 1.1.10.1 | Design document | 3.33d? | 2025-07-09 | 2025-07-14 | 80 | 74.86d | 0d | Asim [60%] | 16h |
| 105 | 1.1.10.2 | Design document review and architechtural changes marking | 0.83d? | 2025-07-30 | 2025-07-30 | 104, 83 | 81.04d | 0d | Arslan [60%]; Abid [60%]; Arif [60%]; Yasir [60%]; Bilal [60%]; Hamza [60%] | 24h |

| ID | WBS | Task | Duration | Start | Finish | Predecessors | Total slack | Free slack | Resources | Work |
| --- | --- | --- | --- | --- | --- | --- | --- | --- | --- | --- |
| 106 | 1.1.10.3 | **Development** | 10.94d? | 2025-07-30 | 2025-08-15 |  | 81.04d | 0d |  | 116h |
| 107 | 1.1.10.3.1 | DotNet | 9.38d? | 2025-08-01 | 2025-08-15 | 88 | 81.04d |  | Arslan [80%] | 60h |
| 108 | 1.1.10.3.2 | DB (For 5 uploads) | 8.33d? | 2025-07-30 | 2025-08-12 | 105 | 83.65d |  | Yasir [60%] | 40h |
| 109 | 1.1.10.3.3 | DB Review and Management | 10d | 2025-07-30 | 2025-08-13 | 105 | 81.98d |  | Arif [20%] | 16h |
| 110 | 1.1.10.4 | **QA** | 15.94d? | 2025-07-30 | 2025-08-22 |  | 81.04d |  |  | 56h |
| 111 | 1.1.10.4.1 | Test case writing | 2.5d? | 2025-07-30 | 2025-08-04 | 105 | 94.48d |  | Hamza [80%] | 16h |
| 112 | 1.1.10.4.2 | Testing | 2.5d? | 2025-08-15 | 2025-08-20 | 106 | 81.04d | 0d | Hamza [80%] | 16h |
| 113 | 1.1.10.4.3 | Bug fixing | 2.5d? | 2025-08-20 | 2025-08-22 | 112 | 81.04d |  | Arslan [80%] | 16h |
| 114 | 1.1.10.4.4 | QA Review and Management | 2.5d? | 2025-08-15 | 2025-08-20 | 106 | 83.54d |  | Bilal [40%] | 8h |
| 115 | 1.1.10.5 | Review and Management | 12.5d? | 2025-08-01 | 2025-08-21 | 104, 88 | 82.92d |  | Abid [20%] | 20h |
| 117 | 1.1.11 | **QA 2nd Iteration / Integration Testing** | 7.14d? | 2025-09-04 | 2025-09-15 | 103, 91, 79 | 72.86d | 0d |  | 240h |
| 118 | 1.1.11.1 | Testing | 7.14d? | 2025-09-04 | 2025-09-15 |  | 72.86d |  | Bilal [70%] | 40h |
| 119 | 1.1.11.2 | Testing | 6.25d? | 2025-09-04 | 2025-09-12 |  | 73.76d |  | Hamza [80%] | 40h |
| 120 | 1.1.11.3 | Bug Fixing | 7.14d? | 2025-09-04 | 2025-09-15 |  | 72.86d |  | Arif [70%] | 40h |
| 121 | 1.1.11.4 | Bug Fixing | 7.14d? | 2025-09-04 | 2025-09-15 |  | 72.86d |  | Arslan [70%] | 40h |
| 122 | 1.1.11.5 | Bug Fixing | 7.14d? | 2025-09-04 | 2025-09-15 |  | 72.86d |  | Muzamal [70%] | 40h |
| 123 | 1.1.11.6 | Bug Fixing | 7.14d? | 2025-09-04 | 2025-09-15 | 63 | 72.86d |  | Shoaib [70%] | 40h |
| 124 | 1.1.12 | **Release environments upgrade** | 5.36d? | 2025-09-15 | 2025-09-22 | 117 | 72.86d | 0d |  | 90h |
| 125 | 1.1.12.1 | JG, TSY | 1.79d? | 2025-09-15 | 2025-09-17 |  | 72.86d | 0d | Bilal [70%]; Hamza [80%]; Ayesha [70%] | 30h |
| 126 | 1.1.12.2 | TA,Whirlpool, HS, Pursuit | 1.79d? | 2025-09-17 | 2025-09-18 | 125 | 72.86d | 0d | Bilal [70%]; Hamza [80%]; Ayesha [70%] | 30h |
| 127 | 1.1.12.3 | HY, WF, Dentsu Creative | 1.79d | 2025-09-18 | 2025-09-22 | 126 | 72.86d |  | Bilal [70%]; Hamza [80%]; Ayesha [70%] | 30h |
| 128 | 1.1.13 | Ready for UAT | 1d? | 2025-09-22 | 2025-09-23 | 124 | 72.86d |  |  |  |
| 130 | 1.2 | **APWorks** | 52.42d? | 2025-06-17 | 2025-08-29 |  | 74.86d |  |  | 1540.5h |
| 131 | 1.2.1 | Planning | 7.14d | 2025-06-17 | 2025-06-26 |  | 135.32d |  | Abid [70%] | 40h |
| 132 | 1.2.2 | Team Brainstorming | 0.62d | 2025-06-17 | 2025-06-17 |  | 94.21d | 1.04d | Asad [80%]; Yasir [80%]; Arslan [80%]; Ali [80%]; Bilal [80%] | 20h |

| ID | WBS | Task | Duration | Start | Finish | Predecessors | Total slack | Free slack | Constraint | Resources | Work |
| --- | --- | --- | --- | --- | --- | --- | --- | --- | --- | --- | --- |
| 133 | 1.2.3 | **Enabling user-specific report views and filter preferences to be retained during the session, enhancing usability and efficiency** | 18.67d? | 2025-06-17 | 2025-07-11 |  | 74.86d |  |  |  | 149h |
| 134 | 1.2.3.1 | Design document | 1.67d? | 2025-06-17 | 2025-06-18 |  | 74.86d | 0d |  | Asim [60%] | 8h |
| 135 | 1.2.3.2 | Design document review and structural changes marking | 0.75d? | 2025-06-18 | 2025-06-19 | 134, 132 | 93.17d | 0d |  | Ali [80%]; Abid [50%] | 6h |
| 136 | 1.2.3.3 | **Development** | 11.79d? | 2025-06-17 | 2025-07-02 |  | 95.59d | 0d |  |  | 60h |
| 137 | 1.2.3.3.1 | DotNet | 9.38d? | 2025-06-19 | 2025-07-02 | 135 | 93.17d | 0d |  | Ali [80%] | 60h |
| 138 | 1.2.3.3.2 | DB | 1d? | 2025-06-17 | 2025-06-17 |  | 133.96d |  |  |  |  |
| 139 | 1.2.3.4 | Deployment | 0.31d | 2025-07-02 | 2025-07-03 | 136 | 123.17d | 1.56d |  | Abid [40%] | 1h |
| 140 | 1.2.3.5 | **QA** | 13.29d? | 2025-06-23 | 2025-07-10 |  | 121.71d |  |  |  | 42h |
| 141 | 1.2.3.5.1 | Test case writing | 1.88d? | 2025-06-23 | 2025-06-24 | 135 | 121.71d | 0d | start no earlier than 2025-06-23 | Ayesha [80%] | 12h |
| 142 | 1.2.3.5.2 | Testing | 3.75d? | 2025-07-04 | 2025-07-10 | 139, 272 | 121.6d | 0d |  | Ayesha [80%] | 24h |
| 143 | 1.2.3.5.3 | QA Review and management | 1.88d | 2025-07-07 | 2025-07-08 | 145 | 126.53d |  |  | Bilal [40%] | 6h |
| 144 | 1.2.3.6 | **Bug fixing** | 6.49d? | 2025-07-03 | 2025-07-11 |  | 93.17d |  |  |  | 20h |
| 145 | 1.2.3.6.1 | Bug fixing | 1.88d? | 2025-07-03 | 2025-07-07 | 180 | 93.17d | 0d |  | Ali [80%] | 12h |
| 146 | 1.2.3.6.2 | Bug Verification | 1.25d? | 2025-07-10 | 2025-07-11 | 145, 142 | 121.6d | 3.82d |  | Ayesha [80%] | 8h |
| 147 | 1.2.3.7 | Review and Management | 7.5d? | 2025-06-19 | 2025-06-30 | 135 | 132.54d |  |  | Abid [20%] | 12h |
| 148 | 1.2.4 | **Net Amount Total: We need an additional calculated field in the header that sums the Invoice Net Amount. Currently, if they want to view the Invoice Net Amount total, they must add the line amounts outside of the system.** | 9.38d? | 2025-06-17 | 2025-06-30 |  | 76.53d |  |  |  | 43h |
| 149 | 1.2.4.1 | Design document | 1d? | 2025-06-18 | 2025-06-19 | 134 | 74.86d | 0d |  | Asim [50%] | 4h |
| 150 | 1.2.4.2 | Design document review and structural changes marking | 0.19d? | 2025-06-24 | 2025-06-24 | 149 | 81.9d | 0d | start no earlier than 2025-06-24 | Abid [50%]; Arslan [80%] | 2h |
| 151 | 1.2.4.3 | **Development** | 7.82d? | 2025-06-17 | 2025-06-26 |  | 87.22d | 0d |  |  | 20h |
| 152 | 1.2.4.3.1 | DotNet (invoice UI, Preview, manual entry screen) | 2.5d? | 2025-06-24 | 2025-06-26 | 150 | 81.9d | 0d |  | Arslan [80%] | 16h |
| 153 | 1.2.4.3.2 | DB | 1d? | 2025-06-17 | 2025-06-17 |  | 139.9d |  |  |  | 4h |
| 154 | 1.2.4.4 | Deployment | 0.31d? | 2025-06-26 | 2025-06-27 | 151 | 133.08d | 0d |  | Abid [40%] | 1h |
| 155 | 1.2.4.5 | **QA** | 3.38d? | 2025-06-25 | 2025-06-30 |  | 133.08d |  |  |  | 11h |
| 156 | 1.2.4.5.1 | Test case writing | 0.62d? | 2025-06-25 | 2025-06-25 | 149, 141 | 135.21d | 0d |  | Kashif [80%] | 4h |
| 157 | 1.2.4.5.2 | Testing | 0.94d? | 2025-06-27 | 2025-06-30 | 154 | 133.08d | 0d |  | Kashif [80%] | 6h |
| 158 | 1.2.4.5.3 | QA Review and management | 0.31d? | 2025-06-30 | 2025-06-30 | 157 | 133.08d |  |  | Bilal [40%] | 1h |

| ID | WBS | Task | Duration | Start | Finish | Predecessors | Total slack | Free slack | Resources | Work |
| --- | --- | --- | --- | --- | --- | --- | --- | --- | --- | --- |
| 159 | 1.2.4.6 | **Bug Fixing** | 0.47d? | 2025-06-27 | 2025-06-27 |  | 81.9d |  |  | 3h |
| 160 | 1.2.4.6.1 | Bug fixing | 0.31d? | 2025-06-27 | 2025-06-27 | 165 | 81.9d | 0d | Arslan [80%] | 2h |
| 161 | 1.2.4.6.2 | Bug Verification | 0.16d? | 2025-06-27 | 2025-06-27 | 160 | 133.79d |  | Kashif [80%] | 1h |
| 162 | 1.2.4.7 | Review and Management | 1.25d? | 2025-06-24 | 2025-06-25 | 150 | 135.89d |  | Abid [20%] | 2h |
| 163 | 1.2.5 | **Invoice comment log: They would like a way to add comments to an invoice for record-keeping, in case auditors inquire about invoice actions. (Routing history button)** | 17.29d? | 2025-06-17 | 2025-07-10 |  | 77.53d |  |  | 84h |
| 164 | 1.2.5.1 | Design document | 1.5d? | 2025-06-19 | 2025-06-23 | 149 | 74.86d | 0d | Asim [50%] | 6h |
| 165 | 1.2.5.2 | Design document review and structural changes marking | 0.38d? | 2025-06-26 | 2025-06-27 | 164, 152 | 81.9d | 0d | Abid [50%]; Arslan [80%] | 4h |
| 166 | 1.2.5.3 | **Development** | 14.14d? | 2025-06-17 | 2025-07-07 |  | 90.42d | 0d |  | 44h |
| 167 | 1.2.5.3.1 | DotNet | 5.62d? | 2025-06-27 | 2025-07-07 | 160 | 81.9d | 0.86d | Arslan [80%] | 36h |
| 168 | 1.2.5.3.2 | DB | 1d? | 2025-06-17 | 2025-06-17 |  | 139.58d |  |  | 8h |
| 169 | 1.2.5.4 | Deployment | 0.62d? | 2025-07-07 | 2025-07-07 | 166 | 126.44d | 0d | Abid [20%] | 2h |
| 170 | 1.2.5.5 | **QA** | 9.39d? | 2025-06-25 | 2025-07-09 |  | 126.44d |  |  | 14h |
| 171 | 1.2.5.5.1 | Test case writing | 0.62d? | 2025-06-25 | 2025-06-26 | 164, 156 | 135.21d |  | Kashif [80%] | 4h |
| 172 | 1.2.5.5.2 | Testing | 1.25d? | 2025-07-07 | 2025-07-09 | 169 | 126.44d |  | Kashif [80%] | 8h |
| 173 | 1.2.5.5.3 | QA Review and management | 0.62d? | 2025-06-25 | 2025-06-26 | 164, 156 | 135.21d |  | Bilal [40%] | 2h |
| 174 | 1.2.5.6 | **Bug fixing** | 1.88d? | 2025-07-08 | 2025-07-10 |  | 81.04d |  |  | 12h |
| 175 | 1.2.5.6.1 | Bug fixing | 1.25d? | 2025-07-08 | 2025-07-09 | 167, 69 | 81.04d | 0d | Arslan [80%] | 8h |
| 176 | 1.2.5.6.2 | Bug Verification | 0.62d? | 2025-07-09 | 2025-07-10 | 175 | 125.17d |  | Kashif [80%] | 4h |
| 177 | 1.2.5.7 | Review and Management | 1.25d? | 2025-06-27 | 2025-06-30 | 165 | 133.01d |  | Abid [20%] | 2h |
| 178 | 1.2.6 | **In Discrepant bucket, A way for Users to flag an invocie so they can easy find it later** | 24.68d? | 2025-06-17 | 2025-07-21 |  | 79.03d |  |  | 126h |
| 179 | 1.2.6.1 | Design document | 2d? | 2025-06-23 | 2025-06-25 | 164 | 74.86d | 0d | Asim [50%] | 8h |
| 180 | 1.2.6.2 | Design document review and structural changes marking | 0.38d? | 2025-07-02 | 2025-07-03 | 137 | 93.17d | 0d | Ali [80%]; Abid [50%] | 4h |
| 181 | 1.2.6.3 | **Development** | 7.81d? | 2025-07-07 | 2025-07-16 |  | 93.17d | 0d |  | 70h |
| 182 | 1.2.6.3.1 | DotNet | 7.81d? | 2025-07-07 | 2025-07-16 | 145 | 93.17d | 0d | Ali [80%] | 50h |
| 183 | 1.2.6.3.2 | DB | 3.12d? | 2025-07-09 | 2025-07-14 | 175 | 119.85d |  | Yasir [80%] | 20h |
| 184 | 1.2.6.4 | Deployment | 0.62d? | 2025-07-16 | 2025-07-17 | 181 | 117.78d | 0d | Abid [20%] | 1h |
| 185 | 1.2.6.5 | DB Packaging | 0.62d? | 2025-07-16 | 2025-07-17 | 181 | 119.97d |  | Arif [40%] | 2h |

| ID | WBS | Task | Type | Duration | Start | Finish | Predecessors | Total slack | Free slack | Resources | Work |
| --- | --- | --- | --- | --- | --- | --- | --- | --- | --- | --- | --- |
| 186 | 1.2.6.6 | **QA** |  | 17.88d? | 2025-06-25 | 2025-07-21 |  | 118.41d |  |  | 17h |
| 187 | 1.2.6.6.1 | Test case writing |  | 0.62d? | 2025-06-25 | 2025-06-25 | 179, 141 | 121.54d | 0d | Ayesha [80%] | 4h |
| 188 | 1.2.6.6.2 | Testing |  | 1.56d? | 2025-07-17 | 2025-07-21 | 184, 146 | 117.78d | 0d | Ayesha [80%] | 10h |
| 189 | 1.2.6.6.3 | QA Review and management |  | 0.94d? | 2025-07-17 | 2025-07-18 | 184 | 119.03d |  | Bilal [40%] | 3h |
| 190 | 1.2.6.7 | **Bug fixing** |  | 2.5d? | 2025-07-17 | 2025-07-21 |  | 93.17d |  |  | 14h |
| 191 | 1.2.6.7.1 | Bug fixing |  | 1.56d? | 2025-07-17 | 2025-07-18 | 198 | 93.17d | 0d | Ali [80%] | 10h |
| 192 | 1.2.6.7.2 | Bug Verification |  | 0.62d? | 2025-07-21 | 2025-07-21 | 191, 188 | 117.78d |  | Ayesha [80%] | 4h |
| 193 | 1.2.6.8 | Review and Management |  | 6.25d? | 2025-06-17 | 2025-06-25 |  | 136.21d |  | Abid [20%] | 10h |
| 194 | 1.2.7 | **Favorite button does not work ( Fix or hide) - Hide** |  | 26.36d? | 2025-06-17 | 2025-07-23 |  | 81.03d |  |  | 6.5h |
| 195 | 1.2.7.1 | Design document | milestone | 0d? | 2025-06-25 | 2025-06-25 | 179 | 74.86d | 0d | Asim [50%] |  |
| 196 | 1.2.7.2 | Design document review and structural changes marking | milestone | 0d? | 2025-07-18 | 2025-07-18 | 191 | 118.09d | 0d | Ali [80%]; Abid [50%] |  |
| 197 | 1.2.7.3 | **Development** |  | 22.18d? | 2025-06-17 | 2025-07-17 |  | 93.95d | 0d |  | 2h |
| 198 | 1.2.7.3.1 | DotNet |  | 0.31d? | 2025-07-16 | 2025-07-17 | 182 | 93.17d | 0d | Ali [80%] | 2h |
| 199 | 1.2.7.3.2 | DB |  | 1d? | 2025-06-17 | 2025-06-17 |  | 115.13d |  |  |  |
| 200 | 1.2.7.4 | Deployment |  | 0.62d? | 2025-07-17 | 2025-07-17 | 197 | 93.95d | 0d | Abid [20%] | 1h |
| 201 | 1.2.7.5 | **QA** |  | 16.79d? | 2025-06-25 | 2025-07-17 |  | 110.58d |  |  | 1.5h |
| 202 | 1.2.7.5.1 | Test case writing | milestone | 0d? | 2025-06-25 | 2025-06-25 | 195 | 136.29d |  | Kashif [80%] |  |
| 203 | 1.2.7.5.2 | Testing |  | 0.16d? | 2025-07-17 | 2025-07-17 | 200 | 93.95d | 0.78d | Kashif [80%] | 1h |
| 204 | 1.2.7.5.3 | QA Review and management |  | 0.16d? | 2025-07-17 | 2025-07-17 | 200 | 119.5d |  | Bilal [40%] | 0.5h |
| 205 | 1.2.7.6 | Bug fixing |  | 0.16d? | 2025-07-18 | 2025-07-18 | 191, 203 | 93.17d | 0d | Ali [80%] | 1h |
| 206 | 1.2.7.7 | Review and Management |  | 0.62d? | 2025-07-18 | 2025-07-23 | 196 | 116.09d |  | Abid [20%] | 1h |
| 207 | 1.2.8 | **Format all amounts to be trwo decimals (Appearing in filters)** |  | 30.46d? | 2025-06-17 | 2025-07-29 |  | 81.03d |  |  | 42h |
| 208 | 1.2.8.1 | Design document |  | 0.5d? | 2025-06-25 | 2025-06-25 | 195 | 74.86d | 0d | Asim [50%] | 2h |
| 209 | 1.2.8.2 | Design document review and structural changes marking |  | 0.71d? | 2025-07-18 | 2025-07-23 | 205, 208 | 91.17d | 0d | Ali [80%]; Abid [50%] | 4h |

| ID | WBS | Task | Type | Duration | Start | Finish | Predecessors | Total slack | Free slack | Resources | Work |
| --- | --- | --- | --- | --- | --- | --- | --- | --- | --- | --- | --- |
| 210 | 1.2.8.3 | **Development** |  | 28.89d? | 2025-06-17 | 2025-07-25 |  | 112d | 0d |  | 16h |
| 211 | 1.2.8.3.1 | DotNet |  | 2.5d? | 2025-07-23 | 2025-07-25 | 209 | 91.17d | 0d | Ali [80%] | 16h |
| 212 | 1.2.8.3.2 | DB |  | 1d? | 2025-06-17 | 2025-06-17 |  | 139.9d |  |  |  |
| 213 | 1.2.8.4 | Deployment |  | 0.62d? | 2025-07-25 | 2025-07-28 | 210 | 112d | 0d | Abid [20%] | 1h |
| 214 | 1.2.8.5 | **QA** |  | 23.67d? | 2025-06-25 | 2025-07-29 |  | 112d |  |  | 12h |
| 215 | 1.2.8.5.1 | Test case writing |  | 0.62d? | 2025-06-25 | 2025-06-26 | 208, 187 | 121.54d | 0d | Ayesha [80%] | 4h |
| 216 | 1.2.8.5.2 | Testing |  | 0.94d? | 2025-07-28 | 2025-07-29 | 213 | 112d |  | Ayesha [80%] | 6h |
| 217 | 1.2.8.5.3 | QA Review and management |  | 0.62d? | 2025-07-28 | 2025-07-29 | 213 | 112.31d |  | Bilal [40%] | 2h |
| 218 | 1.2.8.6 | **Bug fixing** |  | 0.47d? | 2025-07-28 | 2025-07-28 |  | 112.47d |  |  | 3h |
| 219 | 1.2.8.6.1 | Bug fixing |  | 0.31d? | 2025-07-28 | 2025-07-28 | 226 | 112.47d | 0d | Ali [80%] | 2h |
| 220 | 1.2.8.6.2 | Bug Verification |  | 0.16d? | 2025-07-28 | 2025-07-28 | 219 | 112.47d |  | Ayesha [80%] | 1h |
| 221 | 1.2.8.7 | Review and Management |  | 2.5d? | 2025-07-23 | 2025-07-25 | 209 | 113.56d |  | Abid [20%] | 4h |
| 222 | 1.2.9 | **If we add a new user and start with the sequence on screen, we get an error. Starting with "User Group" and then filling in rest of details, i.e. resource id, name, email and login, we get "null resource ID error. If we fill in all details and assign user** |  | 30.46d? | 2025-06-17 | 2025-07-29 |  | 112d |  |  | 10h |
| 223 | 1.2.9.1 | Design document | milestone | 0d? | 2025-06-25 | 2025-06-25 | 208 | 112.96d | 0d | Asim [50%] |  |
| 224 | 1.2.9.2 | Design document review and structural changes marking | milestone | 0d? | 2025-07-25 | 2025-07-25 | 211 | 91.17d | 0d | Ali [80%]; Abid [50%] |  |
| 225 | 1.2.9.3 | **Development** |  | 29.52d? | 2025-06-17 | 2025-07-28 |  | 91.17d | 0d |  | 4h |
| 226 | 1.2.9.3.1 | DotNet |  | 0.62d? | 2025-07-25 | 2025-07-28 | 224 | 91.17d | 0d | Ali [80%] | 4h |
| 227 | 1.2.9.3.2 | DB |  | 1d? | 2025-06-17 | 2025-06-17 |  | 119.69d |  |  |  |
| 228 | 1.2.9.4 | Deployment |  | 0.62d? | 2025-07-28 | 2025-07-29 | 225 | 91.17d | 0d | Abid [20%] | 1h |
| 229 | 1.2.9.5 | **QA** |  | 23.04d? | 2025-06-26 | 2025-07-29 |  | 112d |  |  | 3h |
| 230 | 1.2.9.5.1 | Test case writing | milestone | 0d? | 2025-06-26 | 2025-06-26 | 223, 215 | 121.54d | 0d | Ayesha [80%] |  |
| 231 | 1.2.9.5.2 | Testing |  | 0.31d? | 2025-07-29 | 2025-07-29 | 228 | 91.17d | 0d | Ayesha [80%] | 2h |
| 232 | 1.2.9.5.3 | Bug fixing | milestone | 0d? | 2025-07-29 | 2025-07-29 | 231 | 91.17d | 0d | Ali [80%] |  |
| 233 | 1.2.9.5.4 | QA Review and management |  | 0.31d? | 2025-07-29 | 2025-07-29 | 228 | 112d |  | Bilal [40%] | 1h |
| 234 | 1.2.9.6 | Review and Management |  | 1.25d? | 2025-07-25 | 2025-07-29 | 224 | 112.31d |  | Abid [20%] | 2h |

| ID | WBS | Task | Duration | Start | Finish | Predecessors | Total slack | Free slack | Constraint | Resources | Work | Text1 |
| --- | --- | --- | --- | --- | --- | --- | --- | --- | --- | --- | --- | --- |
| 235 | 1.2.10 | **Manually mark invoice Archieved** | 37.37d? | 2025-06-25 | 2025-08-19 |  | 91.17d | 1.13d |  |  | 191h |  |
| 236 | 1.2.10.1 | Design document | 2d? | 2025-06-25 | 2025-06-27 | 223 | 112.96d | 0d |  | Asim [50%] | 8h |  |
| 237 | 1.2.10.2 | Design document review and structural changes marking | 0.77d? | 2025-07-29 | 2025-07-30 | 236, 232 | 91.17d | 0d |  | Ali [80%]; Abid [50%] | 8h |  |
| 238 | 1.2.10.3 | **Development** | 10d? | 2025-07-30 | 2025-08-13 |  | 91.17d |  |  |  | 96h |  |
| 239 | 1.2.10.3.1 | DotNet- Mark the screen archive/unarchive and View in disable mode | 5d? | 2025-07-30 | 2025-08-06 | 237 | 91.17d | 0d |  | Ali [80%] | 32h |  |
| 240 | 1.2.10.3.2 | New Screen Development | 5d? | 2025-08-06 | 2025-08-13 | 239 | 91.17d | 0d |  | Ali [80%] | 32h |  |
| 241 | 1.2.10.3.3 | DB | 5.71d? | 2025-07-30 | 2025-08-06 | 237 | 98.27d |  |  | Yasir [70%] | 32h |  |
| 242 | 1.2.10.4 | Deployment | 1d? | 2025-08-06 | 2025-08-07 | 239 | 93.29d | 0d |  | Abid [20%] | 1h |  |
| 243 | 1.2.10.5 | **QA** | 33.25d? | 2025-06-27 | 2025-08-13 |  | 93.29d |  |  |  | 46h |  |
| 244 | 1.2.10.5.1 | Test case writing | 1.88d? | 2025-06-27 | 2025-07-01 | 236 | 124.67d |  |  | Kashif [80%] | 12h |  |
| 245 | 1.2.10.5.2 | Testing | 4.69d? | 2025-08-07 | 2025-08-13 | 242 | 93.29d |  |  | Kashif [80%] | 30h |  |
| 246 | 1.2.10.5.3 | QA Review and management | 1.62d? | 2025-08-07 | 2025-08-08 | 242 | 96.36d |  |  | Bilal [40%] | 4h |  |
| 247 | 1.2.10.6 | **Bug fixing** | 6.81d? | 2025-08-07 | 2025-08-19 |  | 91.17d |  |  |  | 24h |  |
| 248 | 1.2.10.6.1 | Bug fixing | 1.56d? | 2025-08-13 | 2025-08-15 | 242, 240 | 91.17d | 0d |  | Ali [80%] | 10h |  |
| 249 | 1.2.10.6.2 | DB Bug fixing | 1.5d | 2025-08-07 | 2025-08-08 | 242 | 96.48d |  |  | Yasir [50%] | 6h |  |
| 250 | 1.2.10.6.3 | Bug Verification | 1.25d? | 2025-08-15 | 2025-08-19 | 248 | 91.17d |  |  | Kashif [80%] | 8h |  |
| 251 | 1.2.10.7 | Review and Management | 5d? | 2025-07-30 | 2025-08-06 | 237 | 98.98d |  |  | Abid [20%] | 8h |  |
| 252 | 1.2.11 | **eInvoice pull** | 45.17d? | 2025-06-17 | 2025-08-20 |  | 79.56d | 0d |  |  | 729h | Waiting for design document |
| 253 | 1.2.11.1 | **eInvoices (iPC)(BingAd, DV360,GCM,GoogleAd, Twitter)** | 30.3d? | 2025-06-17 | 2025-07-29 |  | 79.56d |  |  |  | 199h |  |
| 254 | 1.2.11.1.1 | KickOff meeting with Tao | 0.5d? | 2025-06-18 | 2025-06-18 |  | 78.43d | 0d | start no earlier than 2025-06-18 | Tao [25%]; Abid [25%]; Shoaib [25%] | 3h |  |
| 255 | 1.2.11.1.2 | API Review and Postman calls configurations | 7.5d | 2025-06-18 | 2025-06-30 | 254 | 78.43d | 0d |  | Tao [50%]; Shoaib [60%] | 60h |  |
| 256 | 1.2.11.1.3 | Design document review and structural changes marking | 1d? | 2025-06-30 | 2025-07-01 | 255 | 78.43d | 0d |  | Shoaib [50%]; Abid [50%] | 8h |  |
| 257 | 1.2.11.1.4 | **Development** | 20.18d? | 2025-07-01 | 2025-07-29 |  | 78.43d |  |  |  | 128h |  |
| 258 | 1.2.11.1.4.1 | DotNet - iPC Changes(New Methods for 4 Platforms + Expected change for 1 Platform) + Packaging and Deployment | 18.75d? | 2025-07-01 | 2025-07-25 | 256 | 78.43d | 0d |  | Shoaib [80%] | 120h |  |
| 259 | 1.2.11.1.4.2 | DB | 1.43d? | 2025-07-25 | 2025-07-29 | 258 | 104.9d |  |  | Yasir [70%] | 8h |  |

| ID | WBS | Task | Type | Duration | Start | Finish | Predecessors | Total slack | Free slack | Constraint | Resources | Work |
| --- | --- | --- | --- | --- | --- | --- | --- | --- | --- | --- | --- | --- |
| 260 | 1.2.11.1.5 | **QA** |  | 1d? | 2025-06-17 | 2025-06-17 |  | 134.21d |  |  |  |  |
| 261 | 1.2.11.1.5.1 | Bug fixing |  | 1d? | 2025-06-17 | 2025-06-17 |  | 134.21d |  |  |  |  |
| 262 | 1.2.11.1.6 | Review and Management |  | 1d? | 2025-06-17 | 2025-06-17 |  | 134.21d |  |  |  |  |
| 263 | 1.2.11.2 | **eInvoices (Apworks)** |  | 43.04d? | 2025-06-19 | 2025-08-20 |  | 90.04d |  |  |  | 466h |
| 264 | 1.2.11.2.1 | Design document |  | 2d? | 2025-06-19 | 2025-06-23 |  | 90.04d | 0d | start no earlier than 2025-06-19 | Tao [50%] | 8h |
| 265 | 1.2.11.2.2 | Design document review and structural changes marking |  | 1.04d? | 2025-06-23 | 2025-06-24 | 264 | 90.04d | 0d |  | Abid [40%]; Asim [40%]; Tao [40%] | 10h |
| 266 | 1.2.11.2.3 | **Development** |  | 30.73d? | 2025-06-23 | 2025-08-04 |  | 90.04d | 0d |  |  | 250h |
| 267 | 1.2.11.2.3.1 | Dot Net |  | 29.69d? | 2025-06-24 | 2025-08-04 | 265 | 90.04d |  |  | Asad [80%] | 190h |
| 268 | 1.2.11.2.3.2 | DB |  | 9.38d? | 2025-06-23 | 2025-07-04 | 264 | 111.4d |  |  | Yasir [80%] | 60h |
| 269 | 1.2.11.2.4 | Deployment |  | 2.5d? | 2025-08-04 | 2025-08-07 | 266 | 90.04d | 0d |  | Abid [20%] | 4h |
| 270 | 1.2.11.2.5 | DB Packaging |  | 1.25d? | 2025-08-04 | 2025-08-06 | 266 | 99.1d |  |  | Yasir [80%] | 8h |
| 271 | 1.2.11.2.6 | **QA** |  | 37.75d? | 2025-06-26 | 2025-08-20 |  | 90.04d |  |  |  | 146h |
| 272 | 1.2.11.2.6.1 | Test case writing |  | 6.25d? | 2025-06-26 | 2025-07-04 | 265, 230 | 121.54d | 0d |  | Ayesha [80%] | 40h |
| 273 | 1.2.11.2.6.2 | Testing |  | 6.25d? | 2025-08-07 | 2025-08-18 | 269 | 91.6d |  |  | Ayesha [80%] | 40h |
| 274 | 1.2.11.2.6.3 | Bug fixing |  | 7.81d? | 2025-08-07 | 2025-08-20 | 269 | 90.04d |  |  | Asad [80%] | 50h |
| 275 | 1.2.11.2.6.4 | DB Bug fixing |  | 2.5d? | 2025-08-07 | 2025-08-11 | 269 | 95.35d |  |  | Yasir [80%] | 16h |
| 276 | 1.2.11.2.7 | Review and Management |  | 25d? | 2025-06-23 | 2025-07-30 | 264 | 104.08d |  |  | Abid [20%] | 40h |
| 277 | 1.2.11.3 | iPC - SelfServices | manual | 1d | 2025-06-17 | 2025-06-17 |  |  |  |  |  |  |
| 278 | 1.2.11.4 | **Upgrade ApWorks application to dotnet Core 9.0 from 7.0** |  | 0d | 2025-06-17 | 2025-06-17 |  | 135.21d |  |  |  | 48h |
| 279 | 1.2.11.4.1 | Lambda Upgrade | manual | 1d? | 2025-06-17 | 2025-06-17 |  |  |  |  |  | 8h |
| 280 | 1.2.11.4.2 | Application upgrade (need to resolve aws container issue with core 9.0) | manual | 1d? | 2025-06-17 | 2025-06-17 |  |  |  |  |  | 32h |
| 281 | 1.2.11.4.3 | Azure service upgrade | manual | 1d? | 2025-06-17 | 2025-06-17 |  |  |  |  |  | 8h |
| 282 | 1.2.11.5 | Separate Integration layer from main application(80 % work completed, only container setup things need to be verified) | manual | 1d? | 2025-06-17 | 2025-06-17 |  |  |  |  |  | 16h |
| 284 | 1.2.12 | **2nd integration / Integration Test** |  | 6.25d | 2025-08-20 | 2025-08-28 | 252, 235 | 90.04d | 0d |  |  | 100h |
| 285 | 1.2.12.1 | Testing |  | 6.25d | 2025-08-20 | 2025-08-28 |  | 90.04d |  |  | Bilal [40%] | 20h |
| 286 | 1.2.12.2 | Testing |  | 6.25d | 2025-08-20 | 2025-08-28 |  | 90.04d |  |  | Kashif [80%] | 40h |
| 287 | 1.2.12.3 | Testing |  | 6.25d | 2025-08-20 | 2025-08-28 |  | 90.04d |  |  | Kashif [80%] | 40h |
| 288 | 1.2.13 | Ready for UAT |  | 1d? | 2025-08-28 | 2025-08-29 | 284 | 90.04d |  |  |  |  |

| ID | WBS | Task | Duration | Start | Finish | Predecessors | Total slack | Constraint | Resources | Work |
| --- | --- | --- | --- | --- | --- | --- | --- | --- | --- | --- |
| 290 | 2 | **Mobile App** | 142.46d? | 2025-06-17 | 2026-01-02 |  | 0d |  |  | 1160h |
| 291 | 2.1 | Estimation and Planning | 1d? | 2025-06-17 | 2025-06-17 |  | 141.46d |  |  |  |
| 292 | 2.2 | Technical R&D and Management | 125d | 2025-06-17 | 2025-12-09 |  | 17.46d |  | Muzamal [20%] | 200h |
| 293 | 2.3 | Development | 93.75d? | 2025-06-17 | 2025-10-27 |  | 48.71d |  | Aimen [80%] | 600h |
| 294 | 2.4 | **QA** | 123.33d? | 2025-07-14 | 2026-01-02 |  | 0d | start no earlier than 2025-07-14 |  | 360h |
| 295 | 2.4.1 | Test case writing | 20d? | 2025-07-14 | 2025-08-11 |  | 0d |  | Kashif [50%] | 80h |
| 296 | 2.4.2 | Testing | 83.33d? | 2025-08-11 | 2025-12-05 | 295 | 0d |  | Kashif [30%] | 200h |
| 297 | 2.4.3 | Final Verification | 20d? | 2025-12-05 | 2026-01-02 | 296 | 0d |  | Bilal [50%] | 80h |
