Schedule from MS Project, 2025-06-17 to 2026-01-02.

## Calendars

- Standard: Mon-Fri 08:00-12:00, 13:00-17:00; Sat-Sun off. Exceptions (off unless hours are given): 2025-08-14 (Augus 14).

## Resources

| Resource |
| --- |
| Abid |
| Asad |
| Yasir |
| Arslan |
| Ali |
| Bilal |
| Asim |
| Muzamal |
| Arif |
| Hamza |
| Tao |
| Shoaib |
| Ayesha |
| Aimen |
| Kashif |

## Schedule

| ID | WBS | Task | Type | Duration | Start | Finish | Predecessors | Total slack | Free slack | Constraint | Resources | Work |
| --- | --- | --- | --- | --- | --- | --- | --- | --- | --- | --- | --- | --- |
| 1 | 1 | **2025.3** |  | 61.44d? | 2025-06-17 | 2025-09-11 |  | 81.02d |  |  |  | 3170.5h |
| 2 | 1.1 | **Nexelus** |  | 58.67d? | 2025-06-17 | 2025-09-08 |  | 83.79d |  |  |  | 1621h |
| 3 | 1.1.1 | Planning |  | 60h | 2025-06-17 | 2025-06-26 |  | 134.96d |  |  | Abid [50%] | 30h |
| 4 | 1.1.2 | Release briefing |  | 4.17h | 2025-06-23 | 2025-06-23 |  | 85.18d | 0d | start no earlier than 2025-06-23 | Muzamal [60%]; Bilal [60%]; Arif [60%]; Abid [60%] | 10h |
| 5 | 1.1.3 | **Delopment** |  | 45.17d? | 2025-06-17 | 2025-08-20 |  | 89.83d |  |  |  | 1251h |
| 6 | 1.1.3.1 | Rapid 7 Report Vulnerabilities. |  | 6.25d? | 2025-06-23 | 2025-07-01 | 4 | 85.18d | 0d | start no earlier than 2025-06-23 | Muzamal [60%] | 30h |
| 7 | 1.1.3.2 | **Allow PO numbers to be appended automatically to campaign names. By Default the IO number is added but when replacing name with Placement or Package name, can the IO number be appended?** |  | 10.41d? | 2025-06-27 | 2025-07-14 |  | 86.66d |  |  |  | 60h |
| 8 | 1.1.3.2.1 | Design document |  | 6h | 2025-06-27 | 2025-06-30 | 246 | 86.66d | 0d | start no earlier than 2025-06-23 | Asim | 6h |
| 9 | 1.1.3.2.2 | Design document review and structural changes marking |  | 5.46h | 2025-07-01 | 2025-07-02 | 8, 4, 6 | 85.18d | 0d |  | Abid [50%]; Muzamal [60%] | 6h |
| 10 | 1.1.3.2.3 | **Development** |  | 5d? | 2025-07-02 | 2025-07-09 |  | 85.18d | 0d |  |  | 24h |
| 11 | 1.1.3.2.3.1 | DotNet |  | 40h | 2025-07-02 | 2025-07-09 | 9 | 85.18d | 0d |  | Muzamal [60%] | 24h |
| 12 | 1.1.3.2.3.2 | DB | milestone | 0h | 2025-07-02 | 2025-07-02 | 9 | 90.18d | 5d |  | Arif [50%] |  |
| 13 | 1.1.3.2.3.3 | DB Packaging | milestone | 0d? | 2025-07-09 | 2025-07-09 | 11, 12 | 85.18d |  |  | Arif [50%] |  |
| 14 | 1.1.3.2.4 | **QA** |  | 7.5d? | 2025-07-02 | 2025-07-14 |  | 90.18d |  |  |  | 18h |
| 15 | 1.1.3.2.4.1 | Test case writing |  | 0.62d? | 2025-07-02 | 2025-07-03 | 9 | 97.07d | 0d |  | Hamza [80%] | 4h |
| 16 | 1.1.3.2.4.2 | Testing |  | 1.25d? | 2025-07-09 | 2025-07-10 | 10 | 85.18d | 0d |  | Hamza [80%] | 8h |
| 17 | 1.1.3.2.4.3 | Bug fixing |  | 1.25d? | 2025-07-10 | 2025-07-14 | 21, 16 | 85.18d | 0d |  | Muzamal [60%] | 6h |
| 18 | 1.1.3.2.5 | Review and Management |  | 30h | 2025-07-02 | 2025-07-08 | 9 | 127.13d |  |  | Abid [20%] | 6h |
| 19 | 1.1.3.3 | **Add KPI input fields forall metric types, not just Viewability** |  | 14.36d? | 2025-06-30 | 2025-07-18 |  | 86.79d |  |  |  | 42h |
| 20 | 1.1.3.3.1 | Design document |  | 4h | 2025-06-30 | 2025-06-30 | 8 | 86.79d | 0d |  | Asim | 4h |
| 21 | 1.1.3.3.2 | Design document review and structural changes marking |  | 7.5h | 2025-07-09 | 2025-07-10 | 20, 11 | 85.5d | 0.31d |  | Abid [30%]; Muzamal [60%]; Arif [20%] | 6h |
| 22 | 1.1.3.3.3 | **Development** |  | 3.33d | 2025-07-14 | 2025-07-17 |  | 85.18d | 0d |  |  | 16h |
| 23 | 1.1.3.3.3.1 | DotNet |  | 26.67h | 2025-07-14 | 2025-07-17 | 17 | 85.18d | 0d |  | Muzamal [60%] | 16h |
| 24 | 1.1.3.3.3.2 | DB | milestone | 0h | 2025-07-14 | 2025-07-14 | 17 | 90.51d |  |  |  |  |

| ID | WBS | Task | Duration | Start | Finish | Predecessors | Total slack | Free slack | Resources | Work |
| --- | --- | --- | --- | --- | --- | --- | --- | --- | --- | --- |
| 25 | 1.1.3.3.4 | **QA** | 11.57d? | 2025-07-03 | 2025-07-18 |  | 86.43d | 0d |  | 14h |
| 26 | 1.1.3.3.4.1 | Test case writing | 0.94d? | 2025-07-03 | 2025-07-04 | 15 | 97.07d |  | Hamza [80%] | 6h |
| 27 | 1.1.3.3.4.2 | Testing | 0.62d? | 2025-07-17 | 2025-07-18 | 22 | 87.17d |  | Hamza [80%] | 4h |
| 28 | 1.1.3.3.4.3 | Bug fixing | 0.83d? | 2025-07-17 | 2025-07-18 | 32 | 85.18d | 0d | Muzamal [60%] | 4h |
| 29 | 1.1.3.3.5 | Review and Management | 10h | 2025-07-14 | 2025-07-15 | 17 | 122.13d |  | Abid [20%] | 2h |
| 30 | 1.1.3.4 | **Showold vs. new valueson revision screens (e.g., budget, dates) (Meta, TTD, LinkedIN, Twitter, Bing Ad, DV360)** | 34.96d? | 2025-06-30 | 2025-08-19 |  | 84.08d | 0.29d |  | 418h |
| 31 | 1.1.3.4.1 | Design document | 24h | 2025-06-30 | 2025-07-03 | 20 | 112.29d | 0d |  | 16h |
| 32 | 1.1.3.4.2 | Design document review and structural changes marking | 4.24h | 2025-07-17 | 2025-07-17 | 23 | 85.18d | 0d | Abid [60%]; Muzamal [60%]; Arif [60%]; Bilal [60%]; Hamza [60%] | 12h |
| 33 | 1.1.3.4.3 | **Development** | 17.35d? | 2025-07-18 | 2025-08-13 |  | 85.18d |  |  | 224h |
| 34 | 1.1.3.4.3.1 | **DotNet** | 17.35d | 2025-07-18 | 2025-08-13 |  | 85.18d |  |  | 168h |
| 35 | 1.1.3.4.3.1.1 | TTD | 60h | 2025-07-18 | 2025-07-30 | 28 | 85.18d | 0d | Muzamal [60%] | 36h |
| 36 | 1.1.3.4.3.1.2 | LinkedIn | 120h | 2025-07-23 | 2025-08-13 | 32, 121 | 84.08d | 0d | Abid [30%] | 36h |
| 37 | 1.1.3.4.3.1.3 | Twitter | 60h | 2025-07-30 | 2025-08-08 | 35 | 87.68d | 0d | Muzamal [60%] | 36h |
| 38 | 1.1.3.4.3.1.4 | DV360 | 37.5h | 2025-07-28 | 2025-08-04 | 42 | 85.89d | 0d | Shoaib [80%] | 30h |
| 39 | 1.1.3.4.3.1.5 | Meta | 37.5h | 2025-08-06 | 2025-08-12 | 43 | 85.89d | 0d | Shoaib [80%] | 30h |
| 40 | 1.1.3.4.3.2 | **iPC** | 10.31d? | 2025-07-22 | 2025-08-06 |  | 85.89d |  |  | 36h |
| 41 | 1.1.3.4.3.2.1 | BingAd | 1.88d? | 2025-07-22 | 2025-07-24 | 279 | 85.89d | 0d | Shoaib [80%] | 12h |
| 42 | 1.1.3.4.3.2.2 | DV360 | 1.88d? | 2025-07-24 | 2025-07-28 | 41 | 85.89d | 0d | Shoaib [80%] | 12h |
| 43 | 1.1.3.4.3.2.3 | Meta | 1.88d? | 2025-08-04 | 2025-08-06 | 38 | 85.89d | 0d | Shoaib [80%] | 12h |
| 44 | 1.1.3.4.3.3 | DB | 50h | 2025-07-18 | 2025-07-29 | 28 | 98.31d | 0d | Arif [40%] | 20h |
| 45 | 1.1.3.4.4 | Deploymnet and Packaging | 0.62d? | 2025-07-29 | 2025-07-29 | 44 | 98.31d |  | Arif [40%] | 2h |
| 46 | 1.1.3.4.5 | **QA** | 31.96d? | 2025-07-03 | 2025-08-19 |  | 84.08d |  |  | 134h |
| 47 | 1.1.3.4.5.1 | Test case writing | 3.75d? | 2025-07-03 | 2025-07-09 | 31 | 112.29d |  | Hamza [80%] | 24h |
| 48 | 1.1.3.4.5.2 | **Testing** | 12.35d? | 2025-07-30 | 2025-08-18 |  | 84.26d |  |  | 40h |
| 49 | 1.1.3.4.5.2.1 | TTD | 1.25d? | 2025-07-30 | 2025-07-31 | 35 | 93.93d | 6.25d | Hamza [80%] | 8h |
| 50 | 1.1.3.4.5.2.2 | LinkedIn | 1.25d? | 2025-08-13 | 2025-08-15 | 36 | 84.08d | 0d | Hamza [80%] | 8h |
| 51 | 1.1.3.4.5.2.3 | Twitter | 1.25d? | 2025-08-15 | 2025-08-18 | 37, 50 | 84.08d | 0d | Hamza [80%] | 8h |
| 52 | 1.1.3.4.5.2.4 | DV360 | 1.25d? | 2025-08-04 | 2025-08-05 | 38 | 91.38d | 5.31d | Hamza [80%] | 8h |
| 53 | 1.1.3.4.5.2.5 | Meta | 1.25d? | 2025-08-12 | 2025-08-13 | 39 | 85.89d | 0d | Hamza [80%] | 8h |

| ID | WBS | Task | Duration | Start | Finish | Predecessors | Total slack | Free slack | Resources | Work |
| --- | --- | --- | --- | --- | --- | --- | --- | --- | --- | --- |
| 54 | 1.1.3.4.5.3 | **Bug fixing** | 6.1d? | 2025-08-08 | 2025-08-19 |  | 84.08d |  |  | 30h |
| 55 | 1.1.3.4.5.3.1 | TTD | 1.25d? | 2025-08-08 | 2025-08-12 | 49, 37 | 87.68d | 3.6d | Muzamal [60%] | 6h |
| 56 | 1.1.3.4.5.3.2 | LinkedIn | 2.5d? | 2025-08-15 | 2025-08-19 | 50 | 84.08d |  | Abid [30%] | 6h |
| 57 | 1.1.3.4.5.3.3 | Twitter | 1.25d? | 2025-08-18 | 2025-08-19 | 51, 55 | 84.08d |  | Muzamal [60%] | 6h |
| 58 | 1.1.3.4.5.3.4 | DV360 | 1.07d? | 2025-08-12 | 2025-08-13 | 52, 39 | 86.07d | 0.18d | Shoaib [70%] | 6h |
| 59 | 1.1.3.4.5.3.5 | Meta | 1.07d? | 2025-08-15 | 2025-08-18 | 53, 58 | 85.89d | 2.1d | Shoaib [70%] | 6h |
| 60 | 1.1.3.4.5.4 | QA Review and Management | 12.5d | 2025-07-30 | 2025-08-18 | 35 | 85.18d |  | Bilal [40%] | 40h |
| 61 | 1.1.3.4.6 | Review and Management | 150h | 2025-07-18 | 2025-08-19 | 25 | 84.43d |  | Abid [20%] | 30h |
| 62 | 1.1.3.5 | **Explore ifobjective field can pre-populatefrom media plan** | 14.27d? | 2025-06-30 | 2025-07-21 |  | 86.79d |  |  | 98h |
| 63 | 1.1.3.5.1 | Design document | 8h | 2025-06-30 | 2025-07-01 | 20 | 86.79d | 0d | Asim | 8h |
| 64 | 1.1.3.5.2 | Design document review and structural changes marking | 3.33h | 2025-07-04 | 2025-07-04 | 63, 177 | 85.38d | 0d | Arslan [60%]; Abid [60%]; Arif [60%]; Yasir [60%]; Bilal [60%]; Hamza [60%] | 12h |
| 65 | 1.1.3.5.3 | **Development** | 7.19d? | 2025-07-04 | 2025-07-15 |  | 86.32d | 0d |  | 50h |
| 66 | 1.1.3.5.3.1 | DotNet | 6.25d? | 2025-07-07 | 2025-07-15 | 185 | 85.38d | 0d | Arslan [80%] | 40h |
| 67 | 1.1.3.5.3.2 | DB | 2.08d? | 2025-07-04 | 2025-07-08 | 64 | 103.61d |  | Arif [60%] | 10h |
| 68 | 1.1.3.5.4 | **QA** | 6.36d? | 2025-07-10 | 2025-07-21 |  | 88.84d | 1.81d |  | 26h |
| 69 | 1.1.3.5.4.1 | Test case writing | 0.94d? | 2025-07-10 | 2025-07-11 | 64, 16 | 101.86d |  | Hamza [80%] | 6h |
| 70 | 1.1.3.5.4.2 | Testing | 1.25d? | 2025-07-17 | 2025-07-21 | 65, 32 | 96.43d |  | Hamza [80%] | 8h |
| 71 | 1.1.3.5.4.3 | Bug fixing | 1.56d? | 2025-07-16 | 2025-07-17 | 76 | 85.38d | 0d | Arslan [80%] | 10h |
| 72 | 1.1.3.5.4.4 | QA Review and Management | 0.62d? | 2025-07-15 | 2025-07-16 | 65 | 99.13d |  | Bilal [40%] | 2h |
| 73 | 1.1.3.5.5 | Review and Management | 1.25d? | 2025-07-03 | 2025-07-07 | 31 | 128.29d |  | Abid [20%] | 2h |
| 74 | 1.1.3.6 | **Assess ability to toggleadvantage campaign budget on/offvia API** | 23.42d? | 2025-07-01 | 2025-08-04 |  | 86.79d | 10.83d |  | 115h |
| 75 | 1.1.3.6.1 | Design document | 1d? | 2025-07-01 | 2025-07-02 | 63 | 86.79d | 0d | Asim | 8h |
| 76 | 1.1.3.6.2 | Design document review and architechtural changes marking | 0.42d? | 2025-07-15 | 2025-07-16 | 75, 66 | 85.38d | 0d | Arslan [60%]; Abid [60%]; Arif [60%]; Yasir [60%]; Bilal [60%]; Hamza [60%] | 12h |
| 77 | 1.1.3.6.3 | **Development** | 6.25d? | 2025-07-17 | 2025-07-28 |  | 85.38d | 0d |  | 50h |
| 78 | 1.1.3.6.3.1 | DotNet | 6.25d? | 2025-07-17 | 2025-07-28 | 71, 76 | 85.38d | 0d | Arslan [80%] | 40h |
| 79 | 1.1.3.6.3.2 | DB | 2.08d? | 2025-07-18 | 2025-07-22 | 76, 91 | 102.52d |  | Arif [60%] | 10h |

| ID | WBS | Task | Duration | Start | Finish | Predecessors | Total slack | Free slack | Constraint | Resources | Work |
| --- | --- | --- | --- | --- | --- | --- | --- | --- | --- | --- | --- |
| 80 | 1.1.3.6.4 | **QA** | 9.79d? | 2025-07-16 | 2025-07-30 |  | 93.61d |  |  |  | 25h |
| 81 | 1.1.3.6.4.1 | Test case writing | 0.94d? | 2025-07-16 | 2025-07-17 | 76 | 106.74d |  |  | Hamza [80%] | 6h |
| 82 | 1.1.3.6.4.2 | Testing | 0.94d? | 2025-07-28 | 2025-07-29 | 77 | 98.92d |  |  | Hamza [80%] | 6h |
| 83 | 1.1.3.6.4.3 | Bug fixing | 1.56d? | 2025-07-28 | 2025-07-30 | 100 | 85.38d | 0d |  | Arslan [80%] | 10h |
| 84 | 1.1.3.6.4.4 | QA Review and Management | 0.94d? | 2025-07-28 | 2025-07-29 | 77 | 98.92d |  |  | Bilal [40%] | 3h |
| 85 | 1.1.3.6.5 | Review and Management | 8.33d? | 2025-07-23 | 2025-08-04 | 75, 68 | 94.63d |  |  | Abid [30%] | 20h |
| 86 | 1.1.3.7 | **Enable multiple media plans under one Bing IO** | 31.58d? | 2025-07-04 | 2025-08-20 |  | 83.79d | 0d |  |  | 250h |
| 87 | 1.1.3.7.1 | Design document | 1d? | 2025-07-04 | 2025-07-07 | 99 | 86.79d | 0d | start no earlier than 2025-07-01 | Asim | 8h |
| 88 | 1.1.3.7.2 | Design document review and architechtural changes marking | 0.5d? | 2025-07-07 | 2025-07-08 | 87 | 86.79d | 0d |  | Asim [50%]; Abid [50%]; Bilal [50%]; Arif [50%] | 8h |
| 89 | 1.1.3.7.3 | **Development** | 23.83d? | 2025-07-08 | 2025-08-08 |  | 83.79d | 0d |  |  | 140h |
| 90 | 1.1.3.7.3.1 | DotNet | 20.83d? | 2025-07-08 | 2025-08-08 | 88 | 83.79d | 0d |  | Asim [60%] | 100h |
| 91 | 1.1.3.7.3.2 | DB | 8.33d? | 2025-07-08 | 2025-07-18 | 88 | 99.29d | 0d |  | Arif [60%] | 40h |
| 92 | 1.1.3.7.4 | **QA** | 23.88d? | 2025-07-16 | 2025-08-20 |  | 83.79d |  |  |  | 74h |
| 93 | 1.1.3.7.4.1 | Test case writing | 1.88d? | 2025-07-16 | 2025-07-18 | 88, 76 | 105.8d |  |  | Hamza [80%] | 12h |
| 94 | 1.1.3.7.4.2 | Testing | 6.25d? | 2025-08-08 | 2025-08-20 | 89 | 83.79d |  |  | Bilal [60%] | 30h |
| 95 | 1.1.3.7.4.3 | Bug fixing | 3.33d? | 2025-08-08 | 2025-08-15 | 90 | 86.71d |  |  | Asim [60%] | 16h |
| 96 | 1.1.3.7.4.4 | Bug fixing DB | 5d | 2025-08-08 | 2025-08-18 | 89 | 85.04d |  |  | Arif [40%] | 16h |
| 97 | 1.1.3.7.5 | Review and Management | 12.5d? | 2025-07-07 | 2025-07-28 | 87 | 99.88d |  |  | Abid [20%] | 20h |
| 98 | 1.1.3.8 | **DENTSU _ Implementing a custom upload error log in Excel to provide detailed error tracking and improved troubleshooting.** | 31.66d? | 2025-07-02 | 2025-08-18 |  | 85.38d | 1.59d |  |  | 157h |
| 99 | 1.1.3.8.1 | Design document | 1.67d? | 2025-07-02 | 2025-07-04 | 75 | 86.79d | 0d |  | Asim [60%] | 8h |
| 100 | 1.1.3.8.2 | Design document review and architechtural changes marking | 0.42d? | 2025-07-28 | 2025-07-28 | 99, 78 | 85.38d | 0d |  | Arslan [60%]; Abid [60%]; Arif [60%]; Yasir [60%]; Bilal [60%]; Hamza [60%] | 12h |
| 101 | 1.1.3.8.3 | **Development** | 8.59d? | 2025-07-28 | 2025-08-08 |  | 86.48d | 0d |  |  | 73h |
| 102 | 1.1.3.8.3.1 | DotNet | 7.03d? | 2025-07-30 | 2025-08-08 | 83 | 86.48d |  |  | Arslan [80%] | 45h |
| 103 | 1.1.3.8.3.2 | DB (For 1 uploads) | 4.17d? | 2025-07-28 | 2025-08-01 | 100 | 90.9d |  |  | Yasir [60%] | 20h |
| 104 | 1.1.3.8.3.3 | DB Review and Management | 5d | 2025-07-28 | 2025-08-04 | 100 | 90.07d |  |  | Arif [20%] | 8h |

| ID | WBS | Task | Duration | Start | Finish | Predecessors | Total slack | Free slack | Constraint | Resources | Work |
| --- | --- | --- | --- | --- | --- | --- | --- | --- | --- | --- | --- |
| 105 | 1.1.3.8.4 | **QA** | 12.97d? | 2025-07-28 | 2025-08-15 |  | 86.48d |  |  |  | 44h |
| 106 | 1.1.3.8.4.1 | Test case writing | 1.25d? | 2025-07-28 | 2025-07-29 | 100 | 98.19d |  |  | Hamza [80%] | 8h |
| 107 | 1.1.3.8.4.2 | Testing | 2.5d? | 2025-08-08 | 2025-08-12 | 101 | 86.48d | 0d |  | Hamza [80%] | 16h |
| 108 | 1.1.3.8.4.3 | Bug fixing | 1.88d? | 2025-08-12 | 2025-08-15 | 107 | 86.48d |  |  | Arslan [80%] | 12h |
| 109 | 1.1.3.8.4.4 | QA Review and Management | 2.5d? | 2025-08-08 | 2025-08-12 | 101 | 88.35d |  |  | Bilal [40%] | 8h |
| 110 | 1.1.3.8.5 | Review and Management | 12.5d? | 2025-07-30 | 2025-08-18 | 99, 83 | 85.38d |  |  | Abid [20%] | 20h |
| 111 | 1.1.3.9 | **MC rates for PBG** | 26.12d? | 2025-06-17 | 2025-07-23 |  | 100.21d |  |  |  | 81h |
| 112 | 1.1.3.9.1 | Design document | 1d? | 2025-06-17 | 2025-06-17 |  | 141.46d |  |  |  |  |
| 113 | 1.1.3.9.2 | Design document review and structural changes marking | 0.25d? | 2025-06-17 | 2025-06-17 |  | 142.21d |  |  |  |  |
| 114 | 1.1.3.9.3 | **Development** | 8d? | 2025-07-07 | 2025-07-17 |  | 86.08d | 0d | start no earlier than 2025-07-07 |  | 57h |
| 115 | 1.1.3.9.3.1 | DotNet | 8d? | 2025-07-07 | 2025-07-17 |  | 86.08d |  |  | Abid [50%] | 32h |
| 116 | 1.1.3.9.3.2 | DB | 5d? | 2025-07-07 | 2025-07-14 |  | 88.88d | 0d |  | Arif [60%] | 24h |
| 117 | 1.1.3.9.3.3 | DB Packaging | 0.21d? | 2025-07-14 | 2025-07-14 | 116 | 88.88d |  |  | Arif [60%] | 1h |
| 118 | 1.1.3.9.4 | **QA** | 26.12d? | 2025-06-17 | 2025-07-23 |  | 108.21d |  |  |  | 24h |
| 119 | 1.1.3.9.4.1 | Test case writing | 1d? | 2025-06-17 | 2025-06-17 |  | 141.46d |  |  |  |  |
| 120 | 1.1.3.9.4.2 | Testing | 3.33d? | 2025-07-17 | 2025-07-22 | 114 | 117d |  |  | Bilal [60%] | 16h |
| 121 | 1.1.3.9.4.3 | Bug fixing | 2d? | 2025-07-17 | 2025-07-23 | 114 | 84.08d | 0d |  | Abid [50%] | 8h |
| 122 | 1.1.3.9.5 | Review and Management | 1d? | 2025-06-17 | 2025-06-17 |  | 141.46d |  |  |  |  |
| 124 | 1.1.4 | **QA 2nd Iteration / Integration Testing** | 7.14d? | 2025-08-20 | 2025-08-29 | 98, 86, 74, 30 | 83.79d | 0d |  |  | 240h |
| 125 | 1.1.4.1 | Testing | 7.14d? | 2025-08-20 | 2025-08-29 |  | 83.79d |  |  | Bilal [70%] | 40h |
| 126 | 1.1.4.2 | Testing | 6.25d? | 2025-08-20 | 2025-08-28 |  | 84.68d |  |  | Hamza [80%] | 40h |
| 127 | 1.1.4.3 | Bug Fixing | 7.14d? | 2025-08-20 | 2025-08-29 |  | 83.79d |  |  | Arif [70%] | 40h |
| 128 | 1.1.4.4 | Bug Fixing | 7.14d? | 2025-08-20 | 2025-08-29 |  | 83.79d |  |  | Arslan [70%] | 40h |
| 129 | 1.1.4.5 | Bug Fixing | 7.14d? | 2025-08-20 | 2025-08-29 |  | 83.79d |  |  | Muzamal [70%] | 40h |
| 130 | 1.1.4.6 | Bug Fixing | 7.14d? | 2025-08-20 | 2025-08-29 | 59 | 83.79d |  |  | Shoaib [70%] | 40h |

| ID | WBS | Task | Duration | Start | Finish | Predecessors | Total slack | Free slack | Constraint | Resources | Work |
| --- | --- | --- | --- | --- | --- | --- | --- | --- | --- | --- | --- |
| 131 | 1.1.5 | **Release environments upgrade** | 5.36d? | 2025-08-29 | 2025-09-05 | 124 | 83.79d | 0d |  |  | 90h |
| 132 | 1.1.5.1 | JG, TSY | 1.79d? | 2025-08-29 | 2025-09-02 |  | 83.79d | 0d |  | Bilal [70%]; Hamza [80%]; Ayesha [70%] | 30h |
| 133 | 1.1.5.2 | TA,Whirlpool, HS, Pursuit | 1.79d? | 2025-09-02 | 2025-09-03 | 132 | 83.79d | 0d |  | Bilal [70%]; Hamza [80%]; Ayesha [70%] | 30h |
| 134 | 1.1.5.3 | HY, WF, Dentsu Creative | 1.79d | 2025-09-03 | 2025-09-05 | 133 | 83.79d |  |  | Bilal [70%]; Hamza [80%]; Ayesha [70%] | 30h |
| 135 | 1.1.6 | Ready for UAT | 1d? | 2025-09-05 | 2025-09-08 | 131 | 83.79d |  |  |  |  |
| 137 | 1.2 | **APWorks** | 34.39d? | 2025-06-17 | 2025-08-04 |  | 82.58d |  |  |  | 755.5h |
| 138 | 1.2.1 | Planning | 7.14d | 2025-06-17 | 2025-06-26 |  | 135.32d |  |  | Abid [70%] | 40h |
| 139 | 1.2.2 | Team Brainstorming | 0.62d | 2025-06-17 | 2025-06-17 |  | 84.7d | 1.04d |  | Asad [80%]; Yasir [80%]; Arslan [80%]; Ali [80%]; Bilal [80%] | 20h |
| 140 | 1.2.3 | **Development** | 28.39d? | 2025-06-17 | 2025-07-25 |  | 82.58d | 0d |  |  | 589.5h |
| 141 | 1.2.3.1 | **Enabling user-specific report views and filter preferences to be retained during the session, enhancing usability and efficiency** | 24.42d? | 2025-06-17 | 2025-07-21 |  | 82.58d |  |  |  | 161h |
| 142 | 1.2.3.1.1 | Design document | 1.67d? | 2025-06-17 | 2025-06-18 |  | 82.58d | 0d |  | Asim [60%] | 8h |
| 143 | 1.2.3.1.2 | Design document review and structural changes marking | 0.75d? | 2025-06-18 | 2025-06-19 | 142, 139 | 83.66d | 0d |  | Ali [80%]; Abid [50%] | 6h |
| 144 | 1.2.3.1.3 | **Development** | 13.67d? | 2025-06-17 | 2025-07-04 |  | 86.08d | 0d |  |  | 72h |
| 145 | 1.2.3.1.3.1 | DotNet | 9.38d? | 2025-06-19 | 2025-07-02 | 143 | 83.66d | 0d |  | Ali [80%] | 60h |
| 146 | 1.2.3.1.3.2 | DotNet Changes - Retain sorting orders | 15h | 2025-07-02 | 2025-07-04 | 145 | 83.66d | 0d |  | Ali [80%] | 12h |
| 147 | 1.2.3.1.3.3 | DB | 1d? | 2025-06-17 | 2025-06-17 |  | 103.11d |  |  |  |  |
| 148 | 1.2.3.1.4 | Deployment | 0.31d | 2025-07-04 | 2025-07-04 | 144 | 90.45d | 5.44d |  | Abid [40%] | 1h |
| 149 | 1.2.3.1.5 | **QA** | 19.04d? | 2025-06-23 | 2025-07-18 |  | 88.45d |  |  |  | 42h |
| 150 | 1.2.3.1.5.1 | Test case writing | 1.88d? | 2025-06-23 | 2025-06-24 | 143 | 90.93d | 0d | start no earlier than 2025-06-23 | Ayesha [80%] | 12h |
| 151 | 1.2.3.1.5.2 | Testing | 3.75d? | 2025-07-14 | 2025-07-18 | 148, 294 | 85.01d | 0d |  | Ayesha [80%] | 24h |
| 152 | 1.2.3.1.5.3 | QA Review and management | 1.88d | 2025-07-08 | 2025-07-10 | 154 | 94.01d |  |  | Bilal [40%] | 6h |
| 153 | 1.2.3.1.6 | **Bug fixing** | 10.56d? | 2025-07-04 | 2025-07-21 |  | 83.66d |  |  |  | 20h |
| 154 | 1.2.3.1.6.1 | Bug fixing | 1.88d? | 2025-07-04 | 2025-07-08 | 190 | 83.66d | 0d |  | Ali [80%] | 12h |
| 155 | 1.2.3.1.6.2 | Bug Verification | 1.25d? | 2025-07-18 | 2025-07-21 | 154, 151 | 85.01d | 0d |  | Ayesha [80%] | 8h |
| 156 | 1.2.3.1.7 | Review and Management | 7.5d? | 2025-06-19 | 2025-06-30 | 143 | 101.7d |  |  | Abid [20%] | 12h |

| ID | WBS | Task | Duration | Start | Finish | Predecessors | Total slack | Free slack | Constraint | Resources | Work |
| --- | --- | --- | --- | --- | --- | --- | --- | --- | --- | --- | --- |
| 157 | 1.2.3.2 | **Net Amount Total: We need an additional calculated field in the header that sums the Invoice Net Amount. Currently, if they want to view the Invoice Net Amount total, they must add the line amounts outside of the system.** | 11.63d? | 2025-06-17 | 2025-07-02 |  | 84.25d |  |  |  | 53h |
| 158 | 1.2.3.2.1 | Design document | 1d? | 2025-06-18 | 2025-06-19 | 142 | 82.58d | 0d |  | Asim [50%] | 4h |
| 159 | 1.2.3.2.2 | Design document review and structural changes marking | 0.19d? | 2025-06-24 | 2025-06-24 | 158 | 86.38d | 0d | start no earlier than 2025-06-24 | Abid [50%]; Arslan [80%] | 2h |
| 160 | 1.2.3.2.3 | **Development** | 10.07d? | 2025-06-17 | 2025-07-01 |  | 91.7d |  |  |  | 30h |
| 161 | 1.2.3.2.3.1 | DotNet (invoice UI, Preview, manual entry screen) | 2.5d? | 2025-06-24 | 2025-06-27 | 159 | 85.38d | 0d |  | Arslan [80%] | 16h |
| 162 | 1.2.3.2.3.2 | Vendor Mapping UI / Manage Invoice list / Vendor Invoice Report | 1.25d? | 2025-06-27 | 2025-07-01 | 161 | 85.38d | 0d |  | Arslan [80%] | 8h |
| 163 | 1.2.3.2.3.3 | DB | 1d? | 2025-06-17 | 2025-06-17 |  | 110.61d |  |  |  | 6h |
| 164 | 1.2.3.2.4 | Deployment | 0.31d? | 2025-07-01 | 2025-07-01 | 162 | 99.98d | 0d |  | Abid [40%] | 1h |
| 165 | 1.2.3.2.5 | **QA** | 5.63d? | 2025-06-25 | 2025-07-02 |  | 99.98d |  |  |  | 11h |
| 166 | 1.2.3.2.5.1 | Test case writing | 0.62d? | 2025-06-25 | 2025-06-25 | 158, 150 | 104.36d | 0d |  | Kashif [80%] | 4h |
| 167 | 1.2.3.2.5.2 | Testing | 0.94d? | 2025-07-01 | 2025-07-02 | 164 | 99.98d | 0d |  | Kashif [80%] | 6h |
| 168 | 1.2.3.2.5.3 | QA Review and management | 0.31d? | 2025-07-02 | 2025-07-02 | 167 | 99.98d |  |  | Bilal [40%] | 1h |
| 169 | 1.2.3.2.6 | **Bug Fixing** | 0.47d? | 2025-07-01 | 2025-07-01 |  | 85.38d |  |  |  | 3h |
| 170 | 1.2.3.2.6.1 | Bug fixing | 0.31d? | 2025-07-01 | 2025-07-01 | 175 | 85.38d | 0d |  | Arslan [80%] | 2h |
| 171 | 1.2.3.2.6.2 | Bug Verification | 0.16d? | 2025-07-01 | 2025-07-01 | 170 | 100.69d |  |  | Kashif [80%] | 1h |
| 172 | 1.2.3.2.7 | Review and Management | 1.25d? | 2025-06-24 | 2025-06-25 | 159 | 105.05d |  |  | Abid [20%] | 2h |
| 173 | 1.2.3.3 | **Invoice comment log: They would like a way to add comments to an invoice for record-keeping, in case auditors inquire about invoice actions. (Routing history button)** | 15.24d? | 2025-06-17 | 2025-07-08 |  | 85.25d |  |  |  | 62h |
| 174 | 1.2.3.3.1 | Design document | 1.5d? | 2025-06-19 | 2025-06-23 | 158 | 82.58d | 0d |  | Asim [50%] | 6h |
| 175 | 1.2.3.3.2 | Design document review and structural changes marking | 0.38d? | 2025-07-01 | 2025-07-01 | 174, 162 | 85.38d | 0d |  | Abid [50%]; Arslan [80%] | 4h |
| 176 | 1.2.3.3.3 | **Development** | 13.26d? | 2025-06-17 | 2025-07-04 |  | 96.15d | 0d |  |  | 24h |
| 177 | 1.2.3.3.3.1 | DotNet | 2.5d? | 2025-07-01 | 2025-07-04 | 170 | 85.38d | 0d |  | Arslan [80%] | 16h |
| 178 | 1.2.3.3.3.2 | DB | 1d? | 2025-06-17 | 2025-06-17 |  | 108.74d |  |  |  | 8h |
| 179 | 1.2.3.3.4 | Deployment | 0.62d? | 2025-07-04 | 2025-07-04 | 176 | 96.48d | 0d |  | Abid [20%] | 2h |
| 180 | 1.2.3.3.5 | **QA** | 8.51d? | 2025-06-25 | 2025-07-08 |  | 96.48d |  |  |  | 14h |
| 181 | 1.2.3.3.5.1 | Test case writing | 0.62d? | 2025-06-25 | 2025-06-26 | 174, 166 | 104.36d |  |  | Kashif [80%] | 4h |
| 182 | 1.2.3.3.5.2 | Testing | 1.25d? | 2025-07-04 | 2025-07-08 | 179 | 96.48d |  |  | Kashif [80%] | 8h |
| 183 | 1.2.3.3.5.3 | QA Review and management | 0.62d? | 2025-06-25 | 2025-06-26 | 174, 166 | 104.36d |  |  | Bilal [40%] | 2h |

| ID | WBS | Task | Type | Duration | Start | Finish | Predecessors | Total slack | Free slack | Resources | Work |
| --- | --- | --- | --- | --- | --- | --- | --- | --- | --- | --- | --- |
| 184 | 1.2.3.3.6 | **Bug fixing** |  | 1.56d? | 2025-07-04 | 2025-07-08 |  | 85.38d |  |  | 10h |
| 185 | 1.2.3.3.6.1 | Bug fixing |  | 0.94d? | 2025-07-04 | 2025-07-07 | 177, 64 | 85.38d | 0d | Arslan [80%] | 6h |
| 186 | 1.2.3.3.6.2 | Bug Verification |  | 0.62d? | 2025-07-07 | 2025-07-08 | 185 | 96.37d |  | Kashif [80%] | 4h |
| 187 | 1.2.3.3.7 | Review and Management |  | 1.25d? | 2025-07-01 | 2025-07-02 | 175 | 99.91d |  | Abid [20%] | 2h |
| 188 | 1.2.3.4 | **In Discrepant bucket, A way for Users to flag an invocie so they can easy find it later** |  | 26.6d? | 2025-06-17 | 2025-07-23 |  | 85.01d |  |  | 98h |
| 189 | 1.2.3.4.1 | Design document |  | 2d? | 2025-06-23 | 2025-06-25 | 174 | 82.58d | 0d | Asim [50%] | 8h |
| 190 | 1.2.3.4.2 | Design document review and structural changes marking |  | 0.19d? | 2025-07-04 | 2025-07-04 | 146 | 83.66d | 0d | Ali [80%]; Abid [50%] | 2h |
| 191 | 1.2.3.4.3 | **Development** |  | 6.74d? | 2025-07-07 | 2025-07-16 |  | 84.78d | 0d |  | 44h |
| 192 | 1.2.3.4.3.1 | DotNet |  | 5.62d? | 2025-07-08 | 2025-07-16 | 154 | 83.66d | 0d | Ali [80%] | 36h |
| 193 | 1.2.3.4.3.2 | DB |  | 1.25d? | 2025-07-07 | 2025-07-08 | 185 | 92.93d |  | Yasir [80%] | 8h |
| 194 | 1.2.3.4.4 | Deployment |  | 0.62d? | 2025-07-16 | 2025-07-16 | 191 | 87.44d | 0d | Abid [20%] | 1h |
| 195 | 1.2.3.4.5 | DB Packaging |  | 0.62d? | 2025-07-16 | 2025-07-16 | 191 | 89.63d |  | Arif [40%] | 2h |
| 196 | 1.2.3.4.6 | **QA** |  | 19.81d? | 2025-06-25 | 2025-07-22 |  | 85.64d |  |  | 17h |
| 197 | 1.2.3.4.6.1 | Test case writing |  | 0.62d? | 2025-06-25 | 2025-06-25 | 189, 150 | 90.76d | 0d | Ayesha [80%] | 4h |
| 198 | 1.2.3.4.6.2 | Testing |  | 1.56d? | 2025-07-21 | 2025-07-22 | 194, 155 | 85.01d | 0d | Ayesha [80%] | 10h |
| 199 | 1.2.3.4.6.3 | QA Review and management |  | 0.94d? | 2025-07-16 | 2025-07-17 | 194 | 88.69d |  | Bilal [40%] | 3h |
| 200 | 1.2.3.4.7 | **Bug fixing** |  | 4.93d? | 2025-07-16 | 2025-07-23 |  | 83.66d |  |  | 14h |
| 201 | 1.2.3.4.7.1 | Bug fixing |  | 1.56d? | 2025-07-16 | 2025-07-18 | 208 | 83.66d | 0d | Ali [80%] | 10h |
| 202 | 1.2.3.4.7.2 | Bug Verification |  | 0.62d? | 2025-07-22 | 2025-07-23 | 201, 198 | 85.01d |  | Ayesha [80%] | 4h |
| 203 | 1.2.3.4.8 | Review and Management |  | 6.25d? | 2025-06-17 | 2025-06-25 |  | 105.36d |  | Abid [20%] | 10h |
| 204 | 1.2.3.5 | **Favorite button does not work ( Fix or hide) - Hide** |  | 23.86d? | 2025-06-17 | 2025-07-18 |  | 87.76d |  |  | 6.5h |
| 205 | 1.2.3.5.1 | Design document | milestone | 0d? | 2025-06-25 | 2025-06-25 | 189 | 82.58d | 0d | Asim [50%] |  |
| 206 | 1.2.3.5.2 | Design document review and structural changes marking | milestone | 0d? | 2025-07-18 | 2025-07-18 | 201 | 87.76d | 0d | Ali [80%]; Abid [50%] |  |
| 207 | 1.2.3.5.3 | **Development** |  | 21.67d? | 2025-06-17 | 2025-07-16 |  | 84.44d | 0d |  | 2h |
| 208 | 1.2.3.5.3.1 | DotNet |  | 0.31d? | 2025-07-16 | 2025-07-16 | 192 | 83.66d | 0d | Ali [80%] | 2h |
| 209 | 1.2.3.5.3.2 | DB |  | 1d? | 2025-06-17 | 2025-06-17 |  | 105.11d |  |  |  |
| 210 | 1.2.3.5.4 | Deployment |  | 0.62d? | 2025-07-16 | 2025-07-17 | 207 | 84.44d | 0d | Abid [20%] | 1h |

| ID | WBS | Task | Type | Duration | Start | Finish | Predecessors | Total slack | Free slack | Resources | Work |
| --- | --- | --- | --- | --- | --- | --- | --- | --- | --- | --- | --- |
| 211 | 1.2.3.5.5 | **QA** |  | 16.29d? | 2025-06-25 | 2025-07-17 |  | 89.16d |  |  | 1.5h |
| 212 | 1.2.3.5.5.1 | Test case writing | milestone | 0d? | 2025-06-25 | 2025-06-25 | 205 | 105.45d |  | Kashif [80%] |  |
| 213 | 1.2.3.5.5.2 | Testing |  | 0.16d? | 2025-07-17 | 2025-07-17 | 210 | 84.44d | 0.78d | Kashif [80%] | 1h |
| 214 | 1.2.3.5.5.3 | QA Review and management |  | 0.16d? | 2025-07-17 | 2025-07-17 | 210 | 89.16d |  | Bilal [40%] | 0.5h |
| 215 | 1.2.3.5.6 | Bug fixing |  | 0.16d? | 2025-07-18 | 2025-07-18 | 201, 213 | 83.66d | 0d | Ali [80%] | 1h |
| 216 | 1.2.3.5.7 | Review and Management |  | 0.62d? | 2025-07-18 | 2025-07-18 | 206 | 87.76d |  | Abid [20%] | 1h |
| 217 | 1.2.3.6 | **Format all amounts to be trwo decimals (Appearing in filters)** |  | 28.39d? | 2025-06-17 | 2025-07-25 |  | 83.22d |  |  | 42h |
| 218 | 1.2.3.6.1 | Design document |  | 0.5d? | 2025-06-25 | 2025-06-25 | 205 | 82.58d | 0d | Asim [50%] | 2h |
| 219 | 1.2.3.6.2 | Design document review and structural changes marking |  | 0.5d? | 2025-07-18 | 2025-07-18 | 215, 218 | 83.66d | 0d | Ali [80%]; Abid [50%] | 4h |
| 220 | 1.2.3.6.3 | **Development** |  | 26.39d? | 2025-06-17 | 2025-07-23 |  | 83.66d | 0d |  | 16h |
| 221 | 1.2.3.6.3.1 | DotNet |  | 2.5d? | 2025-07-18 | 2025-07-23 | 219 | 83.66d | 0d | Ali [80%] | 16h |
| 222 | 1.2.3.6.3.2 | DB |  | 1d? | 2025-06-17 | 2025-06-17 |  | 109.05d |  |  |  |
| 223 | 1.2.3.6.4 | Deployment |  | 0.62d? | 2025-07-23 | 2025-07-24 | 220 | 83.66d | 0d | Abid [20%] | 1h |
| 224 | 1.2.3.6.5 | **QA** |  | 21.16d? | 2025-06-25 | 2025-07-24 |  | 83.66d |  |  | 12h |
| 225 | 1.2.3.6.5.1 | Test case writing |  | 0.62d? | 2025-06-25 | 2025-06-26 | 218, 197 | 90.76d | 0d | Ayesha [80%] | 4h |
| 226 | 1.2.3.6.5.2 | Testing |  | 0.94d? | 2025-07-24 | 2025-07-24 | 223 | 83.66d |  | Ayesha [80%] | 6h |
| 227 | 1.2.3.6.5.3 | QA Review and management |  | 0.62d? | 2025-07-24 | 2025-07-24 | 223 | 83.97d |  | Bilal [40%] | 2h |
| 228 | 1.2.3.6.6 | **Bug fixing** |  | 0.47d? | 2025-07-24 | 2025-07-24 |  | 84.13d |  |  | 3h |
| 229 | 1.2.3.6.6.1 | Bug fixing |  | 0.31d? | 2025-07-24 | 2025-07-24 | 236 | 84.13d | 0d | Ali [80%] | 2h |
| 230 | 1.2.3.6.6.2 | Bug Verification |  | 0.16d? | 2025-07-24 | 2025-07-24 | 229 | 84.13d |  | Ayesha [80%] | 1h |
| 231 | 1.2.3.6.7 | Review and Management |  | 2.5d? | 2025-07-18 | 2025-07-25 | 219 | 83.22d |  | Abid [20%] | 4h |
| 232 | 1.2.3.7 | **If we add a new user and start with the sequence on screen, we get an error. Starting with "User Group" and then filling in rest of details, i.e. resource id, name, email and login, we get "null resource ID error. If we fill in all details and assign user** |  | 27.95d? | 2025-06-17 | 2025-07-24 |  | 83.66d |  |  | 10h |
| 233 | 1.2.3.7.1 | Design document | milestone | 0d? | 2025-06-25 | 2025-06-25 | 218 | 82.58d | 0d | Asim [50%] |  |
| 234 | 1.2.3.7.2 | Design document review and structural changes marking | milestone | 0d? | 2025-07-23 | 2025-07-23 | 221 | 83.66d | 0d | Ali [80%]; Abid [50%] |  |

| ID | WBS | Task | Type | Duration | Start | Finish | Predecessors | Total slack | Free slack | Constraint | Resources | Work |
| --- | --- | --- | --- | --- | --- | --- | --- | --- | --- | --- | --- | --- |
| 235 | 1.2.3.7.3 | **Development** |  | 27.02d? | 2025-06-17 | 2025-07-24 |  | 83.66d | 0d |  |  | 4h |
| 236 | 1.2.3.7.3.1 | DotNet |  | 0.62d? | 2025-07-23 | 2025-07-24 | 234 | 83.66d | 0d |  | Ali [80%] | 4h |
| 237 | 1.2.3.7.3.2 | DB |  | 1d? | 2025-06-17 | 2025-06-17 |  | 109.68d |  |  |  |  |
| 238 | 1.2.3.7.4 | Deployment |  | 0.62d? | 2025-07-24 | 2025-07-24 | 235 | 83.66d | 0d |  | Abid [20%] | 1h |
| 239 | 1.2.3.7.5 | **QA** |  | 20.54d? | 2025-06-26 | 2025-07-24 |  | 83.66d |  |  |  | 3h |
| 240 | 1.2.3.7.5.1 | Test case writing | milestone | 0d? | 2025-06-26 | 2025-06-26 | 233, 225 | 90.76d | 5.75d |  | Ayesha [80%] |  |
| 241 | 1.2.3.7.5.2 | Testing |  | 0.31d? | 2025-07-24 | 2025-07-24 | 238 | 83.66d | 0d |  | Ayesha [80%] | 2h |
| 242 | 1.2.3.7.5.3 | Bug fixing | milestone | 0d? | 2025-07-24 | 2025-07-24 | 241 | 83.66d |  |  | Ali [80%] |  |
| 243 | 1.2.3.7.5.4 | QA Review and management |  | 0.31d? | 2025-07-24 | 2025-07-24 | 238 | 83.66d |  |  | Bilal [40%] | 1h |
| 244 | 1.2.3.7.6 | Review and Management |  | 1.25d? | 2025-07-23 | 2025-07-24 | 234 | 83.97d |  |  | Abid [20%] | 2h |
| 245 | 1.2.3.8 | **Manually mark invoice Archieved** |  | 13.77d? | 2025-06-25 | 2025-07-15 |  | 81.02d | 0d |  |  | 157h |
| 246 | 1.2.3.8.1 | Design document |  | 2d? | 2025-06-25 | 2025-06-27 | 233 | 82.58d | 0d |  | Asim [50%] | 8h |
| 247 | 1.2.3.8.2 | Design document review and structural changes marking |  | 0.77d? | 2025-07-01 | 2025-07-01 | 246, 300 | 81.02d | 0d | finish no earlier than 2025-07-01 | Asad [80%]; Abid [50%] | 8h |
| 248 | 1.2.3.8.3 | **Development** |  | 7.5d? | 2025-07-02 | 2025-07-11 |  | 81.02d |  |  |  | 68h |
| 249 | 1.2.3.8.3.1 | DotNet- Mark the screen archive/unarchive and View in disable mode |  | 3.75d? | 2025-07-02 | 2025-07-07 | 247 | 81.02d | 0d |  | Asad [80%] | 24h |
| 250 | 1.2.3.8.3.2 | New Screen Development |  | 3.75d? | 2025-07-07 | 2025-07-11 | 249 | 82.96d |  |  | Asad [80%] | 24h |
| 251 | 1.2.3.8.3.3 | DB |  | 3.57d? | 2025-07-02 | 2025-07-07 | 247 | 86.89d |  |  | Yasir [70%] | 20h |
| 252 | 1.2.3.8.4 | Deployment |  | 1d? | 2025-07-07 | 2025-07-08 | 249 | 81.02d | 0d |  | Abid [20%] | 1h |
| 253 | 1.2.3.8.5 | **QA** |  | 11.77d? | 2025-06-27 | 2025-07-15 |  | 81.02d |  |  |  | 42h |
| 254 | 1.2.3.8.5.1 | Test case writing |  | 1.25d? | 2025-06-27 | 2025-06-30 | 246 | 91.54d |  |  | Kashif [80%] | 8h |
| 255 | 1.2.3.8.5.2 | Testing |  | 4.69d? | 2025-07-08 | 2025-07-15 | 252 | 81.02d |  |  | Kashif [80%] | 30h |
| 256 | 1.2.3.8.5.3 | QA Review and management |  | 1.62d? | 2025-07-08 | 2025-07-10 | 252 | 84.08d |  |  | Bilal [40%] | 4h |
| 257 | 1.2.3.8.6 | **Bug fixing** |  | 2.5d? | 2025-07-08 | 2025-07-11 |  | 83.21d |  |  |  | 22h |
| 258 | 1.2.3.8.6.1 | Bug fixing |  | 1.25d? | 2025-07-08 | 2025-07-09 | 252 | 83.21d | 0d |  | Asad [80%] | 8h |
| 259 | 1.2.3.8.6.2 | DB Bug fixing |  | 1.5d | 2025-07-08 | 2025-07-10 | 252 | 84.21d |  |  | Yasir [50%] | 6h |
| 260 | 1.2.3.8.6.3 | Bug Verification |  | 1.25d? | 2025-07-10 | 2025-07-11 | 258 | 83.21d |  |  | Kashif [80%] | 8h |
| 261 | 1.2.3.8.7 | Review and Management |  | 5d? | 2025-07-02 | 2025-07-08 | 247 | 85.46d |  |  | Abid [20%] | 8h |
| 262 | 1.2.3.9 | Sync optimzation | manual | 1d? | 2025-06-17 | 2025-06-17 |  |  |  |  |  |  |

| ID | WBS | Task | Type | Duration | Start | Finish | Predecessors | Total slack | Free slack | Constraint | Resources | Work | Text1 |
| --- | --- | --- | --- | --- | --- | --- | --- | --- | --- | --- | --- | --- | --- |
| 264 | 1.2.4 | **2nd integration / Integration Test** |  | 5d? | 2025-07-25 | 2025-08-01 | 140 | 83.22d | 0d |  |  | 106h |  |
| 265 | 1.2.4.1 | Testing |  | 5d | 2025-07-25 | 2025-08-01 |  | 98.69d |  |  | Bilal [40%] | 16h |  |
| 266 | 1.2.4.2 | Testing |  | 4.69d | 2025-07-25 | 2025-08-01 |  | 99.01d |  |  | Kashif [80%] | 30h |  |
| 267 | 1.2.4.3 | Testing |  | 4.69d | 2025-07-25 | 2025-08-01 |  | 99.01d |  |  | Ayesha [80%] | 30h |  |
| 268 | 1.2.4.4 | Bug Fixing |  | 4.69d? | 2025-07-25 | 2025-08-01 |  | 83.22d | 0d |  | Ali [80%] | 30h |  |
| 269 | 1.2.4.5 | Bug Fixing | milestone | 0d? | 2025-07-25 | 2025-07-25 |  | 103.69d |  |  | Asad [80%] |  |  |
| 270 | 1.2.5 | Ready for UAT |  | 1d? | 2025-08-01 | 2025-08-04 | 264 | 108.07d |  |  |  |  |  |
| 272 | 1.3 | **APWorks Service Pack** |  | 61.44d? | 2025-06-17 | 2025-09-11 |  | 81.02d |  |  |  | 794h |  |
| 273 | 1.3.1 | **eInvoice pull** |  | 51.06d? | 2025-06-17 | 2025-08-28 |  | 81.02d | 0d |  |  | 694h | Waiting for design document |
| 274 | 1.3.1.1 | **eInvoices (iPC)(BingAd, DV360,GCM,GoogleAd, Twitter)** |  | 27.18d? | 2025-06-17 | 2025-07-24 |  | 87.01d |  |  |  | 179h |  |
| 275 | 1.3.1.1.1 | KickOff meeting with Tao |  | 0.5d? | 2025-06-18 | 2025-06-18 |  | 85.89d | 0d | start no earlier than 2025-06-18 | Tao [25%]; Abid [25%]; Shoaib [25%] | 3h |  |
| 276 | 1.3.1.1.2 | API Review and Postman calls configurations |  | 7.5d | 2025-06-18 | 2025-06-30 | 275 | 85.89d | 0d |  | Tao [50%]; Shoaib [60%] | 60h |  |
| 277 | 1.3.1.1.3 | Design document review and structural changes marking |  | 1d? | 2025-06-30 | 2025-07-01 | 276 | 85.89d | 0d |  | Shoaib [50%]; Abid [50%] | 8h |  |
| 278 | 1.3.1.1.4 | **Development** |  | 17.05d? | 2025-07-01 | 2025-07-24 |  | 85.89d |  |  |  | 108h |  |
| 279 | 1.3.1.1.4.1 | DotNet - iPC Changes(New Methods for 4 Platforms + Expected change for 1 Platform) + Packaging and Deployment |  | 15.62d? | 2025-07-01 | 2025-07-22 | 277 | 85.89d | 0d |  | Shoaib [80%] | 100h |  |
| 280 | 1.3.1.1.4.2 | DB |  | 1.43d? | 2025-07-22 | 2025-07-24 | 279 | 104.9d |  |  | Yasir [70%] | 8h |  |
| 281 | 1.3.1.1.5 | **QA** |  | 1d? | 2025-06-17 | 2025-06-17 |  | 131.08d |  |  |  |  |  |
| 282 | 1.3.1.1.5.1 | Bug fixing |  | 1d? | 2025-06-17 | 2025-06-17 |  | 131.08d |  |  |  |  |  |
| 283 | 1.3.1.1.6 | Review and Management |  | 1d? | 2025-06-17 | 2025-06-17 |  | 131.08d |  |  |  |  |  |
| 284 | 1.3.1.2 | **eInvoices (Apworks)** |  | 48.94d? | 2025-06-19 | 2025-08-28 |  | 81.02d |  |  |  | 467h |  |
| 285 | 1.3.1.2.1 | Design document |  | 10d? | 2025-06-19 | 2025-07-03 |  | 85.01d | 0d | start no earlier than 2025-06-19 | Tao [30%] | 24h |  |
| 286 | 1.3.1.2.2 | Design document review and structural changes marking |  | 1.04d? | 2025-07-03 | 2025-07-04 | 285, 246 | 85.01d | 0d |  | Abid [40%]; Asim [40%]; Tao [40%] | 10h |  |
| 287 | 1.3.1.2.3 | **Development** |  | 30.19d? | 2025-07-03 | 2025-08-15 |  | 81.02d | 0d |  |  | 245h |  |
| 288 | 1.3.1.2.3.1 | Dot Net |  | 21.88d? | 2025-07-15 | 2025-08-15 | 286, 245 | 81.02d |  |  | Asad [80%] | 140h |  |
| 289 | 1.3.1.2.3.2 | Dot Net |  | 7.03d? | 2025-08-01 | 2025-08-12 | 268 | 83.22d |  |  | Ali [80%] | 45h |  |
| 290 | 1.3.1.2.3.3 | DB |  | 9.38d? | 2025-07-03 | 2025-07-16 | 285 | 101.83d |  |  | Yasir [80%] | 60h |  |
| 291 | 1.3.1.2.4 | Deployment |  | 2.5d? | 2025-08-15 | 2025-08-19 | 287 | 81.02d | 0d |  | Abid [20%] | 4h |  |
| 292 | 1.3.1.2.5 | DB Packaging |  | 1.25d? | 2025-08-15 | 2025-08-18 | 287 | 88.52d |  |  | Yasir [80%] | 8h |  |

| ID | WBS | Task | Type | Duration | Start | Finish | Predecessors | Total slack | Free slack | Constraint | Resources | Work |
| --- | --- | --- | --- | --- | --- | --- | --- | --- | --- | --- | --- | --- |
| 293 | 1.3.1.2.6 | **QA** |  | 37.9d? | 2025-07-04 | 2025-08-28 |  | 81.02d |  |  |  | 136h |
| 294 | 1.3.1.2.6.1 | Test case writing |  | 6.25d? | 2025-07-04 | 2025-07-14 | 286, 240 | 85.01d | 0d |  | Ayesha [80%] | 40h |
| 295 | 1.3.1.2.6.2 | Testing |  | 6.25d? | 2025-08-19 | 2025-08-28 | 291 | 81.02d |  |  | Ayesha [80%] | 40h |
| 296 | 1.3.1.2.6.3 | Bug fixing |  | 6.25d? | 2025-08-19 | 2025-08-28 | 291 | 81.02d |  |  | Asad [80%] | 40h |
| 297 | 1.3.1.2.6.4 | DB Bug fixing |  | 2.5d? | 2025-08-19 | 2025-08-22 | 291 | 84.77d |  |  | Yasir [80%] | 16h |
| 298 | 1.3.1.2.7 | Review and Management |  | 25d? | 2025-07-03 | 2025-08-11 | 285 | 92.96d |  |  | Abid [20%] | 40h |
| 299 | 1.3.1.3 | iPC - SelfServices | manual | 1d | 2025-06-17 | 2025-06-17 |  |  |  |  |  |  |
| 300 | 1.3.1.4 | **Upgrade ApWorks application to dotnet Core 8.0 from 7.0** |  | 5d? | 2025-06-24 | 2025-07-01 |  | 81.13d | 0.11d | start no earlier than 2025-06-24 |  | 32h |
| 301 | 1.3.1.4.1 | Lambda Upgrade |  | 1.25d? | 2025-06-24 | 2025-06-25 |  | 81.13d | 0d |  | Asad [80%] | 8h |
| 302 | 1.3.1.4.2 | Application upgrade (need to resolve aws container issue with core 9.0) |  | 2.5d? | 2025-06-25 | 2025-06-27 | 301 | 81.13d | 0d |  | Asad [80%] | 16h |
| 303 | 1.3.1.4.3 | Azure service upgrade |  | 1.25d? | 2025-06-27 | 2025-07-01 | 302 | 81.13d |  |  | Asad [80%] | 8h |
| 304 | 1.3.1.5 | Separate Integration layer from main application(80 % work completed, only container setup things need to be verified) | manual | 1d? | 2025-06-17 | 2025-06-17 |  |  |  |  |  | 16h |
| 305 | 1.3.2 | **2nd integration / Integration Test** |  | 9.38d? | 2025-08-28 | 2025-09-10 | 273, 264 | 81.02d | 0d |  |  | 100h |
| 306 | 1.3.2.1 | Testing |  | 9.38d? | 2025-08-28 | 2025-09-10 |  | 81.02d |  |  | Bilal [40%] | 30h |
| 307 | 1.3.2.2 | Testing |  | 4.69d? | 2025-08-28 | 2025-09-03 |  | 85.71d |  |  | Kashif [80%] | 30h |
| 308 | 1.3.2.3 | Bug Fixing |  | 6.25d? | 2025-08-28 | 2025-09-05 |  | 84.15d |  |  | Asad [80%] | 40h |
| 309 | 1.3.3 | Ready for UAT |  | 1d? | 2025-09-10 | 2025-09-11 | 305 | 81.02d |  |  |  |  |
| 311 | 2 | **Mobile App** |  | 142.46d? | 2025-06-17 | 2026-01-02 |  | 0d |  |  |  | 1160h |
| 312 | 2.1 | Estimation and Planning |  | 1d? | 2025-06-17 | 2025-06-17 |  | 141.46d |  |  |  |  |
| 313 | 2.2 | Technical R&D and Management |  | 125d | 2025-06-17 | 2025-12-09 |  | 17.46d |  |  | Muzamal [20%] | 200h |
| 314 | 2.3 | Development |  | 93.75d? | 2025-06-17 | 2025-10-27 |  | 48.71d |  |  | Aimen [80%] | 600h |
| 315 | 2.4 | **QA** |  | 123.33d? | 2025-07-14 | 2026-01-02 |  | 0d |  | start no earlier than 2025-07-14 |  | 360h |
| 316 | 2.4.1 | Test case writing |  | 20d? | 2025-07-14 | 2025-08-11 |  | 0d |  |  | Kashif [50%] | 80h |
| 317 | 2.4.2 | Testing |  | 83.33d? | 2025-08-11 | 2025-12-05 | 316 | 0d |  |  | Kashif [30%] | 200h |
| 318 | 2.4.3 | Final Verification |  | 20d? | 2025-12-05 | 2026-01-02 | 317 | 0d |  |  | Bilal [50%] | 80h |
| 323 | 3 | Database - Integrity | manual | 1d? | 2025-06-17 | 2025-06-17 |  |  |  |  |  |  |
| 325 | 4 | Automation | manual | 1d? | 2025-06-17 | 2025-06-17 |  |  |  |  |  |  |
