Schedule from MS Project, 2025-06-17 to 2025-09-03.

## Calendars

- Standard: Mon-Fri 08:00-12:00, 13:00-17:00; Sat-Sun off. Exceptions (off unless hours are given): 2025-08-14 (Augus 14).

## Resources

| Resource |
| --- |
| Abid |
| Asad |
| Yasir |
| Arslan |
| Ali |
| Bilal |
| Asim |
| Muzamal |
| Arif |
| Hamza |
| Tao |
| Shoaib |
| Ayesha |
| Aimen |
| Kashif |

## Schedule

| ID | WBS | Task | Type | Duration | Start | Finish | Predecessors | Total slack | Constraint | Resources | Work |
| --- | --- | --- | --- | --- | --- | --- | --- | --- | --- | --- | --- |
| 1 | 1 | **2025.3** |  | 55.81d? | 2025-06-17 | 2025-09-03 |  | 0d |  |  | 1623.7h |
| 2 | 1.1 | **APWorks** |  | 55.81d? | 2025-06-17 | 2025-09-03 |  |  |  |  | 1623.7h |
| 3 | 1.1.1 | Planning | manual | 7.14d | 2025-06-17 | 2025-06-26 |  |  |  | Abid [70%] | 40h |
| 4 | 1.1.2 | Team Brainstorming | manual | 0.62d | 2025-06-17 | 2025-06-17 |  |  |  | Asad [80%]; Yasir [80%]; Arslan [80%]; Ali [80%]; Bilal [80%] | 20h |
| 5 | 1.1.3 | **Enabling user-specific report views and filter preferences to be retained during the session, enhancing usability and efficiency** |  | 20.96d? | 2025-06-17 | 2025-07-15 |  |  |  |  | 168.2h |
| 6 | 1.1.3.1 | Design document | manual | 1.67d? | 2025-06-17 | 2025-06-18 |  |  |  | Asim [60%] | 8h |
| 7 | 1.1.3.2 | Design document review and structural changes marking | manual | 0.75d? | 2025-06-18 | 2025-06-19 | 6, 4 |  |  | Ali [80%]; Abid [50%] | 6h |
| 8 | 1.1.3.3 | **Development** |  | 14.79d? | 2025-06-17 | 2025-07-07 |  |  |  |  | 79.2h |
| 9 | 1.1.3.3.1 | DotNet | manual | 9.38d? | 2025-06-19 | 2025-07-02 | 7 |  |  | Ali [80%] | 60h |
| 10 | 1.1.3.3.2 | DotNet Changes - Retain sorting orders | manual | 24h | 2025-07-02 | 2025-07-07 | 9 |  |  | Ali [80%] | 19.2h |
| 11 | 1.1.3.3.3 | DB | manual | 1d? | 2025-06-17 | 2025-06-17 |  |  |  |  |  |
| 12 | 1.1.3.4 | Deployment | manual | 0.31d | 2025-07-07 | 2025-07-08 | 8 |  |  | Abid [40%] | 1h |
| 13 | 1.1.3.5 | **QA** |  | 15.58d? | 2025-06-23 | 2025-07-14 |  |  |  |  | 42h |
| 14 | 1.1.3.5.1 | Test case writing | manual | 1.88d? | 2025-06-23 | 2025-06-24 | 7 |  | start no earlier than 2025-06-23 | Ayesha [80%] | 12h |
| 15 | 1.1.3.5.2 | Testing | manual | 3.75d? | 2025-07-08 | 2025-07-14 | 12, 146 |  |  | Ayesha [80%] | 24h |
| 16 | 1.1.3.5.3 | QA Review and management | manual | 1.88d | 2025-07-10 | 2025-07-11 | 18 |  |  | Bilal [40%] | 6h |
| 17 | 1.1.3.6 | **Bug fixing** |  | 5.78d? | 2025-07-08 | 2025-07-15 |  |  |  |  | 20h |
| 18 | 1.1.3.6.1 | Bug fixing | manual | 1.88d? | 2025-07-08 | 2025-07-10 | 54 |  |  | Ali [80%] | 12h |
| 19 | 1.1.3.6.2 | Bug Verification | manual | 1.25d? | 2025-07-14 | 2025-07-15 | 18, 15 |  |  | Ayesha [80%] | 8h |
| 20 | 1.1.3.7 | Review and Management | manual | 7.5d? | 2025-06-19 | 2025-06-30 | 7 |  |  | Abid [20%] | 12h |
| 21 | 1.1.4 | **Net Amount Total: We need an additional calculated field in the header that sums the Invoice Net Amount. Currently, if they want to view the Invoice Net Amount total, they must add the line amounts outside of the system.** |  | 10.92d? | 2025-06-17 | 2025-07-01 |  |  |  |  | 53h |
| 22 | 1.1.4.1 | Design document | manual | 1d? | 2025-06-18 | 2025-06-19 | 6 |  |  | Asim [50%] | 4h |
| 23 | 1.1.4.2 | Design document review and structural changes marking | manual | 0.19d? | 2025-06-24 | 2025-06-24 | 22 |  | start no earlier than 2025-06-24 | Abid [50%]; Arslan [80%] | 2h |
| 24 | 1.1.4.3 | **Development** |  | 10.07d? | 2025-06-17 | 2025-07-01 |  |  |  |  | 30h |
| 25 | 1.1.4.3.1 | DotNet (invoice UI, Preview, manual entry screen) | manual | 3.5d? | 2025-06-24 | 2025-06-27 | 23 |  |  | Arslan [80%] | 16h |
| 26 | 1.1.4.3.2 | Vendor Mapping UI / Manage Invoice list / Vendor Invoice Report | manual | 1.25d? | 2025-06-27 | 2025-07-01 | 25 |  |  | Arslan [80%] | 8h |
| 27 | 1.1.4.3.3 | DB | manual | 1d? | 2025-06-17 | 2025-06-17 |  |  |  |  | 6h |
| 28 | 1.1.4.4 | Deployment | manual | 0.31d? | 2025-06-27 | 2025-06-30 | 25 |  |  | Abid [40%] | 1h |

| ID | WBS | Task | Type | Duration | Start | Finish | Predecessors | Resources | Work |
| --- | --- | --- | --- | --- | --- | --- | --- | --- | --- |
| 29 | 1.1.4.5 | **QA** |  | 4.38d? | 2025-06-25 | 2025-07-01 |  |  | 11h |
| 30 | 1.1.4.5.1 | Test case writing | manual | 0.62d? | 2025-06-25 | 2025-06-25 | 22, 14 | Kashif [80%] | 4h |
| 31 | 1.1.4.5.2 | Testing | manual | 0.94d? | 2025-06-30 | 2025-07-01 | 28 | Kashif [80%] | 6h |
| 32 | 1.1.4.5.3 | QA Review and management | manual | 0.31d? | 2025-07-01 | 2025-07-01 | 31 | Bilal [40%] | 1h |
| 33 | 1.1.4.6 | **Bug Fixing** |  | 0.47d? | 2025-07-01 | 2025-07-01 |  |  | 3h |
| 34 | 1.1.4.6.1 | Bug fixing | manual | 0.31d? | 2025-07-01 | 2025-07-01 | 39 | Arslan [80%] | 2h |
| 35 | 1.1.4.6.2 | Bug Verification | manual | 0.16d? | 2025-07-01 | 2025-07-01 | 34 | Kashif [80%] | 1h |
| 36 | 1.1.4.7 | Review and Management | manual | 1.25d? | 2025-06-24 | 2025-06-25 | 23 | Abid [20%] | 2h |
| 37 | 1.1.5 | **Invoice comment log: They would like a way to add comments to an invoice for record-keeping, in case auditors inquire about invoice actions. (Routing history button)** |  | 17.96d? | 2025-06-17 | 2025-07-10 |  |  | 72h |
| 38 | 1.1.5.1 | Design document | manual | 1.5d? | 2025-06-19 | 2025-06-23 | 22 | Asim [50%] | 6h |
| 39 | 1.1.5.2 | Design document review and structural changes marking | manual | 0.38d? | 2025-07-01 | 2025-07-01 | 38, 26 | Abid [50%]; Arslan [80%] | 4h |
| 40 | 1.1.5.3 | **Development** |  | 14.51d? | 2025-06-17 | 2025-07-07 |  |  | 32h |
| 41 | 1.1.5.3.1 | DotNet | manual | 3.75d? | 2025-07-01 | 2025-07-07 | 34 | Arslan [80%] | 24h |
| 42 | 1.1.5.3.2 | DB | manual | 1d? | 2025-06-17 | 2025-06-17 |  |  | 8h |
| 43 | 1.1.5.4 | Deployment | manual | 0.62d? | 2025-07-07 | 2025-07-08 | 40 | Abid [20%] | 2h |
| 44 | 1.1.5.5 | **QA** |  | 9.76d? | 2025-06-25 | 2025-07-09 |  |  | 14h |
| 45 | 1.1.5.5.1 | Test case writing | manual | 0.62d? | 2025-06-25 | 2025-06-26 | 38, 30 | Kashif [80%] | 4h |
| 46 | 1.1.5.5.2 | Testing | manual | 1.25d? | 2025-07-08 | 2025-07-09 | 43 | Kashif [80%] | 8h |
| 47 | 1.1.5.5.3 | QA Review and management | manual | 0.62d? | 2025-06-25 | 2025-06-26 | 38, 30 | Bilal [40%] | 2h |
| 48 | 1.1.5.6 | **Bug fixing** |  | 1.88d? | 2025-07-09 | 2025-07-10 |  |  | 12h |
| 49 | 1.1.5.6.1 | Bug fixing | manual | 1.25d? | 2025-07-09 | 2025-07-10 | 41 | Arslan [80%] | 8h |
| 50 | 1.1.5.6.2 | Bug Verification | manual | 0.62d? | 2025-07-10 | 2025-07-10 | 49 | Kashif [80%] | 4h |
| 51 | 1.1.5.7 | Review and Management | manual | 1.25d? | 2025-07-01 | 2025-07-02 | 39 | Abid [20%] | 2h |
| 52 | 1.1.6 | **In Discrepant bucket, A way for Users to flag an invocie so they can easy find it later** |  | 28.81d? | 2025-06-17 | 2025-07-25 |  |  | 126h |
| 53 | 1.1.6.1 | Design document | manual | 2d? | 2025-06-23 | 2025-06-25 | 38 | Asim [50%] | 8h |
| 54 | 1.1.6.2 | Design document review and structural changes marking | manual | 0.38d? | 2025-07-07 | 2025-07-08 | 10 | Ali [80%]; Abid [50%] | 4h |

| ID | WBS | Task | Type | Duration | Start | Finish | Predecessors | Resources | Work |
| --- | --- | --- | --- | --- | --- | --- | --- | --- | --- |
| 55 | 1.1.6.3 | **Development** |  | 7.81d? | 2025-07-10 | 2025-07-21 |  |  | 70h |
| 56 | 1.1.6.3.1 | DotNet | manual | 7.81d? | 2025-07-10 | 2025-07-21 | 18 | Ali [80%] | 50h |
| 57 | 1.1.6.3.2 | DB | manual | 3.12d? | 2025-07-10 | 2025-07-15 | 49 | Yasir [80%] | 20h |
| 58 | 1.1.6.4 | Deployment | manual | 0.62d? | 2025-07-23 | 2025-07-23 | 55 | Abid [20%] | 1h |
| 59 | 1.1.6.5 | DB Packaging | manual | 0.62d? | 2025-07-21 | 2025-07-22 | 55 | Arif [40%] | 2h |
| 60 | 1.1.6.6 | **QA** |  | 22.02d? | 2025-06-25 | 2025-07-25 |  |  | 17h |
| 61 | 1.1.6.6.1 | Test case writing | manual | 0.62d? | 2025-06-25 | 2025-06-25 | 53, 14 | Ayesha [80%] | 4h |
| 62 | 1.1.6.6.2 | Testing | manual | 1.56d? | 2025-07-23 | 2025-07-25 | 58, 19 | Ayesha [80%] | 10h |
| 63 | 1.1.6.6.3 | QA Review and management | manual | 0.94d? | 2025-07-23 | 2025-07-24 | 58 | Bilal [40%] | 3h |
| 64 | 1.1.6.7 | **Bug fixing** |  | 3.64d? | 2025-07-22 | 2025-07-25 |  |  | 14h |
| 65 | 1.1.6.7.1 | Bug fixing | manual | 1.56d? | 2025-07-22 | 2025-07-23 | 72 | Ali [80%] | 10h |
| 66 | 1.1.6.7.2 | Bug Verification | manual | 0.62d? | 2025-07-25 | 2025-07-25 | 65, 62 | Ayesha [80%] | 4h |
| 67 | 1.1.6.8 | Review and Management | manual | 6.25d? | 2025-06-17 | 2025-06-25 |  | Abid [20%] | 10h |
| 68 | 1.1.7 | **Favorite button does not work ( Fix or hide) - Hide** |  | 27.36d? | 2025-06-17 | 2025-07-24 |  |  | 6.5h |
| 69 | 1.1.7.1 | Design document | milestone, manual | 0d? | 2025-06-25 | 2025-06-25 | 53 | Asim [50%] |  |
| 70 | 1.1.7.2 | Design document review and structural changes marking | milestone, manual | 0d? | 2025-07-23 | 2025-07-23 | 65 | Ali [80%]; Abid [50%] |  |
| 71 | 1.1.7.3 | **Development** |  | 25.18d? | 2025-06-17 | 2025-07-22 |  |  | 2h |
| 72 | 1.1.7.3.1 | DotNet | manual | 0.31d? | 2025-07-21 | 2025-07-22 | 56 | Ali [80%] | 2h |
| 73 | 1.1.7.3.2 | DB | manual | 1d? | 2025-06-17 | 2025-06-17 |  |  |  |
| 74 | 1.1.7.4 | Deployment | manual | 0.62d? | 2025-07-23 | 2025-07-23 | 71 | Abid [20%] | 1h |
| 75 | 1.1.7.5 | **QA** |  | 20.61d? | 2025-06-25 | 2025-07-23 |  |  | 1.5h |
| 76 | 1.1.7.5.1 | Test case writing | milestone, manual | 0d? | 2025-06-25 | 2025-06-25 | 69 | Kashif [80%] |  |
| 77 | 1.1.7.5.2 | Testing | manual | 0.16d? | 2025-07-23 | 2025-07-23 | 74 | Kashif [80%] | 1h |
| 78 | 1.1.7.5.3 | QA Review and management | manual | 0.16d? | 2025-07-23 | 2025-07-23 | 74 | Bilal [40%] | 0.5h |
| 79 | 1.1.7.6 | Bug fixing | manual | 0.16d? | 2025-07-23 | 2025-07-23 | 65, 77 | Ali [80%] | 1h |
| 80 | 1.1.7.7 | Review and Management | manual | 0.62d? | 2025-07-23 | 2025-07-24 | 70 | Abid [20%] | 1h |

| ID | WBS | Task | Type | Duration | Start | Finish | Predecessors | Resources | Work |
| --- | --- | --- | --- | --- | --- | --- | --- | --- | --- |
| 81 | 1.1.8 | **Format all amounts to be trwo decimals (Appearing in filters)** |  | 31.5d? | 2025-06-17 | 2025-07-30 |  |  | 42h |
| 82 | 1.1.8.1 | Design document | manual | 0.5d? | 2025-06-25 | 2025-06-25 | 69 | Asim [50%] | 2h |
| 83 | 1.1.8.2 | Design document review and structural changes marking | manual | 0.5d? | 2025-07-23 | 2025-07-24 | 79, 82 | Ali [80%]; Abid [50%] | 4h |
| 84 | 1.1.8.3 | **Development** |  | 29.94d? | 2025-06-17 | 2025-07-28 |  |  | 16h |
| 85 | 1.1.8.3.1 | DotNet | manual | 2.5d? | 2025-07-24 | 2025-07-28 | 83 | Ali [80%] | 16h |
| 86 | 1.1.8.3.2 | DB | manual | 1d? | 2025-06-17 | 2025-06-17 |  |  |  |
| 87 | 1.1.8.4 | Deployment | manual | 0.62d? | 2025-07-28 | 2025-07-29 | 84 | Abid [20%] | 1h |
| 88 | 1.1.8.5 | **QA** |  | 24.71d? | 2025-06-25 | 2025-07-30 |  |  | 12h |
| 89 | 1.1.8.5.1 | Test case writing | manual | 0.62d? | 2025-06-25 | 2025-06-26 | 82, 61 | Ayesha [80%] | 4h |
| 90 | 1.1.8.5.2 | Testing | manual | 0.94d? | 2025-07-29 | 2025-07-30 | 87 | Ayesha [80%] | 6h |
| 91 | 1.1.8.5.3 | QA Review and management | manual | 0.62d? | 2025-07-29 | 2025-07-30 | 87 | Bilal [40%] | 2h |
| 92 | 1.1.8.6 | **Bug fixing** |  | 0.47d? | 2025-07-29 | 2025-07-30 |  |  | 3h |
| 93 | 1.1.8.6.1 | Bug fixing | manual | 0.31d? | 2025-07-29 | 2025-07-29 | 100 | Ali [80%] | 2h |
| 94 | 1.1.8.6.2 | Bug Verification | manual | 0.16d? | 2025-07-29 | 2025-07-30 | 93 | Ayesha [80%] | 1h |
| 95 | 1.1.8.7 | Review and Management | manual | 2.5d? | 2025-07-24 | 2025-07-28 | 83 | Abid [20%] | 4h |
| 96 | 1.1.9 | **If we add a new user and start with the sequence on screen, we get an error. Starting with "User Group" and then filling in rest of details, i.e. resource id, name, email and login, we get "null resource ID error. If we fill in all details and assign user** |  | 31.5d? | 2025-06-17 | 2025-07-30 |  |  | 10h |
| 97 | 1.1.9.1 | Design document | milestone, manual | 0d? | 2025-06-25 | 2025-06-25 | 82 | Asim [50%] |  |
| 98 | 1.1.9.2 | Design document review and structural changes marking | milestone, manual | 0d? | 2025-07-28 | 2025-07-28 | 85 | Ali [80%]; Abid [50%] |  |
| 99 | 1.1.9.3 | **Development** |  | 30.56d? | 2025-06-17 | 2025-07-29 |  |  | 4h |
| 100 | 1.1.9.3.1 | DotNet | manual | 0.62d? | 2025-07-28 | 2025-07-29 | 98 | Ali [80%] | 4h |
| 101 | 1.1.9.3.2 | DB | manual | 1d? | 2025-06-17 | 2025-06-17 |  |  |  |
| 102 | 1.1.9.4 | Deployment | manual | 0.62d? | 2025-07-29 | 2025-07-30 | 99 | Abid [20%] | 1h |
| 103 | 1.1.9.5 | **QA** |  | 24.08d? | 2025-06-26 | 2025-07-30 |  |  | 3h |
| 104 | 1.1.9.5.1 | Test case writing | milestone, manual | 0d? | 2025-06-26 | 2025-06-26 | 97, 89 | Ayesha [80%] |  |
| 105 | 1.1.9.5.2 | Testing | manual | 0.31d? | 2025-07-30 | 2025-07-30 | 102 | Ayesha [80%] | 2h |
| 106 | 1.1.9.5.3 | Bug fixing | milestone, manual | 0d? | 2025-07-30 | 2025-07-30 | 105 | Ali [80%] |  |
| 107 | 1.1.9.5.4 | QA Review and management | manual | 0.31d? | 2025-07-30 | 2025-07-30 | 102 | Bilal [40%] | 1h |
| 108 | 1.1.9.6 | Review and Management | manual | 1.25d? | 2025-07-28 | 2025-07-30 | 98 | Abid [20%] | 2h |

| ID | WBS | Task | Type | Duration | Start | Finish | Predecessors | Constraint | Resources | Work | Text1 |
| --- | --- | --- | --- | --- | --- | --- | --- | --- | --- | --- | --- |
| 109 | 1.1.10 | **Manually mark invoice Archieved** |  | 38.41d? | 2025-06-25 | 2025-08-20 |  |  |  | 191h |  |
| 110 | 1.1.10.1 | Design document | manual | 2d? | 2025-06-25 | 2025-06-27 | 97 |  | Asim [50%] | 8h |  |
| 111 | 1.1.10.2 | Design document review and structural changes marking | manual | 0.77d? | 2025-07-30 | 2025-07-31 | 110, 106 |  | Ali [80%]; Abid [50%] | 8h |  |
| 112 | 1.1.10.3 | **Development** |  | 10d? | 2025-07-31 | 2025-08-15 |  |  |  | 96h |  |
| 113 | 1.1.10.3.1 | DotNet- Mark the screen archive/unarchive and View in disable mode | manual | 5d? | 2025-07-31 | 2025-08-07 | 111 |  | Ali [80%] | 32h |  |
| 114 | 1.1.10.3.2 | New Screen Development | manual | 5d? | 2025-08-07 | 2025-08-15 | 113 |  | Ali [80%] | 32h |  |
| 115 | 1.1.10.3.3 | DB | manual | 5.71d? | 2025-07-31 | 2025-08-07 | 111 |  | Yasir [70%] | 32h |  |
| 116 | 1.1.10.4 | Deployment | manual | 1d? | 2025-08-07 | 2025-08-08 | 113 |  | Abid [20%] | 1h |  |
| 117 | 1.1.10.5 | **QA** |  | 34.29d? | 2025-06-27 | 2025-08-15 |  |  |  | 46h |  |
| 118 | 1.1.10.5.1 | Test case writing | manual | 1.88d? | 2025-06-27 | 2025-07-01 | 110 |  | Kashif [80%] | 12h |  |
| 119 | 1.1.10.5.2 | Testing | manual | 4.69d? | 2025-08-08 | 2025-08-15 | 116 |  | Kashif [80%] | 30h |  |
| 120 | 1.1.10.5.3 | QA Review and management | manual | 1.62d? | 2025-08-08 | 2025-08-11 | 116 |  | Bilal [40%] | 4h |  |
| 121 | 1.1.10.6 | **Bug fixing** |  | 6.81d? | 2025-08-08 | 2025-08-20 |  |  |  | 24h |  |
| 122 | 1.1.10.6.1 | Bug fixing | manual | 1.56d? | 2025-08-15 | 2025-08-18 | 116, 114 |  | Ali [80%] | 10h |  |
| 123 | 1.1.10.6.2 | DB Bug fixing | manual | 1.5d | 2025-08-08 | 2025-08-11 | 116 |  | Yasir [50%] | 6h |  |
| 124 | 1.1.10.6.3 | Bug Verification | manual | 1.25d? | 2025-08-18 | 2025-08-20 | 122 |  | Kashif [80%] | 8h |  |
| 125 | 1.1.10.7 | Review and Management | manual | 5d? | 2025-07-31 | 2025-08-07 | 111 |  | Abid [20%] | 8h |  |
| 126 | 1.1.11 | **eInvoice pull** |  | 48.56d? | 2025-06-17 | 2025-08-25 |  |  |  | 715h | Waiting for design document |
| 127 | 1.1.11.1 | **eInvoices (iPC)(BingAd, DV360,GCM,GoogleAd, Twitter)** |  | 30.3d? | 2025-06-17 | 2025-07-29 |  |  |  | 199h |  |
| 128 | 1.1.11.1.1 | KickOff meeting with Tao | manual | 0.5d? | 2025-06-18 | 2025-06-18 |  | start no earlier than 2025-06-18 | Tao [25%]; Abid [25%]; Shoaib [25%] | 3h |  |
| 129 | 1.1.11.1.2 | API Review and Postman calls configurations | manual | 7.5d | 2025-06-18 | 2025-06-30 | 128 |  | Tao [50%]; Shoaib [60%] | 60h |  |
| 130 | 1.1.11.1.3 | Design document review and structural changes marking | manual | 1d? | 2025-06-30 | 2025-07-01 | 129 |  | Shoaib [50%]; Abid [50%] | 8h |  |
| 131 | 1.1.11.1.4 | **Development** |  | 20.18d? | 2025-07-01 | 2025-07-29 |  |  |  | 128h |  |
| 132 | 1.1.11.1.4.1 | DotNet - iPC Changes(New Methods for 4 Platforms + Expected change for 1 Platform) + Packaging and Deployment | manual | 18.75d? | 2025-07-01 | 2025-07-25 | 130 |  | Shoaib [80%] | 120h |  |
| 133 | 1.1.11.1.4.2 | DB | manual | 1.43d? | 2025-07-25 | 2025-07-29 | 132 |  | Yasir [70%] | 8h |  |

| ID | WBS | Task | Type | Duration | Start | Finish | Predecessors | Constraint | Resources | Work |
| --- | --- | --- | --- | --- | --- | --- | --- | --- | --- | --- |
| 134 | 1.1.11.1.5 | **QA** |  | 1d? | 2025-06-17 | 2025-06-17 |  |  |  |  |
| 135 | 1.1.11.1.5.1 | Bug fixing | manual | 1d? | 2025-06-17 | 2025-06-17 |  |  |  |  |
| 136 | 1.1.11.1.6 | Review and Management | manual | 1d? | 2025-06-17 | 2025-06-17 |  |  |  |  |
| 137 | 1.1.11.2 | **eInvoices (Apworks)** |  | 46.44d? | 2025-06-19 | 2025-08-25 |  |  |  | 468h |
| 138 | 1.1.11.2.1 | Design document | manual | 6.25d? | 2025-06-19 | 2025-06-27 |  | start no earlier than 2025-06-19 | Tao [40%] | 20h |
| 139 | 1.1.11.2.2 | Design document review and structural changes marking | manual | 1.04d? | 2025-06-27 | 2025-06-30 | 138, 110 |  | Abid [40%]; Asim [40%]; Tao [40%] | 10h |
| 140 | 1.1.11.2.3 | **Development** |  | 31.44d? | 2025-06-27 | 2025-08-11 |  |  |  | 250h |
| 141 | 1.1.11.2.3.1 | Dot Net | manual | 29.69d? | 2025-07-01 | 2025-08-11 | 139, 152 |  | Asad [80%] | 190h |
| 142 | 1.1.11.2.3.2 | DB | manual | 9.38d? | 2025-06-27 | 2025-07-10 | 138 |  | Yasir [80%] | 60h |
| 143 | 1.1.11.2.4 | Deployment | manual | 2.5d? | 2025-08-11 | 2025-08-15 | 140 |  | Abid [20%] | 4h |
| 144 | 1.1.11.2.5 | DB Packaging | manual | 1.25d? | 2025-08-11 | 2025-08-13 | 140 |  | Yasir [80%] | 8h |
| 145 | 1.1.11.2.6 | **QA** |  | 38.85d? | 2025-06-30 | 2025-08-25 |  |  |  | 136h |
| 146 | 1.1.11.2.6.1 | Test case writing | manual | 6.25d? | 2025-06-30 | 2025-07-08 | 139, 104 |  | Ayesha [80%] | 40h |
| 147 | 1.1.11.2.6.2 | Testing | manual | 6.25d? | 2025-08-15 | 2025-08-25 | 143 |  | Ayesha [80%] | 40h |
| 148 | 1.1.11.2.6.3 | Bug fixing | manual | 6.25d? | 2025-08-15 | 2025-08-25 | 143 |  | Asad [80%] | 40h |
| 149 | 1.1.11.2.6.4 | DB Bug fixing | manual | 2.5d? | 2025-08-15 | 2025-08-19 | 143 |  | Yasir [80%] | 16h |
| 150 | 1.1.11.2.7 | Review and Management | manual | 27d? | 2025-06-27 | 2025-08-05 | 138 |  | Abid [20%] | 40h |
| 151 | 1.1.11.3 | iPC - SelfServices | manual | 1d | 2025-06-17 | 2025-06-17 |  |  |  |  |
| 152 | 1.1.11.4 | **Upgrade ApWorks application to dotnet Core 8.0 from 7.0** |  | 5d? | 2025-06-24 | 2025-07-01 |  | start no earlier than 2025-06-24 |  | 32h |
| 153 | 1.1.11.4.1 | Lambda Upgrade | manual | 1.25d? | 2025-06-24 | 2025-06-25 |  |  | Asad [80%] | 8h |
| 154 | 1.1.11.4.2 | Application upgrade (need to resolve aws container issue with core 9.0) | manual | 2.5d? | 2025-06-25 | 2025-06-27 | 153 |  | Asad [80%] | 16h |
| 155 | 1.1.11.4.3 | Azure service upgrade | manual | 1.25d? | 2025-06-27 | 2025-07-01 | 154 |  | Asad [80%] | 8h |
| 156 | 1.1.11.5 | Separate Integration layer from main application(80 % work completed, only container setup things need to be verified) | manual | 1d? | 2025-06-17 | 2025-06-17 |  |  |  | 16h |
| 157 | 1.1.12 | Sync optimzation | manual | 1d? | 2025-06-17 | 2025-06-17 |  |  |  |  |

| ID | WBS | Task | Type | Duration | Start | Finish | Predecessors | Resources | Work |
| --- | --- | --- | --- | --- | --- | --- | --- | --- | --- |
| 159 | 1.1.13 | **2nd integration / Integration Test** |  | 6.25d? | 2025-08-25 | 2025-09-02 | 126, 109 |  | 180h |
| 160 | 1.1.13.1 | Testing | manual | 6.25d | 2025-08-25 | 2025-09-02 |  | Bilal [40%] | 20h |
| 161 | 1.1.13.2 | Testing | manual | 6.25d | 2025-08-25 | 2025-09-02 |  | Kashif [80%] | 40h |
| 162 | 1.1.13.3 | Testing | manual | 6.25d | 2025-08-25 | 2025-09-02 |  | Kashif [80%] | 40h |
| 163 | 1.1.13.4 | Bug Fixing | manual | 6.25d? | 2025-08-25 | 2025-09-02 |  | Ali [80%] | 40h |
| 164 | 1.1.13.5 | Bug Fixing | manual | 6.25d? | 2025-08-25 | 2025-09-02 |  | Asad [80%] | 40h |
| 165 | 1.1.14 | Ready for UAT | manual | 1d? | 2025-09-02 | 2025-09-03 | 159 |  |  |
