Schedule from MS Project, 2025-06-17 to 2025-09-17.

## Calendars

- Standard: Mon-Fri 08:00-12:00, 13:00-17:00; Sat-Sun off. Exceptions (off unless hours are given): 2025-08-14 (Augus 14).

## Resources

| Resource |
| --- |
| Abid |
| Asad |
| Yasir |
| Arslan |
| Ali |
| Bilal |
| Asim |
| Muzamal |
| Arif |
| Hamza |
| Tao |
| Shoaib |
| Ayesha |
| Aimen |
| Kashif |

## Schedule

| ID | WBS | Task | Type | Duration | Start | Finish | Predecessors | Total slack | Constraint | Resources | Work |
| --- | --- | --- | --- | --- | --- | --- | --- | --- | --- | --- | --- |
| 1 | 1 | **2025.3** |  | 65.59d? | 2025-06-17 | 2025-09-17 |  | 0d |  |  | 1772h |
| 2 | 1.1 | **Nexelus** |  | 65.59d? | 2025-06-17 | 2025-09-17 |  |  |  |  | 1772h |
| 3 | 1.1.1 | Planning | manual | 60h | 2025-06-17 | 2025-06-26 |  |  |  | Abid [50%] | 30h |
| 4 | 1.1.2 | Release briefing | manual | 4.17h | 2025-06-23 | 2025-06-23 |  |  | start no earlier than 2025-06-23 | Muzamal [60%]; Bilal [60%]; Arif [60%]; Abid [60%] | 10h |
| 5 | 1.1.3 | Rapid 7 Report Vulnerabilities. | manual | 6.25d? | 2025-06-23 | 2025-07-01 | 4 |  | start no earlier than 2025-06-23 | Muzamal [60%] | 30h |
| 6 | 1.1.4 | **Allow PO numbers to be appended automatically to campaign names. By Default the IO number is added but when replacing name with Placement or Package name, can the IO number be appended?** |  | 10.41d? | 2025-06-27 | 2025-07-14 |  |  |  |  | 60h |
| 7 | 1.1.4.1 | Design document | manual | 12h | 2025-06-27 | 2025-07-01 |  |  | start no earlier than 2025-06-23 | Asim [50%] | 6h |
| 8 | 1.1.4.2 | Design document review and structural changes marking | manual | 5.46h | 2025-07-01 | 2025-07-02 | 7, 4, 5 |  |  | Abid [50%]; Muzamal [60%] | 6h |
| 9 | 1.1.4.3 | **Development** |  | 5d? | 2025-07-02 | 2025-07-09 |  |  |  |  | 24h |
| 10 | 1.1.4.3.1 | DotNet | manual | 40h | 2025-07-02 | 2025-07-09 | 8 |  |  | Muzamal [60%] | 24h |
| 11 | 1.1.4.3.2 | DB | milestone, manual | 0h | 2025-07-02 | 2025-07-02 | 8 |  |  | Arif [50%] |  |
| 12 | 1.1.4.3.3 | DB Packaging | milestone, manual | 0d? | 2025-07-09 | 2025-07-09 | 10, 11 |  |  | Arif [50%] |  |
| 13 | 1.1.4.4 | **QA** |  | 7.5d? | 2025-07-02 | 2025-07-14 |  |  |  |  | 18h |
| 14 | 1.1.4.4.1 | Test case writing | manual | 0.62d? | 2025-07-02 | 2025-07-03 | 8 |  |  | Hamza [80%] | 4h |
| 15 | 1.1.4.4.2 | Testing | manual | 1.25d? | 2025-07-09 | 2025-07-10 | 9 |  |  | Hamza [80%] | 8h |
| 16 | 1.1.4.4.3 | Bug fixing | manual | 1.25d? | 2025-07-10 | 2025-07-14 | 20, 15 |  |  | Muzamal [60%] | 6h |
| 17 | 1.1.4.5 | Review and Management | manual | 30h | 2025-07-02 | 2025-07-08 | 8 |  |  | Abid [20%] | 6h |
| 18 | 1.1.5 | **Add KPI input fields forall metric types, not just Viewability** |  | 13.61d? | 2025-07-01 | 2025-07-18 |  |  |  |  | 42h |
| 19 | 1.1.5.1 | Design document | manual | 6.67h | 2025-07-01 | 2025-07-01 | 7 |  |  | Asim [60%] | 4h |
| 20 | 1.1.5.2 | Design document review and structural changes marking | manual | 7.5h | 2025-07-09 | 2025-07-10 | 19, 10 |  |  | Abid [30%]; Muzamal [60%]; Arif [20%] | 6h |
| 21 | 1.1.5.3 | **Development** |  | 3.33d | 2025-07-14 | 2025-07-17 |  |  |  |  | 16h |
| 22 | 1.1.5.3.1 | DotNet | manual | 26.67h | 2025-07-14 | 2025-07-17 | 16 |  |  | Muzamal [60%] | 16h |
| 23 | 1.1.5.3.2 | DB | milestone, manual | 0h | 2025-07-14 | 2025-07-14 | 16 |  |  |  |  |
| 24 | 1.1.5.4 | **QA** |  | 11.57d? | 2025-07-03 | 2025-07-18 |  |  |  |  | 14h |
| 25 | 1.1.5.4.1 | Test case writing | manual | 0.94d? | 2025-07-03 | 2025-07-04 | 14 |  |  | Hamza [80%] | 6h |
| 26 | 1.1.5.4.2 | Testing | manual | 0.62d? | 2025-07-17 | 2025-07-18 | 21 |  |  | Hamza [80%] | 4h |
| 27 | 1.1.5.4.3 | Bug fixing | manual | 0.83d? | 2025-07-17 | 2025-07-18 | 31 |  |  | Muzamal [60%] | 4h |
| 28 | 1.1.5.5 | Review and Management | manual | 10h | 2025-07-14 | 2025-07-15 | 16 |  |  | Abid [20%] | 2h |

| ID | WBS | Task | Type | Duration | Start | Finish | Predecessors | Resources | Work |
| --- | --- | --- | --- | --- | --- | --- | --- | --- | --- |
| 29 | 1.1.6 | **Showold vs. new valueson revision screens (e.g., budget, dates) (Meta, TTD, LinkedIN, Twitter, Bing Ad, DV360)** |  | 41.09d? | 2025-07-02 | 2025-08-29 |  |  | 516h |
| 30 | 1.1.6.1 | Design document | manual | 24h | 2025-07-02 | 2025-07-04 | 19 |  | 16h |
| 31 | 1.1.6.2 | Design document review and structural changes marking | manual | 4.24h | 2025-07-17 | 2025-07-17 | 22 | Abid [60%]; Muzamal [60%]; Arif [60%]; Bilal [60%]; Hamza [60%] | 12h |
| 32 | 1.1.6.3 | **Development** |  | 25.93d? | 2025-07-17 | 2025-08-25 |  |  | 298h |
| 33 | 1.1.6.3.1 | **DotNet** |  | 25.93d | 2025-07-17 | 2025-08-25 |  |  | 230h |
| 34 | 1.1.6.3.1.1 | TTD | manual | 83.33h | 2025-07-18 | 2025-08-04 | 27 | Muzamal [60%] | 50h |
| 35 | 1.1.6.3.1.2 | LinkedIn | manual | 182.67h | 2025-07-17 | 2025-08-20 | 31, 120 | Abid [30%] | 50h |
| 36 | 1.1.6.3.1.3 | Twitter | manual | 83.33h | 2025-08-04 | 2025-08-19 | 34 | Muzamal [60%] | 50h |
| 37 | 1.1.6.3.1.4 | DV360 | manual | 50h | 2025-08-01 | 2025-08-12 | 41 | Shoaib [80%] | 40h |
| 38 | 1.1.6.3.1.5 | Meta | manual | 50h | 2025-08-15 | 2025-08-25 | 42 | Shoaib [80%] | 40h |
| 39 | 1.1.6.3.2 | **iPC** |  | 13.75d? | 2025-07-25 | 2025-08-15 |  |  | 48h |
| 40 | 1.1.6.3.2.1 | BingAd | manual | 2.5d? | 2025-07-25 | 2025-07-30 |  | Shoaib [80%] | 16h |
| 41 | 1.1.6.3.2.2 | DV360 | manual | 2.5d? | 2025-07-30 | 2025-08-01 | 40 | Shoaib [80%] | 16h |
| 42 | 1.1.6.3.2.3 | Meta | manual | 2.5d? | 2025-08-12 | 2025-08-15 | 37 | Shoaib [80%] | 16h |
| 43 | 1.1.6.3.3 | DB | manual | 50h | 2025-07-18 | 2025-07-29 | 27 | Arif [40%] | 20h |
| 44 | 1.1.6.4 | Deploymnet and Packaging | manual | 0.62d? | 2025-07-29 | 2025-07-29 | 43 | Arif [40%] | 2h |
| 45 | 1.1.6.5 | **QA** |  | 38.09d? | 2025-07-07 | 2025-08-29 |  |  | 148h |
| 46 | 1.1.6.5.1 | Test case writing | manual | 3.75d? | 2025-07-07 | 2025-07-10 | 30 | Hamza [80%] | 24h |
| 47 | 1.1.6.5.2 | **Testing** |  | 15.93d? | 2025-08-04 | 2025-08-27 |  |  | 40h |
| 48 | 1.1.6.5.2.1 | TTD | manual | 1.25d? | 2025-08-04 | 2025-08-05 | 34 | Hamza [80%] | 8h |
| 49 | 1.1.6.5.2.2 | LinkedIn | manual | 1.25d? | 2025-08-20 | 2025-08-22 | 35 | Hamza [80%] | 8h |
| 50 | 1.1.6.5.2.3 | Twitter | manual | 1.25d? | 2025-08-22 | 2025-08-25 | 36, 49 | Hamza [80%] | 8h |
| 51 | 1.1.6.5.2.4 | DV360 | manual | 1.25d? | 2025-08-12 | 2025-08-13 | 37 | Hamza [80%] | 8h |
| 52 | 1.1.6.5.2.5 | Meta | manual | 1.25d? | 2025-08-25 | 2025-08-27 | 38 | Hamza [80%] | 8h |

| ID | WBS | Task | Type | Duration | Start | Finish | Predecessors | Resources | Work |
| --- | --- | --- | --- | --- | --- | --- | --- | --- | --- |
| 53 | 1.1.6.5.3 | **Bug fixing** |  | 7.48d? | 2025-08-19 | 2025-08-29 |  |  | 44h |
| 54 | 1.1.6.5.3.1 | TTD | manual | 2.08d? | 2025-08-19 | 2025-08-21 | 48, 36 | Muzamal [60%] | 10h |
| 55 | 1.1.6.5.3.2 | LinkedIn | manual | 3.33d? | 2025-08-22 | 2025-08-27 | 49 | Abid [30%] | 8h |
| 56 | 1.1.6.5.3.3 | Twitter | manual | 1.67d? | 2025-08-25 | 2025-08-26 | 50, 54 | Muzamal [60%] | 8h |
| 57 | 1.1.6.5.3.4 | DV360 | manual | 1.79d? | 2025-08-25 | 2025-08-27 | 51, 38 | Shoaib [70%] | 10h |
| 58 | 1.1.6.5.3.5 | Meta | manual | 1.43d? | 2025-08-27 | 2025-08-29 | 52, 57 | Shoaib [70%] | 8h |
| 59 | 1.1.6.5.4 | QA Review and Management | manual | 12.5d | 2025-08-04 | 2025-08-21 | 34 | Bilal [40%] | 40h |
| 60 | 1.1.6.6 | Review and Management | manual | 216h | 2025-07-18 | 2025-08-27 | 24 | Abid [20%] | 40h |
| 61 | 1.1.7 | **Explore ifobjective field can pre-populatefrom media plan** |  | 11.56d? | 2025-07-07 | 2025-07-22 |  |  | 98h |
| 62 | 1.1.7.1 | Design document | manual | 13.33h | 2025-07-07 | 2025-07-08 | 30 | Asim [60%] | 8h |
| 63 | 1.1.7.2 | Design document review and structural changes marking | manual | 3.33h | 2025-07-08 | 2025-07-09 | 62 | Arslan [60%]; Abid [60%]; Arif [60%]; Yasir [60%]; Bilal [60%]; Hamza [60%] | 12h |
| 64 | 1.1.7.3 | **Development** |  | 7.5d? | 2025-07-09 | 2025-07-18 |  |  | 50h |
| 65 | 1.1.7.3.1 | DotNet | manual | 6.25d? | 2025-07-10 | 2025-07-18 |  | Arslan [80%] | 40h |
| 66 | 1.1.7.3.2 | DB | manual | 2.08d? | 2025-07-09 | 2025-07-11 | 63 | Arif [60%] | 10h |
| 67 | 1.1.7.4 | **QA** |  | 7.73d? | 2025-07-10 | 2025-07-22 |  |  | 26h |
| 68 | 1.1.7.4.1 | Test case writing | manual | 0.94d? | 2025-07-10 | 2025-07-11 | 63, 15 | Hamza [80%] | 6h |
| 69 | 1.1.7.4.2 | Testing | manual | 1.25d? | 2025-07-18 | 2025-07-21 | 64, 31 | Hamza [80%] | 8h |
| 70 | 1.1.7.4.3 | Bug fixing | manual | 1.56d? | 2025-07-21 | 2025-07-22 | 75 | Arslan [80%] | 10h |
| 71 | 1.1.7.4.4 | QA Review and Management | manual | 0.62d? | 2025-07-18 | 2025-07-21 | 64 | Bilal [40%] | 2h |
| 72 | 1.1.7.5 | Review and Management | manual | 1.25d? | 2025-07-07 | 2025-07-08 | 30 | Abid [20%] | 2h |
| 73 | 1.1.8 | **Assess ability to toggleadvantage campaign budget on/offvia API** |  | 18.67d? | 2025-07-08 | 2025-08-04 |  |  | 115h |
| 74 | 1.1.8.1 | Design document | manual | 1.67d? | 2025-07-08 | 2025-07-10 | 62 | Asim [60%] | 8h |
| 75 | 1.1.8.2 | Design document review and architechtural changes marking | manual | 0.42d? | 2025-07-18 | 2025-07-18 | 74, 65 | Arslan [60%]; Abid [60%]; Arif [60%]; Yasir [60%]; Bilal [60%]; Hamza [60%] | 12h |
| 76 | 1.1.8.3 | **Development** |  | 6.25d? | 2025-07-22 | 2025-07-30 |  |  | 50h |
| 77 | 1.1.8.3.1 | DotNet | manual | 6.25d? | 2025-07-22 | 2025-07-30 | 70, 75 | Arslan [80%] | 40h |
| 78 | 1.1.8.3.2 | DB | manual | 2.08d? | 2025-07-28 | 2025-07-30 | 75, 90 | Arif [60%] | 10h |

| ID | WBS | Task | Type | Duration | Start | Finish | Predecessors | Resources | Work |
| --- | --- | --- | --- | --- | --- | --- | --- | --- | --- |
| 79 | 1.1.8.4 | **QA** |  | 9.79d? | 2025-07-21 | 2025-08-01 |  |  | 25h |
| 80 | 1.1.8.4.1 | Test case writing | manual | 0.94d? | 2025-07-21 | 2025-07-21 | 75 | Hamza [80%] | 6h |
| 81 | 1.1.8.4.2 | Testing | manual | 0.94d? | 2025-07-30 | 2025-07-31 | 76 | Hamza [80%] | 6h |
| 82 | 1.1.8.4.3 | Bug fixing | manual | 1.56d? | 2025-07-31 | 2025-08-01 | 99 | Arslan [80%] | 10h |
| 83 | 1.1.8.4.4 | QA Review and Management | manual | 0.94d? | 2025-07-30 | 2025-07-31 | 76 | Bilal [40%] | 3h |
| 84 | 1.1.8.5 | Review and Management | manual | 8.33d? | 2025-07-23 | 2025-08-04 | 74, 67 | Abid [30%] | 20h |
| 85 | 1.1.9 | **Enable multiple media plans under one Bing IO** |  | 31.93d? | 2025-07-14 | 2025-08-27 |  |  | 288h |
| 86 | 1.1.9.1 | Design document | manual | 1.67d? | 2025-07-14 | 2025-07-15 | 98 | Asim [60%] | 8h |
| 87 | 1.1.9.2 | Design document review and architechtural changes marking | manual | 0.5d? | 2025-07-15 | 2025-07-16 | 86 | Asim [50%]; Abid [50%]; Bilal [50%]; Arif [50%] | 8h |
| 88 | 1.1.9.3 | **Development** |  | 21.43d? | 2025-07-16 | 2025-08-15 |  |  | 160h |
| 89 | 1.1.9.3.1 | DotNet | manual | 21.43d? | 2025-07-16 | 2025-08-15 | 87 | Asim [70%] | 120h |
| 90 | 1.1.9.3.2 | DB | manual | 8.33d? | 2025-07-16 | 2025-07-28 | 87 | Arif [60%] | 40h |
| 91 | 1.1.9.4 | **QA** |  | 26.93d? | 2025-07-21 | 2025-08-27 |  |  | 92h |
| 92 | 1.1.9.4.1 | Test case writing | manual | 1.88d? | 2025-07-21 | 2025-07-22 | 87, 75 | Hamza [80%] | 12h |
| 93 | 1.1.9.4.2 | Testing | manual | 8.33d? | 2025-08-15 | 2025-08-27 | 88 | Bilal [60%] | 40h |
| 94 | 1.1.9.4.3 | Bug fixing | manual | 4.17d? | 2025-08-15 | 2025-08-21 | 89 | Asim [60%] | 20h |
| 95 | 1.1.9.4.4 | Bug fixing DB | manual | 6.25d | 2025-08-15 | 2025-08-25 | 88 | Arif [40%] | 20h |
| 96 | 1.1.9.5 | Review and Management | manual | 14.5d? | 2025-07-15 | 2025-08-05 | 86 | Abid [20%] | 20h |
| 97 | 1.1.10 | **DENTSU _ Implementing a custom upload error log in Excel to provide detailed error tracking and improved troubleshooting.** |  | 30.83d? | 2025-07-10 | 2025-08-25 |  |  | 184h |
| 98 | 1.1.10.1 | Design document | manual | 1.67d? | 2025-07-10 | 2025-07-11 | 74 | Asim [60%] | 8h |
| 99 | 1.1.10.2 | Design document review and architechtural changes marking | manual | 0.42d? | 2025-07-30 | 2025-07-31 | 98, 77 | Arslan [60%]; Abid [60%]; Arif [60%]; Yasir [60%]; Bilal [60%]; Hamza [60%] | 12h |
| 100 | 1.1.10.3 | **Development** |  | 10.94d? | 2025-07-31 | 2025-08-18 |  |  | 88h |
| 101 | 1.1.10.3.1 | DotNet | manual | 9.38d? | 2025-08-01 | 2025-08-18 | 82 | Arslan [80%] | 60h |
| 102 | 1.1.10.3.2 | DB (For 1 uploads) | manual | 4.17d? | 2025-07-31 | 2025-08-06 | 99 | Yasir [60%] | 20h |
| 103 | 1.1.10.3.3 | DB Review and Management | manual | 5d | 2025-07-31 | 2025-08-07 | 99 | Arif [20%] | 8h |

| ID | WBS | Task | Type | Duration | Start | Finish | Predecessors | Constraint | Resources | Work |
| --- | --- | --- | --- | --- | --- | --- | --- | --- | --- | --- |
| 104 | 1.1.10.4 | **QA** |  | 15.94d? | 2025-07-31 | 2025-08-25 |  |  |  | 56h |
| 105 | 1.1.10.4.1 | Test case writing | manual | 2.5d? | 2025-07-31 | 2025-08-04 | 99 |  | Hamza [80%] | 16h |
| 106 | 1.1.10.4.2 | Testing | manual | 2.5d? | 2025-08-18 | 2025-08-20 | 100 |  | Hamza [80%] | 16h |
| 107 | 1.1.10.4.3 | Bug fixing | manual | 2.5d? | 2025-08-20 | 2025-08-25 | 106 |  | Arslan [80%] | 16h |
| 108 | 1.1.10.4.4 | QA Review and Management | manual | 2.5d? | 2025-08-18 | 2025-08-20 | 100 |  | Bilal [40%] | 8h |
| 109 | 1.1.10.5 | Review and Management | manual | 12.5d? | 2025-08-01 | 2025-08-21 | 98, 82 |  | Abid [20%] | 20h |
| 110 | 1.1.11 | **MC rates for PBG** |  | 22.67d? | 2025-06-17 | 2025-07-17 |  |  |  | 69h |
| 111 | 1.1.11.1 | Design document | manual | 1d? | 2025-06-17 | 2025-06-17 |  |  |  |  |
| 112 | 1.1.11.2 | Design document review and structural changes marking | manual | 0.25d? | 2025-06-17 | 2025-06-17 |  |  |  |  |
| 113 | 1.1.11.3 | **Development** |  | 5.21d? | 2025-07-07 | 2025-07-14 |  | start no earlier than 2025-07-07 |  | 45h |
| 114 | 1.1.11.3.1 | DotNet | manual | 5d? | 2025-07-07 | 2025-07-14 |  |  | Abid [50%] | 20h |
| 115 | 1.1.11.3.2 | DB | manual | 5d? | 2025-07-07 | 2025-07-14 |  |  | Arif [60%] | 24h |
| 116 | 1.1.11.3.3 | DB Packaging | manual | 0.21d? | 2025-07-14 | 2025-07-14 | 115 |  | Arif [60%] | 1h |
| 117 | 1.1.11.4 | **QA** |  | 22.67d? | 2025-06-17 | 2025-07-17 |  |  |  | 24h |
| 118 | 1.1.11.4.1 | Test case writing | manual | 1d? | 2025-06-17 | 2025-06-17 |  |  |  |  |
| 119 | 1.1.11.4.2 | Testing | manual | 3.33d? | 2025-07-14 | 2025-07-17 | 113 |  | Bilal [60%] | 16h |
| 120 | 1.1.11.4.3 | Bug fixing | manual | 2d? | 2025-07-14 | 2025-07-16 | 113 |  | Abid [50%] | 8h |
| 121 | 1.1.11.5 | Review and Management | manual | 1d? | 2025-06-17 | 2025-06-17 |  |  |  |  |
| 123 | 1.1.12 | **QA 2nd Iteration / Integration Testing** |  | 8.3d? | 2025-08-27 | 2025-09-09 | 97, 85, 73 |  |  | 240h |
| 124 | 1.1.12.1 | Testing | manual | 7.14d? | 2025-08-27 | 2025-09-08 |  |  | Bilal [70%] | 40h |
| 125 | 1.1.12.2 | Testing | manual | 6.25d? | 2025-08-27 | 2025-09-05 |  |  | Hamza [80%] | 40h |
| 126 | 1.1.12.3 | Bug Fixing | manual | 7.14d? | 2025-08-27 | 2025-09-08 |  |  | Arif [70%] | 40h |
| 127 | 1.1.12.4 | Bug Fixing | manual | 7.14d? | 2025-08-27 | 2025-09-08 |  |  | Arslan [70%] | 40h |
| 128 | 1.1.12.5 | Bug Fixing | manual | 7.14d? | 2025-08-27 | 2025-09-08 |  |  | Muzamal [70%] | 40h |
| 129 | 1.1.12.6 | Bug Fixing | manual | 7.14d? | 2025-08-29 | 2025-09-09 | 58 |  | Shoaib [70%] | 40h |

| ID | WBS | Task | Type | Duration | Start | Finish | Predecessors | Resources | Work |
| --- | --- | --- | --- | --- | --- | --- | --- | --- | --- |
| 130 | 1.1.13 | **Release environments upgrade** |  | 5.36d? | 2025-09-09 | 2025-09-16 | 123 |  | 90h |
| 131 | 1.1.13.1 | JG, TSY | manual | 1.79d? | 2025-09-09 | 2025-09-11 |  | Bilal [70%]; Hamza [80%]; Ayesha [70%] | 30h |
| 132 | 1.1.13.2 | TA,Whirlpool, HS, Pursuit | manual | 1.79d? | 2025-09-11 | 2025-09-12 | 131 | Bilal [70%]; Hamza [80%]; Ayesha [70%] | 30h |
| 133 | 1.1.13.3 | HY, WF, Dentsu Creative | manual | 1.79d | 2025-09-12 | 2025-09-16 | 132 | Bilal [70%]; Hamza [80%]; Ayesha [70%] | 30h |
| 134 | 1.1.14 | Ready for UAT | manual | 1d? | 2025-09-16 | 2025-09-17 | 130 |  |  |
