Schedule from MS Project, 2025-06-17 to 2026-01-02.

## Calendars

- Standard: Mon-Fri 08:00-12:00, 13:00-17:00; Sat-Sun off. Exceptions (off unless hours are given): 2025-08-14 (Augus 14).

## Resources

| Resource |
| --- |
| Abid |
| Asad |
| Yasir |
| Arslan |
| Ali |
| Bilal |
| Asim |
| Muzamal |
| Arif |
| Hamza |
| Tao |
| Shoaib |
| Ayesha |
| Aimen |
| Kashif |

## Schedule

| ID | WBS | Task | Type | Duration | Start | Finish | Predecessors | Total slack | Free slack | Constraint | Resources | Work |
| --- | --- | --- | --- | --- | --- | --- | --- | --- | --- | --- | --- | --- |
| 1 | 1 | **2025.3** |  | 65.59d? | 2025-06-17 | 2025-09-17 |  | 76.87d |  |  |  | 3395.7h |
| 2 | 1.1 | **Nexelus** |  | 65.59d? | 2025-06-17 | 2025-09-17 |  | 76.87d |  |  |  | 1772h |
| 3 | 1.1.1 | Planning |  | 60h | 2025-06-17 | 2025-06-26 |  | 134.96d |  |  | Abid [50%] | 30h |
| 4 | 1.1.2 | Release briefing |  | 4.17h | 2025-06-23 | 2025-06-23 |  | 93.68d | 0d | start no earlier than 2025-06-23 | Muzamal [60%]; Bilal [60%]; Arif [60%]; Abid [60%] | 10h |
| 5 | 1.1.3 | Rapid 7 Report Vulnerabilities. |  | 6.25d? | 2025-06-23 | 2025-07-01 | 4 | 93.68d | 0d | start no earlier than 2025-06-23 | Muzamal [60%] | 30h |
| 6 | 1.1.4 | **Allow PO numbers to be appended automatically to campaign names. By Default the IO number is added but when replacing name with Placement or Package name, can the IO number be appended?** |  | 10.41d? | 2025-06-27 | 2025-07-14 |  | 78.03d |  |  |  | 60h |
| 7 | 1.1.4.1 | Design document |  | 12h | 2025-06-27 | 2025-07-01 | 244 | 78.03d | 0d | start no earlier than 2025-06-23 | Asim [50%] | 6h |
| 8 | 1.1.4.2 | Design document review and structural changes marking |  | 5.46h | 2025-07-01 | 2025-07-02 | 7, 4, 5 | 93.68d | 0d |  | Abid [50%]; Muzamal [60%] | 6h |
| 9 | 1.1.4.3 | **Development** |  | 5d? | 2025-07-02 | 2025-07-09 |  | 93.68d | 0d |  |  | 24h |
| 10 | 1.1.4.3.1 | DotNet |  | 40h | 2025-07-02 | 2025-07-09 | 8 | 93.68d | 0d |  | Muzamal [60%] | 24h |
| 11 | 1.1.4.3.2 | DB | milestone | 0h | 2025-07-02 | 2025-07-02 | 8 | 98.68d | 5d |  | Arif [50%] |  |
| 12 | 1.1.4.3.3 | DB Packaging | milestone | 0d? | 2025-07-09 | 2025-07-09 | 10, 11 | 93.68d |  |  | Arif [50%] |  |
| 13 | 1.1.4.4 | **QA** |  | 7.5d? | 2025-07-02 | 2025-07-14 |  | 97.44d |  |  |  | 18h |
| 14 | 1.1.4.4.1 | Test case writing |  | 0.62d? | 2025-07-02 | 2025-07-03 | 8 | 104.32d | 0d |  | Hamza [80%] | 4h |
| 15 | 1.1.4.4.2 | Testing |  | 1.25d? | 2025-07-09 | 2025-07-10 | 9 | 93.68d | 0d |  | Hamza [80%] | 8h |
| 16 | 1.1.4.4.3 | Bug fixing |  | 1.25d? | 2025-07-10 | 2025-07-14 | 20, 15 | 93.68d | 0d |  | Muzamal [60%] | 6h |
| 17 | 1.1.4.5 | Review and Management |  | 30h | 2025-07-02 | 2025-07-08 | 8 | 127.13d |  |  | Abid [20%] | 6h |
| 18 | 1.1.5 | **Add KPI input fields forall metric types, not just Viewability** |  | 13.61d? | 2025-07-01 | 2025-07-18 |  | 78.03d |  |  |  | 42h |
| 19 | 1.1.5.1 | Design document |  | 6.67h | 2025-07-01 | 2025-07-01 | 7 | 78.03d | 0d |  | Asim [60%] | 4h |
| 20 | 1.1.5.2 | Design document review and structural changes marking |  | 7.5h | 2025-07-09 | 2025-07-10 | 19, 10 | 94d | 0.31d |  | Abid [30%]; Muzamal [60%]; Arif [20%] | 6h |
| 21 | 1.1.5.3 | **Development** |  | 3.33d | 2025-07-14 | 2025-07-17 |  | 93.68d | 0d |  |  | 16h |
| 22 | 1.1.5.3.1 | DotNet |  | 26.67h | 2025-07-14 | 2025-07-17 | 16 | 93.68d | 0d |  | Muzamal [60%] | 16h |
| 23 | 1.1.5.3.2 | DB | milestone | 0h | 2025-07-14 | 2025-07-14 | 16 | 97.76d |  |  |  |  |
| 24 | 1.1.5.4 | **QA** |  | 11.57d? | 2025-07-03 | 2025-07-18 |  | 93.68d | 0d |  |  | 14h |
| 25 | 1.1.5.4.1 | Test case writing |  | 0.94d? | 2025-07-03 | 2025-07-04 | 14 | 104.32d |  |  | Hamza [80%] | 6h |
| 26 | 1.1.5.4.2 | Testing |  | 0.62d? | 2025-07-17 | 2025-07-18 | 21 | 94.42d |  |  | Hamza [80%] | 4h |
| 27 | 1.1.5.4.3 | Bug fixing |  | 0.83d? | 2025-07-17 | 2025-07-18 | 31 | 93.68d | 0d |  | Muzamal [60%] | 4h |
| 28 | 1.1.5.5 | Review and Management |  | 10h | 2025-07-14 | 2025-07-15 | 16 | 122.13d |  |  | Abid [20%] | 2h |

| ID | WBS | Task | Duration | Start | Finish | Predecessors | Total slack | Free slack | Resources | Work |
| --- | --- | --- | --- | --- | --- | --- | --- | --- | --- | --- |
| 29 | 1.1.6 | **Showold vs. new valueson revision screens (e.g., budget, dates) (Meta, TTD, LinkedIN, Twitter, Bing Ad, DV360)** | 41.09d? | 2025-07-02 | 2025-08-29 |  | 78.03d |  |  | 516h |
| 30 | 1.1.6.1 | Design document | 24h | 2025-07-02 | 2025-07-04 | 19 | 78.03d | 0d |  | 16h |
| 31 | 1.1.6.2 | Design document review and structural changes marking | 4.24h | 2025-07-17 | 2025-07-17 | 22 | 93.68d | 0d | Abid [60%]; Muzamal [60%]; Arif [60%]; Bilal [60%]; Hamza [60%] | 12h |
| 32 | 1.1.6.3 | **Development** | 25.93d? | 2025-07-17 | 2025-08-25 |  | 82.8d |  |  | 298h |
| 33 | 1.1.6.3.1 | **DotNet** | 25.93d | 2025-07-17 | 2025-08-25 |  | 87.8d |  |  | 230h |
| 34 | 1.1.6.3.1.1 | TTD | 83.33h | 2025-07-18 | 2025-08-04 | 27 | 94.1d | 0d | Muzamal [60%] | 50h |
| 35 | 1.1.6.3.1.2 | LinkedIn | 166.67h | 2025-07-17 | 2025-08-20 | 31, 120 | 92.1d | 0d | Abid [30%] | 50h |
| 36 | 1.1.6.3.1.3 | Twitter | 83.33h | 2025-08-04 | 2025-08-19 | 34 | 94.1d | 0d | Muzamal [60%] | 50h |
| 37 | 1.1.6.3.1.4 | DV360 | 50h | 2025-08-01 | 2025-08-12 | 41 | 76.87d | 0d | Shoaib [80%] | 40h |
| 38 | 1.1.6.3.1.5 | Meta | 50h | 2025-08-15 | 2025-08-25 | 42 | 76.87d | 0d | Shoaib [80%] | 40h |
| 39 | 1.1.6.3.2 | **iPC** | 13.75d? | 2025-07-25 | 2025-08-15 |  | 76.87d |  |  | 48h |
| 40 | 1.1.6.3.2.1 | BingAd | 2.5d? | 2025-07-25 | 2025-07-30 | 266 | 76.87d | 0d | Shoaib [80%] | 16h |
| 41 | 1.1.6.3.2.2 | DV360 | 2.5d? | 2025-07-30 | 2025-08-01 | 40 | 76.87d | 0d | Shoaib [80%] | 16h |
| 42 | 1.1.6.3.2.3 | Meta | 2.5d? | 2025-08-12 | 2025-08-15 | 37 | 76.87d | 0d | Shoaib [80%] | 16h |
| 43 | 1.1.6.3.3 | DB | 50h | 2025-07-18 | 2025-07-29 | 27 | 111.81d | 0d | Arif [40%] | 20h |
| 44 | 1.1.6.4 | Deploymnet and Packaging | 0.62d? | 2025-07-29 | 2025-07-29 | 43 | 111.81d |  | Arif [40%] | 2h |
| 45 | 1.1.6.5 | **QA** | 38.09d? | 2025-07-07 | 2025-08-29 |  | 90.37d |  |  | 148h |
| 46 | 1.1.6.5.1 | Test case writing | 3.75d? | 2025-07-07 | 2025-07-10 | 30 | 124.71d |  | Hamza [80%] | 24h |
| 47 | 1.1.6.5.2 | **Testing** | 15.93d? | 2025-08-04 | 2025-08-27 |  | 90.3d |  |  | 40h |
| 48 | 1.1.6.5.2.1 | TTD | 1.25d? | 2025-08-04 | 2025-08-05 | 34 | 103.27d | 9.17d | Hamza [80%] | 8h |
| 49 | 1.1.6.5.2.2 | LinkedIn | 1.25d? | 2025-08-20 | 2025-08-22 | 35 | 92.1d | 0d | Hamza [80%] | 8h |
| 50 | 1.1.6.5.2.3 | Twitter | 1.25d? | 2025-08-22 | 2025-08-25 | 36, 49 | 92.52d | 0d | Hamza [80%] | 8h |
| 51 | 1.1.6.5.2.4 | DV360 | 1.25d? | 2025-08-12 | 2025-08-13 | 37 | 84.37d | 7.5d | Hamza [80%] | 8h |
| 52 | 1.1.6.5.2.5 | Meta | 1.25d? | 2025-08-25 | 2025-08-27 | 38 | 77.41d | 0.54d | Hamza [80%] | 8h |

| ID | WBS | Task | Duration | Start | Finish | Predecessors | Total slack | Free slack | Resources | Work |
| --- | --- | --- | --- | --- | --- | --- | --- | --- | --- | --- |
| 53 | 1.1.6.5.3 | **Bug fixing** | 7.48d? | 2025-08-19 | 2025-08-29 |  | 81.14d |  |  | 44h |
| 54 | 1.1.6.5.3.1 | TTD | 2.08d? | 2025-08-19 | 2025-08-21 | 48, 36 | 94.1d | 1.58d | Muzamal [60%] | 10h |
| 55 | 1.1.6.5.3.2 | LinkedIn | 3.33d? | 2025-08-22 | 2025-08-27 | 49 | 92.1d |  | Abid [30%] | 8h |
| 56 | 1.1.6.5.3.3 | Twitter | 1.67d? | 2025-08-25 | 2025-08-26 | 50, 54 | 92.52d |  | Muzamal [60%] | 8h |
| 57 | 1.1.6.5.3.4 | DV360 | 1.79d? | 2025-08-25 | 2025-08-27 | 51, 38 | 76.87d | 0d | Shoaib [70%] | 10h |
| 58 | 1.1.6.5.3.5 | Meta | 1.43d? | 2025-08-27 | 2025-08-29 | 52, 57 | 76.87d | 0d | Shoaib [70%] | 8h |
| 59 | 1.1.6.5.4 | QA Review and Management | 12.5d | 2025-08-04 | 2025-08-21 | 34 | 95.77d |  | Bilal [40%] | 40h |
| 60 | 1.1.6.6 | Review and Management | 200h | 2025-07-18 | 2025-08-27 | 24 | 91.68d |  | Abid [20%] | 40h |
| 61 | 1.1.7 | **Explore ifobjective field can pre-populatefrom media plan** | 11.56d? | 2025-07-07 | 2025-07-22 |  | 78.03d |  |  | 98h |
| 62 | 1.1.7.1 | Design document | 13.33h | 2025-07-07 | 2025-07-08 | 30 | 78.03d | 0d | Asim [60%] | 8h |
| 63 | 1.1.7.2 | Design document review and structural changes marking | 3.33h | 2025-07-08 | 2025-07-09 | 62, 175 | 80.79d | 0d | Arslan [60%]; Abid [60%]; Arif [60%]; Yasir [60%]; Bilal [60%]; Hamza [60%] | 12h |
| 64 | 1.1.7.3 | **Development** | 7.5d? | 2025-07-09 | 2025-07-18 |  | 82.04d | 0d |  | 50h |
| 65 | 1.1.7.3.1 | DotNet | 6.25d? | 2025-07-10 | 2025-07-18 | 183 | 80.79d | 0d | Arslan [80%] | 40h |
| 66 | 1.1.7.3.2 | DB | 2.08d? | 2025-07-09 | 2025-07-11 | 63 | 101.21d |  | Arif [60%] | 10h |
| 67 | 1.1.7.4 | **QA** | 7.73d? | 2025-07-10 | 2025-07-22 |  | 86.96d | 0.44d |  | 26h |
| 68 | 1.1.7.4.1 | Test case writing | 0.94d? | 2025-07-10 | 2025-07-11 | 63, 15 | 101.86d |  | Hamza [80%] | 6h |
| 69 | 1.1.7.4.2 | Testing | 1.25d? | 2025-07-18 | 2025-07-21 | 64, 31 | 95.79d |  | Hamza [80%] | 8h |
| 70 | 1.1.7.4.3 | Bug fixing | 1.56d? | 2025-07-21 | 2025-07-22 | 75 | 80.79d | 0d | Arslan [80%] | 10h |
| 71 | 1.1.7.4.4 | QA Review and Management | 0.62d? | 2025-07-18 | 2025-07-21 | 64 | 96.42d |  | Bilal [40%] | 2h |
| 72 | 1.1.7.5 | Review and Management | 1.25d? | 2025-07-07 | 2025-07-08 | 30 | 127.21d |  | Abid [20%] | 2h |
| 73 | 1.1.8 | **Assess ability to toggleadvantage campaign budget on/offvia API** | 18.67d? | 2025-07-08 | 2025-08-04 |  | 78.03d | 16.6d |  | 115h |
| 74 | 1.1.8.1 | Design document | 1.67d? | 2025-07-08 | 2025-07-10 | 62 | 78.03d | 0d | Asim [60%] | 8h |
| 75 | 1.1.8.2 | Design document review and architechtural changes marking | 0.42d? | 2025-07-18 | 2025-07-18 | 74, 65 | 80.79d | 0d | Arslan [60%]; Abid [60%]; Arif [60%]; Yasir [60%]; Bilal [60%]; Hamza [60%] | 12h |
| 76 | 1.1.8.3 | **Development** | 6.25d? | 2025-07-22 | 2025-07-30 |  | 80.79d | 0d |  | 50h |
| 77 | 1.1.8.3.1 | DotNet | 6.25d? | 2025-07-22 | 2025-07-30 | 70, 75 | 80.79d | 0d | Arslan [80%] | 40h |
| 78 | 1.1.8.3.2 | DB | 2.08d? | 2025-07-28 | 2025-07-30 | 75, 90 | 96.44d |  | Arif [60%] | 10h |

| ID | WBS | Task | Duration | Start | Finish | Predecessors | Total slack | Free slack | Resources | Work |
| --- | --- | --- | --- | --- | --- | --- | --- | --- | --- | --- |
| 79 | 1.1.8.4 | **QA** | 9.79d? | 2025-07-21 | 2025-08-01 |  | 89.02d |  |  | 25h |
| 80 | 1.1.8.4.1 | Test case writing | 0.94d? | 2025-07-21 | 2025-07-21 | 75 | 104.02d |  | Hamza [80%] | 6h |
| 81 | 1.1.8.4.2 | Testing | 0.94d? | 2025-07-30 | 2025-07-31 | 76 | 96.21d |  | Hamza [80%] | 6h |
| 82 | 1.1.8.4.3 | Bug fixing | 1.56d? | 2025-07-31 | 2025-08-01 | 99 | 80.79d | 0d | Arslan [80%] | 10h |
| 83 | 1.1.8.4.4 | QA Review and Management | 0.94d? | 2025-07-30 | 2025-07-31 | 76 | 96.21d |  | Bilal [40%] | 3h |
| 84 | 1.1.8.5 | Review and Management | 8.33d? | 2025-07-23 | 2025-08-04 | 74, 67 | 94.63d |  | Abid [30%] | 20h |
| 85 | 1.1.9 | **Enable multiple media plans under one Bing IO** | 31.93d? | 2025-07-14 | 2025-08-27 |  | 78.03d | 0d |  | 288h |
| 86 | 1.1.9.1 | Design document | 1.67d? | 2025-07-14 | 2025-07-15 | 98 | 78.03d | 0d | Asim [60%] | 8h |
| 87 | 1.1.9.2 | Design document review and architechtural changes marking | 0.5d? | 2025-07-15 | 2025-07-16 | 86 | 78.03d | 0d | Asim [50%]; Abid [50%]; Bilal [50%]; Arif [50%] | 8h |
| 88 | 1.1.9.3 | **Development** | 21.43d? | 2025-07-16 | 2025-08-15 |  | 78.03d | 0d |  | 160h |
| 89 | 1.1.9.3.1 | DotNet | 21.43d? | 2025-07-16 | 2025-08-15 | 87 | 78.03d | 0d | Asim [70%] | 120h |
| 90 | 1.1.9.3.2 | DB | 8.33d? | 2025-07-16 | 2025-07-28 | 87 | 91.13d | 0d | Arif [60%] | 40h |
| 91 | 1.1.9.4 | **QA** | 26.93d? | 2025-07-21 | 2025-08-27 |  | 78.03d |  |  | 92h |
| 92 | 1.1.9.4.1 | Test case writing | 1.88d? | 2025-07-21 | 2025-07-22 | 87, 75 | 103.08d |  | Hamza [80%] | 12h |
| 93 | 1.1.9.4.2 | Testing | 8.33d? | 2025-08-15 | 2025-08-27 | 88 | 78.03d |  | Bilal [60%] | 40h |
| 94 | 1.1.9.4.3 | Bug fixing | 4.17d? | 2025-08-15 | 2025-08-21 | 89 | 82.2d |  | Asim [60%] | 20h |
| 95 | 1.1.9.4.4 | Bug fixing DB | 6.25d | 2025-08-15 | 2025-08-25 | 88 | 80.11d |  | Arif [40%] | 20h |
| 96 | 1.1.9.5 | Review and Management | 12.5d? | 2025-07-15 | 2025-08-05 | 86 | 93.79d |  | Abid [20%] | 20h |
| 97 | 1.1.10 | **DENTSU _ Implementing a custom upload error log in Excel to provide detailed error tracking and improved troubleshooting.** | 30.83d? | 2025-07-10 | 2025-08-25 |  | 78.03d | 2.76d |  | 184h |
| 98 | 1.1.10.1 | Design document | 1.67d? | 2025-07-10 | 2025-07-11 | 74 | 78.03d | 0d | Asim [60%] | 8h |
| 99 | 1.1.10.2 | Design document review and architechtural changes marking | 0.42d? | 2025-07-30 | 2025-07-31 | 98, 77 | 80.79d | 0d | Arslan [60%]; Abid [60%]; Arif [60%]; Yasir [60%]; Bilal [60%]; Hamza [60%] | 12h |
| 100 | 1.1.10.3 | **Development** | 10.94d? | 2025-07-31 | 2025-08-18 |  | 80.79d | 0d |  | 88h |
| 101 | 1.1.10.3.1 | DotNet | 9.38d? | 2025-08-01 | 2025-08-18 | 82 | 80.79d |  | Arslan [80%] | 60h |
| 102 | 1.1.10.3.2 | DB (For 1 uploads) | 4.17d? | 2025-07-31 | 2025-08-06 | 99 | 87.56d |  | Yasir [60%] | 20h |
| 103 | 1.1.10.3.3 | DB Review and Management | 5d | 2025-07-31 | 2025-08-07 | 99 | 86.73d |  | Arif [20%] | 8h |

| ID | WBS | Task | Duration | Start | Finish | Predecessors | Total slack | Free slack | Constraint | Resources | Work |
| --- | --- | --- | --- | --- | --- | --- | --- | --- | --- | --- | --- |
| 104 | 1.1.10.4 | **QA** | 15.94d? | 2025-07-31 | 2025-08-25 |  | 80.79d |  |  |  | 56h |
| 105 | 1.1.10.4.1 | Test case writing | 2.5d? | 2025-07-31 | 2025-08-04 | 99 | 94.23d |  |  | Hamza [80%] | 16h |
| 106 | 1.1.10.4.2 | Testing | 2.5d? | 2025-08-18 | 2025-08-20 | 100 | 80.79d | 0d |  | Hamza [80%] | 16h |
| 107 | 1.1.10.4.3 | Bug fixing | 2.5d? | 2025-08-20 | 2025-08-25 | 106 | 80.79d |  |  | Arslan [80%] | 16h |
| 108 | 1.1.10.4.4 | QA Review and Management | 2.5d? | 2025-08-18 | 2025-08-20 | 100 | 83.29d |  |  | Bilal [40%] | 8h |
| 109 | 1.1.10.5 | Review and Management | 12.5d? | 2025-08-01 | 2025-08-21 | 98, 82 | 82.67d |  |  | Abid [20%] | 20h |
| 110 | 1.1.11 | **MC rates for PBG** | 22.67d? | 2025-06-17 | 2025-07-17 |  | 109.83d |  |  |  | 69h |
| 111 | 1.1.11.1 | Design document | 1d? | 2025-06-17 | 2025-06-17 |  | 141.46d |  |  |  |  |
| 112 | 1.1.11.2 | Design document review and structural changes marking | 0.25d? | 2025-06-17 | 2025-06-17 |  | 142.21d |  |  |  |  |
| 113 | 1.1.11.3 | **Development** | 5.21d? | 2025-07-07 | 2025-07-14 |  | 95.71d | 0d | start no earlier than 2025-07-07 |  | 45h |
| 114 | 1.1.11.3.1 | DotNet | 5d? | 2025-07-07 | 2025-07-14 |  | 95.92d |  |  | Abid [50%] | 20h |
| 115 | 1.1.11.3.2 | DB | 5d? | 2025-07-07 | 2025-07-14 |  | 95.71d | 0d |  | Arif [60%] | 24h |
| 116 | 1.1.11.3.3 | DB Packaging | 0.21d? | 2025-07-14 | 2025-07-14 | 115 | 95.71d |  |  | Arif [60%] | 1h |
| 117 | 1.1.11.4 | **QA** | 22.67d? | 2025-06-17 | 2025-07-17 |  | 115.04d |  |  |  | 24h |
| 118 | 1.1.11.4.1 | Test case writing | 1d? | 2025-06-17 | 2025-06-17 |  | 141.46d |  |  |  |  |
| 119 | 1.1.11.4.2 | Testing | 3.33d? | 2025-07-14 | 2025-07-17 | 113 | 119.79d |  |  | Bilal [60%] | 16h |
| 120 | 1.1.11.4.3 | Bug fixing | 2d? | 2025-07-14 | 2025-07-16 | 113 | 95.71d | 1.61d |  | Abid [50%] | 8h |
| 121 | 1.1.11.5 | Review and Management | 1d? | 2025-06-17 | 2025-06-17 |  | 141.46d |  |  |  |  |
| 123 | 1.1.12 | **QA 2nd Iteration / Integration Testing** | 8.3d? | 2025-08-27 | 2025-09-09 | 97, 85, 73 | 76.87d | 0d |  |  | 240h |
| 124 | 1.1.12.1 | Testing | 7.14d? | 2025-08-27 | 2025-09-08 |  | 78.03d |  |  | Bilal [70%] | 40h |
| 125 | 1.1.12.2 | Testing | 6.25d? | 2025-08-27 | 2025-09-05 |  | 78.92d |  |  | Hamza [80%] | 40h |
| 126 | 1.1.12.3 | Bug Fixing | 7.14d? | 2025-08-27 | 2025-09-08 |  | 78.03d |  |  | Arif [70%] | 40h |
| 127 | 1.1.12.4 | Bug Fixing | 7.14d? | 2025-08-27 | 2025-09-08 |  | 78.03d |  |  | Arslan [70%] | 40h |
| 128 | 1.1.12.5 | Bug Fixing | 7.14d? | 2025-08-27 | 2025-09-08 |  | 78.03d |  |  | Muzamal [70%] | 40h |
| 129 | 1.1.12.6 | Bug Fixing | 7.14d? | 2025-08-29 | 2025-09-09 | 58 | 76.87d |  |  | Shoaib [70%] | 40h |

| ID | WBS | Task | Duration | Start | Finish | Predecessors | Total slack | Free slack | Constraint | Resources | Work |
| --- | --- | --- | --- | --- | --- | --- | --- | --- | --- | --- | --- |
| 130 | 1.1.13 | **Release environments upgrade** | 5.36d? | 2025-09-09 | 2025-09-16 | 123 | 76.87d | 0d |  |  | 90h |
| 131 | 1.1.13.1 | JG, TSY | 1.79d? | 2025-09-09 | 2025-09-11 |  | 76.87d | 0d |  | Bilal [70%]; Hamza [80%]; Ayesha [70%] | 30h |
| 132 | 1.1.13.2 | TA,Whirlpool, HS, Pursuit | 1.79d? | 2025-09-11 | 2025-09-12 | 131 | 76.87d | 0d |  | Bilal [70%]; Hamza [80%]; Ayesha [70%] | 30h |
| 133 | 1.1.13.3 | HY, WF, Dentsu Creative | 1.79d | 2025-09-12 | 2025-09-16 | 132 | 76.87d |  |  | Bilal [70%]; Hamza [80%]; Ayesha [70%] | 30h |
| 134 | 1.1.14 | Ready for UAT | 1d? | 2025-09-16 | 2025-09-17 | 130 | 76.87d |  |  |  |  |
| 136 | 1.2 | **APWorks** | 55.81d? | 2025-06-17 | 2025-09-03 |  | 77.99d |  |  |  | 1623.7h |
| 137 | 1.2.1 | Planning | 7.14d | 2025-06-17 | 2025-06-26 |  | 135.32d |  |  | Abid [70%] | 40h |
| 138 | 1.2.2 | Team Brainstorming | 0.62d | 2025-06-17 | 2025-06-17 |  | 91.21d | 1.04d |  | Asad [80%]; Yasir [80%]; Arslan [80%]; Ali [80%]; Bilal [80%] | 20h |
| 139 | 1.2.3 | **Enabling user-specific report views and filter preferences to be retained during the session, enhancing usability and efficiency** | 20.96d? | 2025-06-17 | 2025-07-15 |  | 78.03d |  |  |  | 168.2h |
| 140 | 1.2.3.1 | Design document | 1.67d? | 2025-06-17 | 2025-06-18 |  | 78.03d | 0d |  | Asim [60%] | 8h |
| 141 | 1.2.3.2 | Design document review and structural changes marking | 0.75d? | 2025-06-18 | 2025-06-19 | 140, 138 | 90.17d | 0d |  | Ali [80%]; Abid [50%] | 6h |
| 142 | 1.2.3.3 | **Development** | 14.79d? | 2025-06-17 | 2025-07-07 |  | 92.59d | 0d |  |  | 79.2h |
| 143 | 1.2.3.3.1 | DotNet | 9.38d? | 2025-06-19 | 2025-07-02 | 141 | 90.17d | 0d |  | Ali [80%] | 60h |
| 144 | 1.2.3.3.2 | DotNet Changes - Retain sorting orders | 24h | 2025-07-02 | 2025-07-07 | 143 | 90.17d | 0d |  | Ali [80%] | 19.2h |
| 145 | 1.2.3.3.3 | DB | 1d? | 2025-06-17 | 2025-06-17 |  | 133.96d |  |  |  |  |
| 146 | 1.2.3.4 | Deployment | 0.31d | 2025-07-07 | 2025-07-08 | 142 | 120.17d | 0.85d |  | Abid [40%] | 1h |
| 147 | 1.2.3.5 | **QA** | 15.58d? | 2025-06-23 | 2025-07-14 |  | 121.71d |  |  |  | 42h |
| 148 | 1.2.3.5.1 | Test case writing | 1.88d? | 2025-06-23 | 2025-06-24 | 141 | 121.71d | 0d | start no earlier than 2025-06-23 | Ayesha [80%] | 12h |
| 149 | 1.2.3.5.2 | Testing | 3.75d? | 2025-07-08 | 2025-07-14 | 146, 280 | 119.31d | 0d |  | Ayesha [80%] | 24h |
| 150 | 1.2.3.5.3 | QA Review and management | 1.88d | 2025-07-10 | 2025-07-11 | 152 | 123.53d |  |  | Bilal [40%] | 6h |
| 151 | 1.2.3.6 | **Bug fixing** | 5.78d? | 2025-07-08 | 2025-07-15 |  | 90.17d |  |  |  | 20h |
| 152 | 1.2.3.6.1 | Bug fixing | 1.88d? | 2025-07-08 | 2025-07-10 | 188 | 90.17d | 0d |  | Ali [80%] | 12h |
| 153 | 1.2.3.6.2 | Bug Verification | 1.25d? | 2025-07-14 | 2025-07-15 | 152, 149 | 119.31d | 5.67d |  | Ayesha [80%] | 8h |
| 154 | 1.2.3.7 | Review and Management | 7.5d? | 2025-06-19 | 2025-06-30 | 141 | 132.54d |  |  | Abid [20%] | 12h |

| ID | WBS | Task | Duration | Start | Finish | Predecessors | Total slack | Free slack | Constraint | Resources | Work |
| --- | --- | --- | --- | --- | --- | --- | --- | --- | --- | --- | --- |
| 155 | 1.2.4 | **Net Amount Total: We need an additional calculated field in the header that sums the Invoice Net Amount. Currently, if they want to view the Invoice Net Amount total, they must add the line amounts outside of the system.** | 10.92d? | 2025-06-17 | 2025-07-01 |  | 79.7d |  |  |  | 53h |
| 156 | 1.2.4.1 | Design document | 1d? | 2025-06-18 | 2025-06-19 | 140 | 78.03d | 0d |  | Asim [50%] | 4h |
| 157 | 1.2.4.2 | Design document review and structural changes marking | 0.19d? | 2025-06-24 | 2025-06-24 | 156 | 82.94d | 0d | start no earlier than 2025-06-24 | Abid [50%]; Arslan [80%] | 2h |
| 158 | 1.2.4.3 | **Development** | 10.07d? | 2025-06-17 | 2025-07-01 |  | 88.26d |  |  |  | 30h |
| 159 | 1.2.4.3.1 | DotNet (invoice UI, Preview, manual entry screen) | 2.5d? | 2025-06-24 | 2025-06-27 | 157 | 81.94d | 0d |  | Arslan [80%] | 16h |
| 160 | 1.2.4.3.2 | Vendor Mapping UI / Manage Invoice list / Vendor Invoice Report | 1.25d? | 2025-06-27 | 2025-07-01 | 159 | 81.94d | 0d |  | Arslan [80%] | 8h |
| 161 | 1.2.4.3.3 | DB | 1d? | 2025-06-17 | 2025-06-17 |  | 141.46d |  |  |  | 6h |
| 162 | 1.2.4.4 | Deployment | 0.31d? | 2025-06-27 | 2025-06-30 | 159 | 132.08d | 0d |  | Abid [40%] | 1h |
| 163 | 1.2.4.5 | **QA** | 4.38d? | 2025-06-25 | 2025-07-01 |  | 132.08d |  |  |  | 11h |
| 164 | 1.2.4.5.1 | Test case writing | 0.62d? | 2025-06-25 | 2025-06-25 | 156, 148 | 135.21d | 0d |  | Kashif [80%] | 4h |
| 165 | 1.2.4.5.2 | Testing | 0.94d? | 2025-06-30 | 2025-07-01 | 162 | 132.08d | 0d |  | Kashif [80%] | 6h |
| 166 | 1.2.4.5.3 | QA Review and management | 0.31d? | 2025-07-01 | 2025-07-01 | 165 | 132.08d |  |  | Bilal [40%] | 1h |
| 167 | 1.2.4.6 | **Bug Fixing** | 0.47d? | 2025-07-01 | 2025-07-01 |  | 81.94d |  |  |  | 3h |
| 168 | 1.2.4.6.1 | Bug fixing | 0.31d? | 2025-07-01 | 2025-07-01 | 173 | 81.94d | 0d |  | Arslan [80%] | 2h |
| 169 | 1.2.4.6.2 | Bug Verification | 0.16d? | 2025-07-01 | 2025-07-01 | 168 | 131.54d |  |  | Kashif [80%] | 1h |
| 170 | 1.2.4.7 | Review and Management | 1.25d? | 2025-06-24 | 2025-06-25 | 157 | 135.89d |  |  | Abid [20%] | 2h |
| 171 | 1.2.5 | **Invoice comment log: They would like a way to add comments to an invoice for record-keeping, in case auditors inquire about invoice actions. (Routing history button)** | 17.96d? | 2025-06-17 | 2025-07-10 |  | 80.7d |  |  |  | 72h |
| 172 | 1.2.5.1 | Design document | 1.5d? | 2025-06-19 | 2025-06-23 | 156 | 78.03d | 0d |  | Asim [50%] | 6h |
| 173 | 1.2.5.2 | Design document review and structural changes marking | 0.38d? | 2025-07-01 | 2025-07-01 | 172, 160 | 81.94d | 0d |  | Abid [50%]; Arslan [80%] | 4h |
| 174 | 1.2.5.3 | **Development** | 14.51d? | 2025-06-17 | 2025-07-07 |  | 92.71d | 0d |  |  | 32h |
| 175 | 1.2.5.3.1 | DotNet | 3.75d? | 2025-07-01 | 2025-07-07 | 168 | 81.94d | 1.15d |  | Arslan [80%] | 24h |
| 176 | 1.2.5.3.2 | DB | 1d? | 2025-06-17 | 2025-06-17 |  | 139.58d |  |  |  | 8h |
| 177 | 1.2.5.4 | Deployment | 0.62d? | 2025-07-07 | 2025-07-08 | 174 | 126.07d | 0d |  | Abid [20%] | 2h |
| 178 | 1.2.5.5 | **QA** | 9.76d? | 2025-06-25 | 2025-07-09 |  | 126.07d |  |  |  | 14h |
| 179 | 1.2.5.5.1 | Test case writing | 0.62d? | 2025-06-25 | 2025-06-26 | 172, 164 | 135.21d |  |  | Kashif [80%] | 4h |
| 180 | 1.2.5.5.2 | Testing | 1.25d? | 2025-07-08 | 2025-07-09 | 177 | 126.07d |  |  | Kashif [80%] | 8h |
| 181 | 1.2.5.5.3 | QA Review and management | 0.62d? | 2025-06-25 | 2025-06-26 | 172, 164 | 135.21d |  |  | Bilal [40%] | 2h |

| ID | WBS | Task | Type | Duration | Start | Finish | Predecessors | Total slack | Free slack | Resources | Work |
| --- | --- | --- | --- | --- | --- | --- | --- | --- | --- | --- | --- |
| 182 | 1.2.5.6 | **Bug fixing** |  | 1.88d? | 2025-07-09 | 2025-07-10 |  | 80.79d |  |  | 12h |
| 183 | 1.2.5.6.1 | Bug fixing |  | 1.25d? | 2025-07-09 | 2025-07-10 | 175, 63 | 80.79d | 0d | Arslan [80%] | 8h |
| 184 | 1.2.5.6.2 | Bug Verification |  | 0.62d? | 2025-07-10 | 2025-07-10 | 183 | 124.5d |  | Kashif [80%] | 4h |
| 185 | 1.2.5.7 | Review and Management |  | 1.25d? | 2025-07-01 | 2025-07-02 | 173 | 130.76d |  | Abid [20%] | 2h |
| 186 | 1.2.6 | **In Discrepant bucket, A way for Users to flag an invocie so they can easy find it later** |  | 28.81d? | 2025-06-17 | 2025-07-25 |  | 82.2d |  |  | 126h |
| 187 | 1.2.6.1 | Design document |  | 2d? | 2025-06-23 | 2025-06-25 | 172 | 78.03d | 0d | Asim [50%] | 8h |
| 188 | 1.2.6.2 | Design document review and structural changes marking |  | 0.38d? | 2025-07-07 | 2025-07-08 | 144 | 90.17d | 0d | Ali [80%]; Abid [50%] | 4h |
| 189 | 1.2.6.3 | **Development** |  | 7.81d? | 2025-07-10 | 2025-07-21 |  | 90.17d | 0d |  | 70h |
| 190 | 1.2.6.3.1 | DotNet |  | 7.81d? | 2025-07-10 | 2025-07-21 | 152 | 90.17d | 0d | Ali [80%] | 50h |
| 191 | 1.2.6.3.2 | DB |  | 3.12d? | 2025-07-10 | 2025-07-15 | 183 | 119.19d |  | Yasir [80%] | 20h |
| 192 | 1.2.6.4 | Deployment |  | 0.62d? | 2025-07-23 | 2025-07-23 | 189 | 113.65d | 0d | Abid [20%] | 1h |
| 193 | 1.2.6.5 | DB Packaging |  | 0.62d? | 2025-07-21 | 2025-07-22 | 189 | 116.97d |  | Arif [40%] | 2h |
| 194 | 1.2.6.6 | **QA** |  | 22.02d? | 2025-06-25 | 2025-07-25 |  | 114.27d |  |  | 17h |
| 195 | 1.2.6.6.1 | Test case writing |  | 0.62d? | 2025-06-25 | 2025-06-25 | 187, 148 | 121.54d | 0d | Ayesha [80%] | 4h |
| 196 | 1.2.6.6.2 | Testing |  | 1.56d? | 2025-07-23 | 2025-07-25 | 192, 153 | 113.65d | 0d | Ayesha [80%] | 10h |
| 197 | 1.2.6.6.3 | QA Review and management |  | 0.94d? | 2025-07-23 | 2025-07-24 | 192 | 114.9d |  | Bilal [40%] | 3h |
| 198 | 1.2.6.7 | **Bug fixing** |  | 3.64d? | 2025-07-22 | 2025-07-25 |  | 90.17d |  |  | 14h |
| 199 | 1.2.6.7.1 | Bug fixing |  | 1.56d? | 2025-07-22 | 2025-07-23 | 206 | 90.17d | 0d | Ali [80%] | 10h |
| 200 | 1.2.6.7.2 | Bug Verification |  | 0.62d? | 2025-07-25 | 2025-07-25 | 199, 196 | 113.65d |  | Ayesha [80%] | 4h |
| 201 | 1.2.6.8 | Review and Management |  | 6.25d? | 2025-06-17 | 2025-06-25 |  | 136.21d |  | Abid [20%] | 10h |
| 202 | 1.2.7 | **Favorite button does not work ( Fix or hide) - Hide** |  | 27.36d? | 2025-06-17 | 2025-07-24 |  | 84.2d |  |  | 6.5h |
| 203 | 1.2.7.1 | Design document | milestone | 0d? | 2025-06-25 | 2025-06-25 | 187 | 78.03d | 0d | Asim [50%] |  |
| 204 | 1.2.7.2 | Design document review and structural changes marking | milestone | 0d? | 2025-07-23 | 2025-07-23 | 199 | 115.09d | 0d | Ali [80%]; Abid [50%] |  |
| 205 | 1.2.7.3 | **Development** |  | 25.18d? | 2025-06-17 | 2025-07-22 |  | 90.95d | 0.82d |  | 2h |
| 206 | 1.2.7.3.1 | DotNet |  | 0.31d? | 2025-07-21 | 2025-07-22 | 190 | 90.17d | 0d | Ali [80%] | 2h |
| 207 | 1.2.7.3.2 | DB |  | 1d? | 2025-06-17 | 2025-06-17 |  | 115.13d |  |  |  |
| 208 | 1.2.7.4 | Deployment |  | 0.62d? | 2025-07-23 | 2025-07-23 | 205 | 90.13d | 0d | Abid [20%] | 1h |

| ID | WBS | Task | Type | Duration | Start | Finish | Predecessors | Total slack | Free slack | Resources | Work |
| --- | --- | --- | --- | --- | --- | --- | --- | --- | --- | --- | --- |
| 209 | 1.2.7.5 | **QA** |  | 20.61d? | 2025-06-25 | 2025-07-23 |  | 110.58d |  |  | 1.5h |
| 210 | 1.2.7.5.1 | Test case writing | milestone | 0d? | 2025-06-25 | 2025-06-25 | 203 | 136.29d |  | Kashif [80%] |  |
| 211 | 1.2.7.5.2 | Testing |  | 0.16d? | 2025-07-23 | 2025-07-23 | 208 | 90.13d | 0d | Kashif [80%] | 1h |
| 212 | 1.2.7.5.3 | QA Review and management |  | 0.16d? | 2025-07-23 | 2025-07-23 | 208 | 115.68d |  | Bilal [40%] | 0.5h |
| 213 | 1.2.7.6 | Bug fixing |  | 0.16d? | 2025-07-23 | 2025-07-23 | 199, 211 | 90.13d | 0d | Ali [80%] | 1h |
| 214 | 1.2.7.7 | Review and Management |  | 0.62d? | 2025-07-23 | 2025-07-24 | 204 | 115.09d |  | Abid [20%] | 1h |
| 215 | 1.2.8 | **Format all amounts to be trwo decimals (Appearing in filters)** |  | 31.5d? | 2025-06-17 | 2025-07-30 |  | 84.2d |  |  | 42h |
| 216 | 1.2.8.1 | Design document |  | 0.5d? | 2025-06-25 | 2025-06-25 | 203 | 78.03d | 0d | Asim [50%] | 2h |
| 217 | 1.2.8.2 | Design document review and structural changes marking |  | 0.5d? | 2025-07-23 | 2025-07-24 | 213, 216 | 90.13d | 0d | Ali [80%]; Abid [50%] | 4h |
| 218 | 1.2.8.3 | **Development** |  | 29.94d? | 2025-06-17 | 2025-07-28 |  | 110.96d | 0d |  | 16h |
| 219 | 1.2.8.3.1 | DotNet |  | 2.5d? | 2025-07-24 | 2025-07-28 | 217 | 90.13d | 0d | Ali [80%] | 16h |
| 220 | 1.2.8.3.2 | DB |  | 1d? | 2025-06-17 | 2025-06-17 |  | 139.9d |  |  |  |
| 221 | 1.2.8.4 | Deployment |  | 0.62d? | 2025-07-28 | 2025-07-29 | 218 | 110.96d | 0d | Abid [20%] | 1h |
| 222 | 1.2.8.5 | **QA** |  | 24.71d? | 2025-06-25 | 2025-07-30 |  | 110.96d |  |  | 12h |
| 223 | 1.2.8.5.1 | Test case writing |  | 0.62d? | 2025-06-25 | 2025-06-26 | 216, 195 | 121.54d | 0d | Ayesha [80%] | 4h |
| 224 | 1.2.8.5.2 | Testing |  | 0.94d? | 2025-07-29 | 2025-07-30 | 221 | 110.96d |  | Ayesha [80%] | 6h |
| 225 | 1.2.8.5.3 | QA Review and management |  | 0.62d? | 2025-07-29 | 2025-07-30 | 221 | 111.27d |  | Bilal [40%] | 2h |
| 226 | 1.2.8.6 | **Bug fixing** |  | 0.47d? | 2025-07-29 | 2025-07-30 |  | 111.43d |  |  | 3h |
| 227 | 1.2.8.6.1 | Bug fixing |  | 0.31d? | 2025-07-29 | 2025-07-29 | 234 | 111.43d | 0d | Ali [80%] | 2h |
| 228 | 1.2.8.6.2 | Bug Verification |  | 0.16d? | 2025-07-29 | 2025-07-30 | 227 | 111.43d |  | Ayesha [80%] | 1h |
| 229 | 1.2.8.7 | Review and Management |  | 2.5d? | 2025-07-24 | 2025-07-28 | 217 | 112.52d |  | Abid [20%] | 4h |
| 230 | 1.2.9 | **If we add a new user and start with the sequence on screen, we get an error. Starting with "User Group" and then filling in rest of details, i.e. resource id, name, email and login, we get "null resource ID error. If we fill in all details and assign user** |  | 31.5d? | 2025-06-17 | 2025-07-30 |  | 84.7d |  |  | 10h |
| 231 | 1.2.9.1 | Design document | milestone | 0d? | 2025-06-25 | 2025-06-25 | 216 | 78.03d | 0d | Asim [50%] |  |
| 232 | 1.2.9.2 | Design document review and structural changes marking | milestone | 0d? | 2025-07-28 | 2025-07-28 | 219 | 90.13d | 0d | Ali [80%]; Abid [50%] |  |

| ID | WBS | Task | Type | Duration | Start | Finish | Predecessors | Total slack | Free slack | Resources | Work |
| --- | --- | --- | --- | --- | --- | --- | --- | --- | --- | --- | --- |
| 233 | 1.2.9.3 | **Development** |  | 30.56d? | 2025-06-17 | 2025-07-29 |  | 90.13d | 0d |  | 4h |
| 234 | 1.2.9.3.1 | DotNet |  | 0.62d? | 2025-07-28 | 2025-07-29 | 232 | 90.13d | 0d | Ali [80%] | 4h |
| 235 | 1.2.9.3.2 | DB |  | 1d? | 2025-06-17 | 2025-06-17 |  | 119.69d |  |  |  |
| 236 | 1.2.9.4 | Deployment |  | 0.62d? | 2025-07-29 | 2025-07-30 | 233 | 90.13d | 0d | Abid [20%] | 1h |
| 237 | 1.2.9.5 | **QA** |  | 24.08d? | 2025-06-26 | 2025-07-30 |  | 110.96d |  |  | 3h |
| 238 | 1.2.9.5.1 | Test case writing | milestone | 0d? | 2025-06-26 | 2025-06-26 | 231, 223 | 121.54d | 2.29d | Ayesha [80%] |  |
| 239 | 1.2.9.5.2 | Testing |  | 0.31d? | 2025-07-30 | 2025-07-30 | 236 | 90.13d | 0d | Ayesha [80%] | 2h |
| 240 | 1.2.9.5.3 | Bug fixing | milestone | 0d? | 2025-07-30 | 2025-07-30 | 239 | 90.13d | 0d | Ali [80%] |  |
| 241 | 1.2.9.5.4 | QA Review and management |  | 0.31d? | 2025-07-30 | 2025-07-30 | 236 | 110.96d |  | Bilal [40%] | 1h |
| 242 | 1.2.9.6 | Review and Management |  | 1.25d? | 2025-07-28 | 2025-07-30 | 232 | 111.27d |  | Abid [20%] | 2h |
| 243 | 1.2.10 | **Manually mark invoice Archieved** |  | 38.41d? | 2025-06-25 | 2025-08-20 |  | 78.03d | 3.48d |  | 191h |
| 244 | 1.2.10.1 | Design document |  | 2d? | 2025-06-25 | 2025-06-27 | 231 | 78.03d | 0d | Asim [50%] | 8h |
| 245 | 1.2.10.2 | Design document review and structural changes marking |  | 0.77d? | 2025-07-30 | 2025-07-31 | 244, 240 | 90.13d | 0d | Ali [80%]; Abid [50%] | 8h |
| 246 | 1.2.10.3 | **Development** |  | 10d? | 2025-07-31 | 2025-08-15 |  | 90.13d |  |  | 96h |
| 247 | 1.2.10.3.1 | DotNet- Mark the screen archive/unarchive and View in disable mode |  | 5d? | 2025-07-31 | 2025-08-07 | 245 | 90.13d | 0d | Ali [80%] | 32h |
| 248 | 1.2.10.3.2 | New Screen Development |  | 5d? | 2025-08-07 | 2025-08-15 | 247 | 90.13d | 0d | Ali [80%] | 32h |
| 249 | 1.2.10.3.3 | DB |  | 5.71d? | 2025-07-31 | 2025-08-07 | 245 | 97.22d |  | Yasir [70%] | 32h |
| 250 | 1.2.10.4 | Deployment |  | 1d? | 2025-08-07 | 2025-08-08 | 247 | 92.25d | 0d | Abid [20%] | 1h |
| 251 | 1.2.10.5 | **QA** |  | 34.29d? | 2025-06-27 | 2025-08-15 |  | 92.25d |  |  | 46h |
| 252 | 1.2.10.5.1 | Test case writing |  | 1.88d? | 2025-06-27 | 2025-07-01 | 244 | 124.67d |  | Kashif [80%] | 12h |
| 253 | 1.2.10.5.2 | Testing |  | 4.69d? | 2025-08-08 | 2025-08-15 | 250 | 92.25d |  | Kashif [80%] | 30h |
| 254 | 1.2.10.5.3 | QA Review and management |  | 1.62d? | 2025-08-08 | 2025-08-11 | 250 | 95.31d |  | Bilal [40%] | 4h |
| 255 | 1.2.10.6 | **Bug fixing** |  | 6.81d? | 2025-08-08 | 2025-08-20 |  | 90.13d |  |  | 24h |
| 256 | 1.2.10.6.1 | Bug fixing |  | 1.56d? | 2025-08-15 | 2025-08-18 | 250, 248 | 90.13d | 0d | Ali [80%] | 10h |
| 257 | 1.2.10.6.2 | DB Bug fixing |  | 1.5d | 2025-08-08 | 2025-08-11 | 250 | 95.44d |  | Yasir [50%] | 6h |
| 258 | 1.2.10.6.3 | Bug Verification |  | 1.25d? | 2025-08-18 | 2025-08-20 | 256 | 90.13d |  | Kashif [80%] | 8h |
| 259 | 1.2.10.7 | Review and Management |  | 5d? | 2025-07-31 | 2025-08-07 | 245 | 97.94d |  | Abid [20%] | 8h |

| ID | WBS | Task | Type | Duration | Start | Finish | Predecessors | Total slack | Free slack | Constraint | Resources | Work | Text1 |
| --- | --- | --- | --- | --- | --- | --- | --- | --- | --- | --- | --- | --- | --- |
| 260 | 1.2.11 | **eInvoice pull** |  | 48.56d? | 2025-06-17 | 2025-08-25 |  | 77.99d | 0d |  |  | 715h | Waiting for design document |
| 261 | 1.2.11.1 | **eInvoices (iPC)(BingAd, DV360,GCM,GoogleAd, Twitter)** |  | 30.3d? | 2025-06-17 | 2025-07-29 |  | 77.99d |  |  |  | 199h |  |
| 262 | 1.2.11.1.1 | KickOff meeting with Tao |  | 0.5d? | 2025-06-18 | 2025-06-18 |  | 76.87d | 0d | start no earlier than 2025-06-18 | Tao [25%]; Abid [25%]; Shoaib [25%] | 3h |  |
| 263 | 1.2.11.1.2 | API Review and Postman calls configurations |  | 7.5d | 2025-06-18 | 2025-06-30 | 262 | 76.87d | 0d |  | Tao [50%]; Shoaib [60%] | 60h |  |
| 264 | 1.2.11.1.3 | Design document review and structural changes marking |  | 1d? | 2025-06-30 | 2025-07-01 | 263 | 76.87d | 0d |  | Shoaib [50%]; Abid [50%] | 8h |  |
| 265 | 1.2.11.1.4 | **Development** |  | 20.18d? | 2025-07-01 | 2025-07-29 |  | 76.87d |  |  |  | 128h |  |
| 266 | 1.2.11.1.4.1 | DotNet - iPC Changes(New Methods for 4 Platforms + Expected change for 1 Platform) + Packaging and Deployment |  | 18.75d? | 2025-07-01 | 2025-07-25 | 264 | 76.87d | 0d |  | Shoaib [80%] | 120h |  |
| 267 | 1.2.11.1.4.2 | DB |  | 1.43d? | 2025-07-25 | 2025-07-29 | 266 | 104.9d |  |  | Yasir [70%] | 8h |  |
| 268 | 1.2.11.1.5 | **QA** |  | 1d? | 2025-06-17 | 2025-06-17 |  | 134.21d |  |  |  |  |  |
| 269 | 1.2.11.1.5.1 | Bug fixing |  | 1d? | 2025-06-17 | 2025-06-17 |  | 134.21d |  |  |  |  |  |
| 270 | 1.2.11.1.6 | Review and Management |  | 1d? | 2025-06-17 | 2025-06-17 |  | 134.21d |  |  |  |  |  |
| 271 | 1.2.11.2 | **eInvoices (Apworks)** |  | 46.44d? | 2025-06-19 | 2025-08-25 |  | 86.65d |  |  |  | 468h |  |
| 272 | 1.2.11.2.1 | Design document |  | 6.25d? | 2025-06-19 | 2025-06-27 |  | 87.35d | 0d | start no earlier than 2025-06-19 | Tao [40%] | 20h |  |
| 273 | 1.2.11.2.2 | Design document review and structural changes marking |  | 1.04d? | 2025-06-27 | 2025-06-30 | 272, 244 | 87.06d | 0d |  | Abid [40%]; Asim [40%]; Tao [40%] | 10h |  |
| 274 | 1.2.11.2.3 | **Development** |  | 31.44d? | 2025-06-27 | 2025-08-11 |  | 86.65d | 0d |  |  | 250h |  |
| 275 | 1.2.11.2.3.1 | Dot Net |  | 29.69d? | 2025-07-01 | 2025-08-11 | 273, 286 | 86.65d |  |  | Asad [80%] | 190h |  |
| 276 | 1.2.11.2.3.2 | DB |  | 9.38d? | 2025-06-27 | 2025-07-10 | 272 | 108.71d |  |  | Yasir [80%] | 60h |  |
| 277 | 1.2.11.2.4 | Deployment |  | 2.5d? | 2025-08-11 | 2025-08-15 | 274 | 86.65d | 0d |  | Abid [20%] | 4h |  |
| 278 | 1.2.11.2.5 | DB Packaging |  | 1.25d? | 2025-08-11 | 2025-08-13 | 274 | 94.15d |  |  | Yasir [80%] | 8h |  |
| 279 | 1.2.11.2.6 | **QA** |  | 38.85d? | 2025-06-30 | 2025-08-25 |  | 86.65d |  |  |  | 136h |  |
| 280 | 1.2.11.2.6.1 | Test case writing |  | 6.25d? | 2025-06-30 | 2025-07-08 | 273, 238 | 119.25d | 0d |  | Ayesha [80%] | 40h |  |
| 281 | 1.2.11.2.6.2 | Testing |  | 6.25d? | 2025-08-15 | 2025-08-25 | 277 | 86.65d |  |  | Ayesha [80%] | 40h |  |
| 282 | 1.2.11.2.6.3 | Bug fixing |  | 6.25d? | 2025-08-15 | 2025-08-25 | 277 | 86.65d |  |  | Asad [80%] | 40h |  |
| 283 | 1.2.11.2.6.4 | DB Bug fixing |  | 2.5d? | 2025-08-15 | 2025-08-19 | 277 | 90.4d |  |  | Yasir [80%] | 16h |  |
| 284 | 1.2.11.2.7 | Review and Management |  | 25d? | 2025-06-27 | 2025-08-05 | 272 | 99.83d |  |  | Abid [20%] | 40h |  |
| 285 | 1.2.11.3 | iPC - SelfServices | manual | 1d | 2025-06-17 | 2025-06-17 |  |  |  |  |  |  |  |

| ID | WBS | Task | Type | Duration | Start | Finish | Predecessors | Total slack | Free slack | Constraint | Resources | Work |
| --- | --- | --- | --- | --- | --- | --- | --- | --- | --- | --- | --- | --- |
| 286 | 1.2.11.4 | **Upgrade ApWorks application to dotnet Core 8.0 from 7.0** |  | 5d? | 2025-06-24 | 2025-07-01 |  | 86.65d | 0d | start no earlier than 2025-06-24 |  | 32h |
| 287 | 1.2.11.4.1 | Lambda Upgrade |  | 1.25d? | 2025-06-24 | 2025-06-25 |  | 86.65d | 0d |  | Asad [80%] | 8h |
| 288 | 1.2.11.4.2 | Application upgrade (need to resolve aws container issue with core 9.0) |  | 2.5d? | 2025-06-25 | 2025-06-27 | 287 | 86.65d | 0d |  | Asad [80%] | 16h |
| 289 | 1.2.11.4.3 | Azure service upgrade |  | 1.25d? | 2025-06-27 | 2025-07-01 | 288 | 86.65d |  |  | Asad [80%] | 8h |
| 290 | 1.2.11.5 | Separate Integration layer from main application(80 % work completed, only container setup things need to be verified) | manual | 1d? | 2025-06-17 | 2025-06-17 |  |  |  |  |  | 16h |
| 291 | 1.2.12 | Sync optimzation | manual | 1d? | 2025-06-17 | 2025-06-17 |  |  |  |  |  |  |
| 293 | 1.2.13 | **2nd integration / Integration Test** |  | 6.25d? | 2025-08-25 | 2025-09-02 | 260, 243 | 86.65d | 0d |  |  | 180h |
| 294 | 1.2.13.1 | Testing |  | 6.25d | 2025-08-25 | 2025-09-02 |  | 86.65d |  |  | Bilal [40%] | 20h |
| 295 | 1.2.13.2 | Testing |  | 6.25d | 2025-08-25 | 2025-09-02 |  | 86.65d |  |  | Kashif [80%] | 40h |
| 296 | 1.2.13.3 | Testing |  | 6.25d | 2025-08-25 | 2025-09-02 |  | 86.65d |  |  | Kashif [80%] | 40h |
| 297 | 1.2.13.4 | Bug Fixing |  | 6.25d? | 2025-08-25 | 2025-09-02 |  | 86.65d |  |  | Ali [80%] | 40h |
| 298 | 1.2.13.5 | Bug Fixing |  | 6.25d? | 2025-08-25 | 2025-09-02 |  | 86.65d |  |  | Asad [80%] | 40h |
| 299 | 1.2.14 | Ready for UAT |  | 1d? | 2025-09-02 | 2025-09-03 | 293 | 86.65d |  |  |  |  |
| 301 | 2 | **Mobile App** |  | 142.46d? | 2025-06-17 | 2026-01-02 |  | 0d |  |  |  | 1160h |
| 302 | 2.1 | Estimation and Planning |  | 1d? | 2025-06-17 | 2025-06-17 |  | 141.46d |  |  |  |  |
| 303 | 2.2 | Technical R&D and Management |  | 125d | 2025-06-17 | 2025-12-09 |  | 17.46d |  |  | Muzamal [20%] | 200h |
| 304 | 2.3 | Development |  | 93.75d? | 2025-06-17 | 2025-10-27 |  | 48.71d |  |  | Aimen [80%] | 600h |
| 305 | 2.4 | **QA** |  | 123.33d? | 2025-07-14 | 2026-01-02 |  | 0d |  | start no earlier than 2025-07-14 |  | 360h |
| 306 | 2.4.1 | Test case writing |  | 20d? | 2025-07-14 | 2025-08-11 |  | 0d |  |  | Kashif [50%] | 80h |
| 307 | 2.4.2 | Testing |  | 83.33d? | 2025-08-11 | 2025-12-05 | 306 | 0d |  |  | Kashif [30%] | 200h |
| 308 | 2.4.3 | Final Verification |  | 20d? | 2025-12-05 | 2026-01-02 | 307 | 0d |  |  | Bilal [50%] | 80h |
